# Project Plan 042915

Schedule from MS Project, 2014-12-11 to 2015-10-29, A marks actual dates.
Rackspace

## Calendars

- Standard: Mon-Fri 08:00-12:00, 13:00-17:00; Sat-Sun off. Exceptions (off unless hours are given): 2015-05-25 (Memorial Day Holiday), 2015-07-03 (4th of July Holiday), 2015-09-07 (Labor Day Holiday).

## Resources

| Resource |
| --- |
| Greg Nelson |
| Jordan Brown |
| Sruthi Deva |
| David Teniente |
| Pete Peterson |
| Nagarjuna Gogineni |
| Rajani Vemula |
| Patricia Portillo |
| Thomas Whitney |
| Kranthi |
| Sravan |
| Prakash |
| Prasanth |
| Uday |
| Shaheeb |
| Karteek |
| Ops |
| Thomas |

## Schedule

| ID | WBS | Task | Type | Duration | Start | Finish | Predecessors | Complete | Remaining | Total slack | Free slack | Constraint | Resources | Work | Actual work |
| --- | --- | --- | --- | --- | --- | --- | --- | --- | --- | --- | --- | --- | --- | --- | --- |
| 1 | 1 | **Data Warehouse Active Datasets** |  | 141d | 2015-04-13 A | 2015-10-29 |  | 2% | 138d | 0d |  |  |  | 4332h | 424h |
| 2 | 1.1 | **Usage Dataset** |  | 98d | 2015-04-13 A | 2015-08-28 |  | 5% | 92.72d | 43d |  |  |  | 2004h | 324h |
| 3 | 1.1.1 | **Release 1 Followup** |  | 46d | 2015-04-13 A | 2015-06-16 |  | 29% | 32.79d | 95d |  |  |  | 620h | 308h |
| 4 | 1.1.1.1 | **Dim_Instance Duplicate Issue** |  | 3d | 2015-04-13 A | 2015-04-15 A |  | 100% |  |  |  |  |  | 24h | 24h |
| 5 | 1.1.1.1.1 | Development | manual | 3d | 2015-04-13 A | 2015-04-15 A |  | 100% |  |  |  |  | Jordan Brown | 24h | 24h |
| 6 | 1.1.1.2 | **Dim_Product Duplicates** |  | 1d | 2015-04-13 A | 2015-04-13 A |  | 100% |  |  |  |  |  | 8h | 8h |
| 7 | 1.1.1.2.1 | Development | manual | 1d | 2015-04-13 A | 2015-04-13 A |  | 100% |  |  |  |  | David Teniente | 8h | 8h |
| 8 | 1.1.1.3 | **Indicator Files for all Dims in SSIS** |  | 11.5d | 2015-04-20 A | 2015-05-05 A |  | 100% |  |  |  |  |  | 116h | 116h |
| 9 | 1.1.1.3.1 | Development - Script to update |  | 1d | 2015-04-20 A | 2015-04-20 A |  | 100% |  |  |  | start no earlier than 2015-04-20 | David Teniente | 8h | 8h |
| 10 | 1.1.1.3.2 | Dev Code - Peer Review |  | 0.5d | 2015-04-21 A | 2015-04-21 A | 9 | 100% |  |  |  | start no earlier than 2015-02-23 | Jordan Brown | 4h | 4h |
| 11 | 1.1.1.3.3 | Development - Handoff Runbook / Test Cases |  | 1d | 2015-04-21 A | 2015-04-22 A | 10 | 100% |  |  |  | start no earlier than 2015-02-25 | Jordan Brown | 8h | 8h |
| 12 | 1.1.1.3.4 | Posted to Sharepoint and Git | milestone | 0d | 2015-04-22 A | 2015-04-22 A | 11 | 100% |  |  |  |  | Jordan Brown |  |  |
| 13 | 1.1.1.3.5 | QE |  | 5d | 2015-04-22 A | 2015-04-29 A | 11 | 100% |  |  |  |  |  | 40h | 40h |
| 14 | 1.1.1.3.6 | UAT |  | 5d | 2015-04-22 A | 2015-04-29 A | 11 | 100% |  |  |  | start no earlier than 2015-03-04 |  | 16h | 16h |
| 15 | 1.1.1.3.7 | Rollout |  | 1d | 2015-04-29 A | 2015-04-30 A | 14 | 100% |  |  |  | start no earlier than 2015-03-06 |  | 8h | 8h |
| 16 | 1.1.1.3.8 | Support |  | 3d | 2015-04-29 A | 2015-05-04 A | 14 | 100% |  |  |  | start no earlier than 2015-03-27 |  | 24h | 24h |
| 17 | 1.1.1.3.9 | Close |  | 1d | 2015-05-04 A | 2015-05-05 A | 16 | 100% |  |  |  |  |  | 8h | 8h |
| 18 | 1.1.1.4 | **Hot Fix - Column in fact for batch insert for rollback ease** |  | 9.5d | 2015-04-21 A | 2015-05-04 |  | 26% | 7.04d | 125.5d |  |  |  | 28h | 28h |
| 19 | 1.1.1.4.1 | Development - Informatica and DB |  | 2d | 2015-04-21 A | 2015-04-22 A |  | 100% |  |  |  | start no earlier than 2015-04-21 | Jordan Brown | 16h | 16h |
| 20 | 1.1.1.4.2 | Peer Review |  | 0.5d | 2015-04-23 A | 2015-04-23 A | 19 | 100% |  |  |  |  | David Teniente | 4h | 4h |
| 21 | 1.1.1.4.3 | Handoff Runbook / Test Cases |  | 1d | 2015-04-23 A | 2015-04-24 A | 20 | 100% |  |  |  | start no earlier than 2015-02-25 | Jordan Brown | 8h | 8h |
| 22 | 1.1.1.4.4 | QE |  | 3d | 2015-04-24 | 2015-04-29 | 21 |  |  | 128.5d |  |  |  |  |  |
| 23 | 1.1.1.4.5 | UAT |  | 5d | 2015-04-24 | 2015-05-01 | 21 |  |  | 125.5d | 0d | start no earlier than 2015-03-04 |  |  |  |
| 24 | 1.1.1.4.6 | Rollout |  | 1d | 2015-05-01 | 2015-05-04 | 23 |  |  | 125.5d |  | start no earlier than 2015-03-06 |  |  |  |
| 25 | 1.1.1.4.7 | Support |  | 1d | 2015-05-01 | 2015-05-04 | 23 |  |  | 125.5d | 0d | start no earlier than 2015-03-27 |  |  |  |
| 26 | 1.1.1.4.8 | Close | milestone | 0d | 2015-05-04 | 2015-05-04 | 25 |  |  | 125.5d |  |  |  |  |  |

Notes:
- 4: Jordan
- 6: DT, Prakash

| ID | WBS | Task | Type | Duration | Start | Finish | Predecessors | Complete | Remaining | Total slack | Free slack | Constraint | Resources | Work | Actual work |
| --- | --- | --- | --- | --- | --- | --- | --- | --- | --- | --- | --- | --- | --- | --- | --- |
| 27 | 1.1.1.5 | **Dim_Account - Effective start end to fact process (and Dim_Team)** |  | 3d | 2015-04-27 A | 2015-04-29 A |  | 100% |  |  |  |  |  | 24h | 24h |
| 28 | 1.1.1.5.1 | Validation Complete |  | 3d | 2015-04-27 A | 2015-04-29 A |  | 100% |  |  |  | start no earlier than 2015-04-27 | Nagarjuna Gogineni | 24h | 24h |
| 29 | 1.1.1.6 | **Dim_Account - Team Name Logic Update** |  | 26d | 2015-04-20 A | 2015-05-26 |  | 16% | 21.94d | 110d |  |  |  | 256h | 40h |
| 30 | 1.1.1.6.1 | Field Mapping |  | 1d | 2015-04-20 A | 2015-04-20 A |  | 100% |  |  |  | start no earlier than 2015-04-20 | David Teniente | 8h | 8h |
| 31 | 1.1.1.6.2 | Development - Staging/Connections |  | 1d | 2015-04-21 A | 2015-04-21 A | 30 | 100% |  |  |  |  | Jordan Brown | 8h | 8h |
| 32 | 1.1.1.6.3 | Check into Git | milestone | 0d | 2015-04-21 A | 2015-04-21 A | 31 | 100% |  |  |  |  | Jordan Brown |  |  |
| 33 | 1.1.1.6.4 | Dev Data - Peer Review |  | 0.5d | 2015-04-22 A | 2015-04-22 A | 31 | 100% |  |  |  |  | Nagarjuna Gogineni | 4h | 4h |
| 34 | 1.1.1.6.5 | Development - Stage to Target |  | 1d | 2015-04-22 A | 2015-04-23 A | 33 | 100% |  |  |  |  | Jordan Brown | 8h | 8h |
| 35 | 1.1.1.6.6 | Check into Git | milestone | 0d | 2015-04-23 A | 2015-04-23 A | 34 | 100% |  |  |  |  | Jordan Brown |  |  |
| 36 | 1.1.1.6.7 | Dev Code - Peer Review |  | 0.5d | 2015-04-23 A | 2015-04-23 A | 34 | 100% |  |  |  | start no earlier than 2015-02-23 | Nagarjuna Gogineni | 4h | 4h |
| 37 | 1.1.1.6.8 | Development - Handoff Runbook / Test Cases |  | 1d | 2015-04-24 A | 2015-04-24 A | 36 | 100% |  |  |  | start no earlier than 2015-02-25 | Jordan Brown | 8h | 8h |
| 38 | 1.1.1.6.9 | Posted to Sharepoint and Git | milestone | 0d | 2015-04-24 A | 2015-04-24 A | 37 | 100% |  |  |  |  | Jordan Brown |  |  |
| 39 | 1.1.1.6.10 | QE |  | 5d | 2015-04-27 | 2015-05-01 | 37 |  |  | 126d |  |  |  | 40h |  |
| 40 | 1.1.1.6.11 | UAT |  | 10d | 2015-04-27 | 2015-05-08 | 37 |  |  | 110d | 0d | start no earlier than 2015-03-04 |  | 80h |  |
| 41 | 1.1.1.6.12 | Rollout |  | 1d | 2015-05-11 | 2015-05-11 | 40 |  |  | 120d |  | start no earlier than 2015-03-06 |  | 8h |  |
| 42 | 1.1.1.6.13 | Support |  | 10d | 2015-05-11 | 2015-05-22 | 40 |  |  | 110d | 0d | start no earlier than 2015-03-27 |  | 80h |  |
| 43 | 1.1.1.6.14 | Close |  | 1d | 2015-05-26 | 2015-05-26 | 42 |  |  | 110d |  |  |  | 8h |  |
| 44 | 1.1.1.7 | **Billing Events Dim_Team** |  | 28d | 2015-04-28 A | 2015-06-05 |  | 21% | 22.24d | 102d |  |  |  | 56h | 56h |
| 45 | 1.1.1.7.1 | SDA / Design |  | 1d | 2015-04-28 A | 2015-04-28 A |  | 100% |  |  |  | start no earlier than 2015-04-28 | David Teniente | 8h | 8h |
| 46 | 1.1.1.7.2 | Field Mapping |  | 1d | 2015-04-29 A | 2015-04-29 A | 45 | 100% |  |  |  |  | David Teniente | 8h | 8h |
| 47 | 1.1.1.7.3 | Peer Review |  | 1d | 2015-04-30 A | 2015-04-30 A | 46 | 100% |  |  |  |  | Pete Peterson | 8h | 8h |
| 48 | 1.1.1.7.4 | Development - Staging/Connections |  | 1d | 2015-05-01 A | 2015-05-01 A | 47 | 100% |  |  |  |  | Nagarjuna Gogineni | 8h | 8h |
| 49 | 1.1.1.7.5 | Check into Git | milestone | 0d | 2015-05-01 A | 2015-05-01 A | 48 | 100% |  |  |  |  | Nagarjuna Gogineni |  |  |
| 50 | 1.1.1.7.6 | Dev Data - Peer Review |  | 0.5d | 2015-05-04 A | 2015-05-04 A | 48 | 100% |  |  |  |  | Jordan Brown | 4h | 4h |
| 51 | 1.1.1.7.7 | Development - Stage to Target |  | 1d | 2015-05-04 A | 2015-05-05 A | 50 | 100% |  |  |  |  | Nagarjuna Gogineni | 8h | 8h |
| 52 | 1.1.1.7.8 | Check into Git | milestone | 0d | 2015-05-05 A | 2015-05-05 A | 51 | 100% |  |  |  |  | Nagarjuna Gogineni |  |  |
| 53 | 1.1.1.7.9 | Dev Code - Peer Review |  | 0.5d | 2015-05-05 A | 2015-05-05 A | 51 | 100% |  |  |  | start no earlier than 2015-02-23 | Jordan Brown | 4h | 4h |
| 54 | 1.1.1.7.10 | Development - Handoff Runbook / Test Cases |  | 1d | 2015-05-06 A | 2015-05-06 A | 53 | 100% |  |  |  | start no earlier than 2015-02-25 | Nagarjuna Gogineni | 8h | 8h |
| 55 | 1.1.1.7.11 | Posted to Sharepoint and Git | milestone | 0d | 2015-05-06 | 2015-05-06 | 54 |  |  | 123d |  |  | Nagarjuna Gogineni |  |  |
| 56 | 1.1.1.7.12 | QE |  | 5d | 2015-05-07 | 2015-05-13 | 54 |  |  | 118d |  |  |  |  |  |
| 57 | 1.1.1.7.13 | UAT |  | 10d | 2015-05-07 | 2015-05-20 | 54 |  |  | 102d | 0d | start no earlier than 2015-03-04 |  |  |  |
| 58 | 1.1.1.7.14 | Rollout |  | 1d | 2015-05-21 | 2015-05-21 | 57 |  |  | 112d |  | start no earlier than 2015-03-06 |  |  |  |
| 59 | 1.1.1.7.15 | Support |  | 10d | 2015-05-21 | 2015-06-04 | 57 |  |  | 102d | 0d | start no earlier than 2015-03-27 |  |  |  |
| 60 | 1.1.1.7.16 | Close |  | 1d | 2015-06-05 | 2015-06-05 | 59 |  |  | 102d |  |  |  |  |  |

Notes:
- 27: Validation to determine if dates are correct

| ID | WBS | Task | Type | Duration | Start | Finish | Predecessors | Complete | Remaining | Total slack | Free slack | Constraint | Resources | Work | Actual work |
| --- | --- | --- | --- | --- | --- | --- | --- | --- | --- | --- | --- | --- | --- | --- | --- |
| 61 | 1.1.1.8 | **Dim_Team Remapping** |  | 31d | 2015-05-04 | 2015-06-16 |  |  |  | 85d |  |  |  | 80h |  |
| 62 | 1.1.1.8.1 | SDA |  | 2d | 2015-05-04 | 2015-05-05 |  |  |  | 85d | 0d | start no earlier than 2015-05-04 | David Teniente | 16h |  |
| 63 | 1.1.1.8.2 | Architecture Review |  | 1d | 2015-05-06 | 2015-05-06 | 62 |  |  | 85d | 0d |  | Pete Peterson | 8h |  |
| 64 | 1.1.1.8.3 | Field Mapping |  | 1d | 2015-05-07 | 2015-05-07 | 63 |  |  | 95d | 0d |  | David Teniente | 8h |  |
| 65 | 1.1.1.8.4 | Development - Staging/Connections |  | 2d | 2015-05-08 | 2015-05-11 | 64 |  |  | 95d | 0d |  | Jordan Brown | 16h |  |
| 66 | 1.1.1.8.5 | Check into Git | milestone | 0d | 2015-05-11 | 2015-05-11 | 65 |  |  | 120d |  |  | Jordan Brown |  |  |
| 67 | 1.1.1.8.6 | Dev Data - Peer Review |  | 0.5d | 2015-05-12 | 2015-05-12 | 65 |  |  | 95d | 0d |  | Nagarjuna Gogineni | 4h |  |
| 68 | 1.1.1.8.7 | Development - Stage to Target |  | 2d | 2015-05-12 | 2015-05-14 | 67 |  |  | 95d | 0d |  | Jordan Brown | 16h |  |
| 69 | 1.1.1.8.8 | Check into Git | milestone | 0d | 2015-05-14 | 2015-05-14 | 68 |  |  | 117.5d |  |  | Jordan Brown |  |  |
| 70 | 1.1.1.8.9 | Dev Code - Peer Review |  | 0.5d | 2015-05-14 | 2015-05-14 | 68 |  |  | 95d | 0d | start no earlier than 2015-02-23 | Nagarjuna Gogineni | 4h |  |
| 71 | 1.1.1.8.10 | Development - Handoff Runbook / Test Cases |  | 1d | 2015-05-15 | 2015-05-15 | 70 |  |  | 95d | 0d | start no earlier than 2015-02-25 | Jordan Brown | 8h |  |
| 72 | 1.1.1.8.11 | Posted to Sharepoint and Git | milestone | 0d | 2015-05-15 | 2015-05-15 | 71 |  |  | 116d |  |  | Jordan Brown |  |  |
| 73 | 1.1.1.8.12 | QE |  | 5d | 2015-05-18 | 2015-05-22 | 71 |  |  | 111d |  |  |  |  |  |
| 74 | 1.1.1.8.13 | UAT |  | 10d | 2015-05-18 | 2015-06-01 | 71 |  |  | 95d | 0d | start no earlier than 2015-03-04 |  |  |  |
| 75 | 1.1.1.8.14 | Rollout |  | 1d | 2015-06-02 | 2015-06-02 | 74 |  |  | 105d |  | start no earlier than 2015-03-06 |  |  |  |
| 76 | 1.1.1.8.15 | Support |  | 10d | 2015-06-02 | 2015-06-15 | 74 |  |  | 95d | 0d | start no earlier than 2015-03-27 |  |  |  |
| 77 | 1.1.1.8.16 | Close |  | 1d | 2015-06-16 | 2015-06-16 | 76 |  |  | 95d |  |  |  |  |  |
| 78 | 1.1.1.9 | **Team Key Cleanup in Billing Events** |  | 3d | 2015-04-30 A | 2015-05-04 |  | 43% | 1.71d | 125d |  |  |  | 28h | 12h |
| 79 | 1.1.1.9.1 | Development |  | 0.5d | 2015-04-30 A | 2015-04-30 A |  | 100% |  |  |  | start no earlier than 2015-04-30 | David Teniente | 4h | 4h |
| 80 | 1.1.1.9.2 | Peer Review | manual | 0.5d | 2015-04-30 A | 2015-04-30 A | 79 | 100% |  |  |  |  | Nagarjuna Gogineni | 4h | 4h |
| 81 | 1.1.1.9.3 | QE |  | 0.5d | 2015-04-30 A | 2015-04-30 A | 79 | 100% |  |  |  |  |  | 4h | 4h |
| 82 | 1.1.1.9.4 | Rollout |  | 1d | 2015-05-01 | 2015-05-01 | 81 |  |  | 125d | 0d | start no earlier than 2015-03-06 |  | 8h |  |
| 83 | 1.1.1.9.5 | Close |  | 1d | 2015-05-04 | 2015-05-04 | 82 |  |  | 125d |  |  |  | 8h |  |
| 84 | 1.1.2 | **Cube** |  | 52d | 2015-05-04 | 2015-07-16 |  |  |  | 13d |  |  |  | 312h |  |
| 85 | 1.1.2.1 | Analyze all Hierarchies |  | 5d | 2015-05-04 | 2015-05-08 |  |  |  | 59d | 0d | start no earlier than 2015-05-04 | Pete Peterson | 40h |  |
| 86 | 1.1.2.2 | Set up Shared Dimensions |  | 5d | 2015-05-11 | 2015-05-15 | 85 |  |  | 59d | 0d | start no earlier than 2015-04-13 | Pete Peterson | 40h |  |
| 87 | 1.1.2.3 | Peer Review |  | 2d | 2015-05-18 | 2015-05-19 | 86 |  |  | 114d |  |  | Greg Nelson | 16h |  |
| 88 | 1.1.2.4 | Design Fact and Calculations |  | 3d | 2015-05-18 | 2015-05-20 | 86 |  |  | 59d | 0d |  | Pete Peterson | 24h |  |
| 89 | 1.1.2.5 | Partitioning Schema | manual | 4d | 2015-05-21 | 2015-05-27 | 88 |  |  |  |  |  | Pete Peterson | 32h |  |
| 90 | 1.1.2.6 | Peer Review |  | 2d | 2015-05-28 | 2015-05-29 | 89 |  |  | 59d | 0d |  | Greg Nelson | 16h |  |
| 91 | 1.1.2.7 | BI Functions (Week over Week etc) | manual | 4d | 2015-06-01 | 2015-06-04 | 90 |  |  |  |  |  | Pete Peterson | 32h |  |
| 92 | 1.1.2.8 | BI Function (Multi-Currency) | manual | 4d | 2015-06-05 | 2015-06-10 | 91 |  |  |  |  |  | Pete Peterson | 32h |  |
| 93 | 1.1.2.9 | Build Job |  | 2d | 2015-06-11 | 2015-06-12 | 92 |  |  | 74d | 0d |  | Pete Peterson | 16h |  |
| 94 | 1.1.2.10 | Peer Review |  | 2d | 2015-06-15 | 2015-06-16 | 93 |  |  | 95d |  |  | Greg Nelson | 16h |  |
| 95 | 1.1.2.11 | Development - Handoff Runbook / Test Cases |  | 3d | 2015-06-15 | 2015-06-17 | 93 |  |  | 74d | 0d | start no earlier than 2015-02-25 | Pete Peterson; Thomas | 48h |  |
| 96 | 1.1.2.12 | QE |  | 3d | 2015-06-18 | 2015-06-22 | 95 |  |  | 91d |  |  |  |  |  |
| 97 | 1.1.2.13 | UAT |  | 10d | 2015-06-18 | 2015-07-01 | 95 |  |  | 74d | 0d | start no earlier than 2015-03-04 |  |  |  |
| 98 | 1.1.2.14 | Rollout |  | 1d | 2015-07-02 | 2015-07-02 | 97 |  |  | 83d |  | start no earlier than 2015-03-06 |  |  |  |
| 99 | 1.1.2.15 | Support |  | 10d | 2015-07-02 | 2015-07-16 | 97 |  |  | 74d | 0d | start no earlier than 2015-03-27 |  |  |  |
| 100 | 1.1.2.16 | Close | milestone | 0d | 2015-07-16 | 2015-07-16 | 99 |  |  | 74d |  |  |  |  |  |

Notes:
- 84: Schedule Checkpoint meetings every 2 weeks

| ID | WBS | Task | Duration | Start | Finish | Predecessors | Total slack | Free slack | Constraint |
| --- | --- | --- | --- | --- | --- | --- | --- | --- | --- |
| 101 | 1.1.3 | **DQ Dashboard** | 35d | 2015-06-01 | 2015-07-20 |  | 72d |  |  |
| 102 | 1.1.3.1 | SDA | 2d | 2015-06-01 | 2015-06-02 |  | 72d | 0d | start no earlier than 2015-06-01 |
| 103 | 1.1.3.2 | Architecture - Physical Model | 1d | 2015-06-03 | 2015-06-03 | 102 | 72d | 0d |  |
| 104 | 1.1.3.3 | Architecture - Index/Partition/DLL | 1d | 2015-06-04 | 2015-06-04 | 103 | 72d | 0d |  |
| 105 | 1.1.3.4 | Architecture Review | 1d | 2015-06-05 | 2015-06-05 | 104 | 72d | 0d |  |
| 106 | 1.1.3.5 | Field Mapping | 2d | 2015-06-08 | 2015-06-09 | 105 | 72d | 0d |  |
| 107 | 1.1.3.6 | Development - Staging/Connections | 2d | 2015-06-10 | 2015-06-11 | 106 | 72d | 0d |  |
| 108 | 1.1.3.7 | Dev Data - Peer Review | 1d | 2015-06-12 | 2015-06-12 | 107 | 72d | 0d |  |
| 109 | 1.1.3.8 | Development - Stage to Target | 2d | 2015-06-15 | 2015-06-16 | 108 | 72d | 0d |  |
| 110 | 1.1.3.9 | Dev Code - Peer Review | 1d | 2015-06-17 | 2015-06-17 | 109 | 72d | 0d | start no earlier than 2015-02-23 |
| 111 | 1.1.3.10 | Development - Handoff Runbook / Test Cases | 1d | 2015-06-18 | 2015-06-18 | 110 | 72d | 0d | start no earlier than 2015-02-25 |
| 112 | 1.1.3.11 | QE | 5d | 2015-06-19 | 2015-06-25 | 111 | 88d |  |  |
| 113 | 1.1.3.12 | UAT | 10d | 2015-06-19 | 2015-07-02 | 111 | 72d | 0d | start no earlier than 2015-03-04 |
| 114 | 1.1.3.13 | Rollout | 1d | 2015-07-06 | 2015-07-06 | 113 | 82d |  | start no earlier than 2015-03-06 |
| 115 | 1.1.3.14 | Support | 10d | 2015-07-06 | 2015-07-17 | 113 | 72d | 0d | start no earlier than 2015-03-27 |
| 116 | 1.1.3.15 | Close | 1d | 2015-07-20 | 2015-07-20 | 115 | 72d |  |  |
| 117 | 1.1.4 | **Invoice Data Quality Check** | 35d | 2015-06-01 | 2015-07-20 |  | 72d |  |  |
| 118 | 1.1.4.1 | SDA | 2d | 2015-06-01 | 2015-06-02 |  | 72d | 0d | start no earlier than 2015-06-01 |
| 119 | 1.1.4.2 | Architecture - Physical Model | 1d | 2015-06-03 | 2015-06-03 | 118 | 72d | 0d |  |
| 120 | 1.1.4.3 | Architecture - Index/Partition/DLL | 1d | 2015-06-04 | 2015-06-04 | 119 | 72d | 0d |  |
| 121 | 1.1.4.4 | Architecture Review | 1d | 2015-06-05 | 2015-06-05 | 120 | 72d | 0d |  |
| 122 | 1.1.4.5 | Field Mapping | 2d | 2015-06-08 | 2015-06-09 | 121 | 72d | 0d |  |
| 123 | 1.1.4.6 | Development - Staging/Connections | 2d | 2015-06-10 | 2015-06-11 | 122 | 72d | 0d |  |
| 124 | 1.1.4.7 | Dev Data - Peer Review | 1d | 2015-06-12 | 2015-06-12 | 123 | 72d | 0d |  |
| 125 | 1.1.4.8 | Development - Stage to Target | 2d | 2015-06-15 | 2015-06-16 | 124 | 72d | 0d |  |
| 126 | 1.1.4.9 | Dev Code - Peer Review | 1d | 2015-06-17 | 2015-06-17 | 125 | 72d | 0d | start no earlier than 2015-02-23 |
| 127 | 1.1.4.10 | Development - Handoff Runbook / Test Cases | 1d | 2015-06-18 | 2015-06-18 | 126 | 72d | 0d | start no earlier than 2015-02-25 |
| 128 | 1.1.4.11 | QE | 5d | 2015-06-19 | 2015-06-25 | 127 | 88d |  |  |
| 129 | 1.1.4.12 | UAT | 10d | 2015-06-19 | 2015-07-02 | 127 | 72d | 0d | start no earlier than 2015-03-04 |
| 130 | 1.1.4.13 | Rollout | 1d | 2015-07-06 | 2015-07-06 | 129 | 82d |  | start no earlier than 2015-03-06 |
| 131 | 1.1.4.14 | Support | 10d | 2015-07-06 | 2015-07-17 | 129 | 72d | 0d | start no earlier than 2015-03-27 |
| 132 | 1.1.4.15 | Close | 1d | 2015-07-20 | 2015-07-20 | 131 | 72d |  |  |

Notes:
- 101: Schedule Checkpoint meetings every 2 weeks
- 117: Schedule Checkpoint meetings every 2 weeks

| ID | WBS | Task | Type | Duration | Start | Finish | Predecessors | Complete | Remaining | Total slack | Free slack | Constraint | Resources | Work | Actual work |
| --- | --- | --- | --- | --- | --- | --- | --- | --- | --- | --- | --- | --- | --- | --- | --- |
| 133 | 1.1.5 | **Repoint to SQL Server Staging** |  | 56d | 2015-04-30 | 2015-07-20 |  |  |  | 0d |  |  |  | 176h |  |
| 134 | 1.1.5.1 | Move Informatica Folder to Dev | manual | 1d | 2015-04-30 | 2015-04-30 |  |  |  |  |  |  | Ops | 8h |  |
| 135 | 1.1.5.2 | Dev Staging - Instance |  | 2d | 2015-05-04 | 2015-05-05 |  |  |  | 86d | 0d | start no earlier than 2015-05-04 | Uday | 16h |  |
| 136 | 1.1.5.3 | Dev to Target - Instance |  | 2d | 2015-05-06 | 2015-05-07 | 135 |  |  | 86d | 0d |  | Uday | 16h |  |
| 137 | 1.1.5.4 | Peer Review |  | 0.5d | 2015-05-08 | 2015-05-08 | 136 |  |  | 121.5d |  |  | Nagarjuna Gogineni | 4h |  |
| 138 | 1.1.5.5 | Dev Staging - UOM |  | 1d | 2015-05-08 | 2015-05-08 | 136 |  |  | 86d | 0d |  | Uday | 8h |  |
| 139 | 1.1.5.6 | Dev to Target - UOM |  | 1d | 2015-05-11 | 2015-05-11 | 138 |  |  | 86d | 0d |  | Uday | 8h |  |
| 140 | 1.1.5.7 | Peer Review |  | 0.5d | 2015-05-12 | 2015-05-12 | 139 |  |  | 119.5d |  |  | Nagarjuna Gogineni | 4h |  |
| 141 | 1.1.5.8 | Dev Staging - Configuration |  | 3d | 2015-05-12 | 2015-05-14 | 139 |  |  | 86d | 0d |  | Uday | 24h |  |
| 142 | 1.1.5.9 | Dev to Target - Configuration |  | 2d | 2015-05-15 | 2015-05-18 | 141 |  |  | 86d | 0d |  | Uday | 16h |  |
| 143 | 1.1.5.10 | Peer Review |  | 0.5d | 2015-05-19 | 2015-05-19 | 142 |  |  | 114.5d |  |  | Nagarjuna Gogineni | 4h |  |
| 144 | 1.1.5.11 | Dev Staging - Fact Billing Events |  | 3d | 2015-05-19 | 2015-05-21 | 142 |  |  | 86d | 0d |  | Uday | 24h |  |
| 145 | 1.1.5.12 | Dev to Target - Fact Billing Events |  | 2d | 2015-05-22 | 2015-06-15 | 144 |  |  | 72d | 0d |  | Uday | 16h |  |
| 146 | 1.1.5.13 | Peer Review |  | 0.5d | 2015-06-16 | 2015-06-16 | 145 |  |  | 95.5d |  |  | Nagarjuna Gogineni | 4h |  |
| 147 | 1.1.5.14 | Development - Handoff Runbook / Test Cases |  | 3d | 2015-06-16 | 2015-06-18 | 145 |  |  | 72d | 0d | start no earlier than 2015-02-25 | Uday | 24h |  |
| 148 | 1.1.5.15 | QE |  | 5d | 2015-06-19 | 2015-06-25 | 147 |  |  | 88d |  |  |  |  |  |
| 149 | 1.1.5.16 | UAT |  | 10d | 2015-06-19 | 2015-07-02 | 147 |  |  | 72d | 0d | start no earlier than 2015-03-04 |  |  |  |
| 150 | 1.1.5.17 | Rollout |  | 1d | 2015-07-06 | 2015-07-06 | 149 |  |  | 82d |  | start no earlier than 2015-03-06 |  |  |  |
| 151 | 1.1.5.18 | Support |  | 10d | 2015-07-06 | 2015-07-17 | 149 |  |  | 72d | 0d | start no earlier than 2015-03-27 |  |  |  |
| 152 | 1.1.5.19 | Close |  | 1d | 2015-07-20 | 2015-07-20 | 151 |  |  | 72d |  |  |  |  |  |
| 153 | 1.1.6 | **QVX process fix and repoint to ETL** |  | 25d | 2015-04-29 A | 2015-06-03 |  | 7% | 23.33d | 104d |  |  |  | 44h | 16h |
| 154 | 1.1.6.1 | Development - QVX first of month miss |  | 2d | 2015-04-29 A | 2015-04-30 A |  | 100% |  |  |  | start no earlier than 2015-04-29 | Nagarjuna Gogineni | 16h | 16h |
| 155 | 1.1.6.2 | Peer Review |  | 0.5d | 2015-05-01 | 2015-05-01 | 154 |  |  | 126.5d |  |  |  |  |  |
| 156 | 1.1.6.3 | Development - Repoint to ETL |  | 2d | 2015-05-01 | 2015-05-04 | 154 |  |  | 104d | 0d | start no earlier than 2015-04-21 | Nagarjuna Gogineni | 16h |  |
| 157 | 1.1.6.4 | Peer Review |  | 0.5d | 2015-05-05 | 2015-05-05 | 156 |  |  | 124.5d |  |  | Jordan Brown | 4h |  |
| 158 | 1.1.6.5 | Handoff Runbook / Test Cases |  | 1d | 2015-05-05 | 2015-05-05 | 156 |  |  | 104d | 0d | start no earlier than 2015-02-25 | Nagarjuna Gogineni | 8h |  |
| 159 | 1.1.6.6 | QE |  | 3d | 2015-05-06 | 2015-05-08 | 158 |  |  | 121d |  |  |  |  |  |
| 160 | 1.1.6.7 | UAT |  | 10d | 2015-05-06 | 2015-05-19 | 158 |  |  | 104d | 0d | start no earlier than 2015-03-04 |  |  |  |
| 161 | 1.1.6.8 | Rollout |  | 1d | 2015-05-20 | 2015-05-20 | 160 |  |  | 113d |  | start no earlier than 2015-03-06 |  |  |  |
| 162 | 1.1.6.9 | Support |  | 10d | 2015-05-20 | 2015-06-03 | 160 |  |  | 104d | 0d | start no earlier than 2015-03-27 |  |  |  |
| 163 | 1.1.6.10 | Close | milestone | 0d | 2015-06-03 | 2015-06-03 | 162 |  |  | 104d |  |  |  |  |  |

Notes:
- 133: Bulk load Stage 1 and Stage 2 for speed
- 153: Schedule Checkpoint meetings every 2 weeks

| ID | WBS | Task | Type | Duration | Start | Finish | Predecessors | Total slack | Free slack | Constraint | Resources | Work |
| --- | --- | --- | --- | --- | --- | --- | --- | --- | --- | --- | --- | --- |
| 164 | 1.1.7 | **First Effective date = Instance Creation Date** |  | 26d | 2015-05-01 | 2015-06-08 |  | 101d |  |  |  | 40h |
| 165 | 1.1.7.1 | Development - Staging/Connections |  | 2d | 2015-05-01 | 2015-05-04 |  | 101d | 0d | start no earlier than 2015-05-01 | Jordan Brown | 16h |
| 166 | 1.1.7.2 | Check into Git | milestone | 0d | 2015-05-04 | 2015-05-04 | 165 | 125d |  |  | Jordan Brown |  |
| 167 | 1.1.7.3 | Dev Data - Peer Review |  | 0.5d | 2015-05-05 | 2015-05-05 | 165 | 101d | 0d |  | Nagarjuna Gogineni | 4h |
| 168 | 1.1.7.4 | Development - Stage to Target |  | 1d | 2015-05-05 | 2015-05-06 | 167 | 101d | 0d |  | Jordan Brown | 8h |
| 169 | 1.1.7.5 | Check into Git | milestone | 0d | 2015-05-06 | 2015-05-06 | 168 | 123.5d |  |  | Jordan Brown |  |
| 170 | 1.1.7.6 | Dev Code - Peer Review |  | 0.5d | 2015-05-06 | 2015-05-06 | 168 | 101d | 0d | start no earlier than 2015-02-23 | Nagarjuna Gogineni | 4h |
| 171 | 1.1.7.7 | Development - Handoff Runbook / Test Cases |  | 1d | 2015-05-07 | 2015-05-07 | 170 | 101d | 0d | start no earlier than 2015-02-25 | Jordan Brown | 8h |
| 172 | 1.1.7.8 | Posted to Sharepoint and Git | milestone | 0d | 2015-05-07 | 2015-05-07 | 171 | 122d |  |  | Jordan Brown |  |
| 173 | 1.1.7.9 | QE |  | 5d | 2015-05-08 | 2015-05-14 | 171 | 117d |  |  |  |  |
| 174 | 1.1.7.10 | UAT |  | 10d | 2015-05-08 | 2015-05-21 | 171 | 101d | 0d | start no earlier than 2015-03-04 |  |  |
| 175 | 1.1.7.11 | Rollout |  | 1d | 2015-05-22 | 2015-05-22 | 174 | 111d |  | start no earlier than 2015-03-06 |  |  |
| 176 | 1.1.7.12 | Support |  | 10d | 2015-05-22 | 2015-06-05 | 174 | 101d | 0d | start no earlier than 2015-03-27 |  |  |
| 177 | 1.1.7.13 | Close |  | 1d | 2015-06-08 | 2015-06-08 | 176 | 101d |  |  |  |  |
| 178 | 1.1.8 | **Dim_Product_Usage Cleanup** |  | 27d | 2015-05-11 | 2015-06-17 |  | 94d |  |  |  | 48h |
| 179 | 1.1.8.1 | Development - Staging/Connections |  | 2d | 2015-05-11 | 2015-05-12 |  | 94d | 0d | start no earlier than 2015-05-11 | Jordan Brown | 16h |
| 180 | 1.1.8.2 | Check into Git | milestone | 0d | 2015-05-12 | 2015-05-12 | 179 | 119d |  |  | Jordan Brown |  |
| 181 | 1.1.8.3 | Dev Data - Peer Review |  | 0.5d | 2015-05-13 | 2015-05-13 | 179 | 94d | 0d |  | Nagarjuna Gogineni | 4h |
| 182 | 1.1.8.4 | Development - Stage to Target |  | 2d | 2015-05-13 | 2015-05-15 | 181 | 94d | 0d |  | Jordan Brown | 16h |
| 183 | 1.1.8.5 | Check into Git | milestone | 0d | 2015-05-15 | 2015-05-15 | 182 | 116.5d |  |  | Jordan Brown |  |
| 184 | 1.1.8.6 | Dev Code - Peer Review |  | 0.5d | 2015-05-15 | 2015-05-15 | 182 | 94d | 0d | start no earlier than 2015-02-23 | Nagarjuna Gogineni | 4h |
| 185 | 1.1.8.7 | Development - Handoff Runbook / Test Cases |  | 1d | 2015-05-18 | 2015-05-18 | 184 | 94d | 0d | start no earlier than 2015-02-25 | Jordan Brown | 8h |
| 186 | 1.1.8.8 | Posted to Sharepoint and Git | milestone | 0d | 2015-05-18 | 2015-05-18 | 185 | 115d |  |  | Jordan Brown |  |
| 187 | 1.1.8.9 | QE |  | 5d | 2015-05-19 | 2015-05-26 | 185 | 110d |  |  |  |  |
| 188 | 1.1.8.10 | UAT |  | 10d | 2015-05-19 | 2015-06-02 | 185 | 94d | 0d | start no earlier than 2015-03-04 |  |  |
| 189 | 1.1.8.11 | Rollout |  | 1d | 2015-06-03 | 2015-06-03 | 188 | 104d |  | start no earlier than 2015-03-06 |  |  |
| 190 | 1.1.8.12 | Support |  | 10d | 2015-06-03 | 2015-06-16 | 188 | 94d | 0d | start no earlier than 2015-03-27 |  |  |
| 191 | 1.1.8.13 | Close |  | 1d | 2015-06-17 | 2015-06-17 | 190 | 94d |  |  |  |  |

Notes:
- 164: Schedule Checkpoint meetings every 2 weeks
- 178: clean up effective dates and updated dates less than created. General fixes of timestamps and columns

| ID | WBS | Task | Type | Duration | Start | Finish | Predecessors | Total slack | Free slack | Constraint | Resources | Work |
| --- | --- | --- | --- | --- | --- | --- | --- | --- | --- | --- | --- | --- |
| 192 | 1.1.9 | **Dim_Instance from Jprov not ODS** |  | 23.5d | 2015-05-08 | 2015-06-11 |  | 98.5d |  |  |  | 28h |
| 193 | 1.1.9.1 | Staging/Connections |  | 2d | 2015-05-08 | 2015-05-11 |  | 98.5d | 0d | start no earlier than 2015-05-08 | Jordan Brown | 16h |
| 194 | 1.1.9.2 | Peer Review |  | 0.5d | 2015-05-12 | 2015-05-12 | 193 | 98.5d | 0d |  | Nagarjuna Gogineni | 4h |
| 195 | 1.1.9.3 | Handoff Runbook / Test Cases |  | 1d | 2015-05-12 | 2015-05-13 | 194 | 98.5d | 0d | start no earlier than 2015-02-25 | Jordan Brown | 8h |
| 196 | 1.1.9.4 | QE |  | 3d | 2015-05-13 | 2015-05-18 | 195 | 115.5d |  |  |  |  |
| 197 | 1.1.9.5 | UAT |  | 10d | 2015-05-13 | 2015-05-28 | 195 | 98.5d | 0d | start no earlier than 2015-03-04 |  |  |
| 198 | 1.1.9.6 | Rollout |  | 1d | 2015-05-28 | 2015-05-29 | 197 | 107.5d |  | start no earlier than 2015-03-06 |  |  |
| 199 | 1.1.9.7 | Support |  | 10d | 2015-05-28 | 2015-06-11 | 197 | 98.5d | 0d | start no earlier than 2015-03-27 |  |  |
| 200 | 1.1.9.8 | Close | milestone | 0d | 2015-06-11 | 2015-06-11 | 199 | 98.5d |  |  |  |  |
| 201 | 1.1.10 | **Dim_Account - Rewrite to Informatica** |  | 33d | 2015-06-01 | 2015-07-16 |  | 40d |  |  |  | 96h |
| 202 | 1.1.10.1 | SDA |  | 3d | 2015-06-01 | 2015-06-03 |  | 40d | 0d | start no earlier than 2015-06-01 | David Teniente | 24h |
| 203 | 1.1.10.2 | Architecture - Physical Model |  | 1d | 2015-06-04 | 2015-06-04 | 202 | 40d | 0d |  | David Teniente | 8h |
| 204 | 1.1.10.3 | Check into Git | milestone | 0d | 2015-06-04 | 2015-06-04 | 203 | 40d | 0d |  | David Teniente |  |
| 205 | 1.1.10.4 | Architecture Review | milestone | 0d | 2015-06-04 | 2015-06-04 | 203 | 74d | 0d |  |  |  |
| 206 | 1.1.10.5 | Field Mapping |  | 2d | 2015-06-05 | 2015-06-08 | 205 | 74d | 0d | start no earlier than 2015-05-14 | Jordan Brown | 16h |
| 207 | 1.1.10.6 | Check into Git | milestone | 0d | 2015-06-08 | 2015-06-08 | 206 | 74d | 0d |  | Jordan Brown |  |
| 208 | 1.1.10.7 | Development - Staging/Connections |  | 2d | 2015-06-09 | 2015-06-10 | 207 | 74d | 0d | start no earlier than 2015-05-14 | Jordan Brown | 16h |
| 209 | 1.1.10.8 | Check into Git | milestone | 0d | 2015-06-10 | 2015-06-10 | 208 | 99d |  |  | Jordan Brown |  |
| 210 | 1.1.10.9 | Dev Data - Peer Review |  | 0.5d | 2015-06-11 | 2015-06-11 | 208 | 74d | 0d |  | Nagarjuna Gogineni | 4h |
| 211 | 1.1.10.10 | Development - Stage to Target |  | 2d | 2015-06-11 | 2015-06-15 | 210 | 74d | 0d |  | Jordan Brown | 16h |
| 212 | 1.1.10.11 | Check into Git | milestone | 0d | 2015-06-15 | 2015-06-15 | 211 | 96.5d |  |  | Jordan Brown |  |
| 213 | 1.1.10.12 | Dev Code - Peer Review |  | 0.5d | 2015-06-15 | 2015-06-15 | 211 | 74d | 0d | start no earlier than 2015-02-23 | Nagarjuna Gogineni | 4h |
| 214 | 1.1.10.13 | Development - Handoff Runbook / Test Cases |  | 1d | 2015-06-16 | 2015-06-16 | 213 | 74d | 0d | start no earlier than 2015-02-25 | Jordan Brown | 8h |
| 215 | 1.1.10.14 | Posted to Sharepoint and Git | milestone | 0d | 2015-06-16 | 2015-06-16 | 214 | 95d |  |  | Jordan Brown |  |
| 216 | 1.1.10.15 | QE |  | 5d | 2015-06-17 | 2015-06-23 | 214 | 90d |  |  |  |  |
| 217 | 1.1.10.16 | UAT |  | 10d | 2015-06-17 | 2015-06-30 | 214 | 74d | 0d | start no earlier than 2015-03-04 |  |  |
| 218 | 1.1.10.17 | Rollout |  | 1d | 2015-07-01 | 2015-07-01 | 217 | 84d |  | start no earlier than 2015-03-06 |  |  |
| 219 | 1.1.10.18 | Support |  | 10d | 2015-07-01 | 2015-07-15 | 217 | 74d | 0d | start no earlier than 2015-03-27 |  |  |
| 220 | 1.1.10.19 | Close |  | 1d | 2015-07-16 | 2015-07-16 | 219 | 74d |  |  |  |  |

Notes:
- 192: Schedule Checkpoint meetings every 2 weeks
- 201: Schedule Checkpoint meetings every 2 weeks

| ID | WBS | Task | Type | Duration | Start | Finish | Predecessors | Total slack | Free slack | Constraint | Resources | Work |
| --- | --- | --- | --- | --- | --- | --- | --- | --- | --- | --- | --- | --- |
| 221 | 1.1.11 | **Dim_Invoice** |  | 27d | 2015-05-19 | 2015-06-25 |  | 52d |  |  |  | 88h |
| 222 | 1.1.11.1 | SDA |  | 2d | 2015-06-05 | 2015-06-08 | 204 | 40d | 0d | start no earlier than 2015-04-13 | David Teniente | 16h |
| 223 | 1.1.11.2 | Architecture - Physical Model |  | 1d | 2015-06-09 | 2015-06-09 | 222 | 40d | 0d |  | David Teniente | 8h |
| 224 | 1.1.11.3 | Check into Git | milestone | 0d | 2015-06-09 | 2015-06-09 | 223 | 100d |  |  | David Teniente |  |
| 225 | 1.1.11.4 | Architecture Review | milestone | 0d | 2015-06-09 | 2015-06-09 | 223 | 100d |  |  |  |  |
| 226 | 1.1.11.5 | Field Mapping |  | 2d | 2015-06-10 | 2015-06-11 | 223 | 40d | 0d |  | David Teniente | 16h |
| 227 | 1.1.11.6 | Check into Git | milestone | 0d | 2015-06-11 | 2015-06-11 | 226 | 40d | 0d |  | David Teniente |  |
| 228 | 1.1.11.7 | Development - Staging/Connections |  | 2d | 2015-05-19 | 2015-05-20 |  | 88d | 0d | start no earlier than 2015-05-19 | Nagarjuna Gogineni | 16h |
| 229 | 1.1.11.8 | Check into Git | milestone | 0d | 2015-05-20 | 2015-05-20 | 228 | 113d |  |  | Nagarjuna Gogineni |  |
| 230 | 1.1.11.9 | Dev Data - Peer Review |  | 0.5d | 2015-05-21 | 2015-05-21 | 228 | 88d | 0d |  | Jordan Brown | 4h |
| 231 | 1.1.11.10 | Development - Stage to Target |  | 2d | 2015-05-21 | 2015-05-26 | 230 | 88d | 0d |  | Nagarjuna Gogineni | 16h |
| 232 | 1.1.11.11 | Check into Git | milestone | 0d | 2015-05-26 | 2015-05-26 | 231 | 110.5d |  |  | Nagarjuna Gogineni |  |
| 233 | 1.1.11.12 | Dev Code - Peer Review |  | 0.5d | 2015-05-26 | 2015-05-26 | 231 | 88d | 0d | start no earlier than 2015-02-23 | Jordan Brown | 4h |
| 234 | 1.1.11.13 | Development - Handoff Runbook / Test Cases |  | 1d | 2015-05-27 | 2015-05-27 | 233 | 88d | 0d | start no earlier than 2015-02-25 | Nagarjuna Gogineni | 8h |
| 235 | 1.1.11.14 | Posted to Sharepoint and Git | milestone | 0d | 2015-05-27 | 2015-05-27 | 234 | 109d |  |  | Nagarjuna Gogineni |  |
| 236 | 1.1.11.15 | QE |  | 5d | 2015-05-28 | 2015-06-03 | 234 | 104d |  |  |  |  |
| 237 | 1.1.11.16 | UAT |  | 10d | 2015-05-28 | 2015-06-10 | 234 | 88d | 0d | start no earlier than 2015-03-04 |  |  |
| 238 | 1.1.11.17 | Rollout |  | 1d | 2015-06-11 | 2015-06-11 | 237 | 98d |  | start no earlier than 2015-03-06 |  |  |
| 239 | 1.1.11.18 | Support |  | 10d | 2015-06-11 | 2015-06-24 | 237 | 88d | 0d | start no earlier than 2015-03-27 |  |  |
| 240 | 1.1.11.19 | Close |  | 1d | 2015-06-25 | 2015-06-25 | 239 | 88d |  |  |  |  |
| 241 | 1.1.12 | **BRM Product** |  | 34d | 2015-06-12 | 2015-07-30 |  | 40d |  |  |  | 96h |
| 242 | 1.1.12.1 | SDA |  | 3d | 2015-06-12 | 2015-06-16 | 227 | 40d | 0d | start no earlier than 2015-04-13 | David Teniente | 24h |
| 243 | 1.1.12.2 | Architecture - Physical Model |  | 1d | 2015-06-17 | 2015-06-17 | 242 | 40d | 0d |  | David Teniente | 8h |
| 244 | 1.1.12.3 | Check into Git | milestone | 0d | 2015-06-17 | 2015-06-17 | 243 | 40d | 3d |  | David Teniente |  |
| 245 | 1.1.12.4 | Architecture Review | milestone | 0d | 2015-06-17 | 2015-06-17 | 243 | 94d |  |  |  |  |
| 246 | 1.1.12.5 | Field Mapping |  | 3d | 2015-06-18 | 2015-06-22 | 243 | 64d | 0d |  | Jordan Brown | 24h |
| 247 | 1.1.12.6 | Check into Git | milestone | 0d | 2015-06-22 | 2015-06-22 | 246 | 91d |  |  | Jordan Brown |  |
| 248 | 1.1.12.7 | Development - Staging/Connections |  | 2d | 2015-06-23 | 2015-06-24 | 246 | 64d | 0d |  | Nagarjuna Gogineni | 16h |
| 249 | 1.1.12.8 | Check into Git | milestone | 0d | 2015-06-24 | 2015-06-24 | 248 | 89d |  |  | Nagarjuna Gogineni |  |
| 250 | 1.1.12.9 | Dev Data - Peer Review |  | 0.5d | 2015-06-25 | 2015-06-25 | 248 | 64d | 0d |  | Jordan Brown | 4h |
| 251 | 1.1.12.10 | Development - Stage to Target |  | 2d | 2015-06-25 | 2015-06-29 | 250 | 64d | 0d |  | Nagarjuna Gogineni | 16h |
| 252 | 1.1.12.11 | Check into Git | milestone | 0d | 2015-06-29 | 2015-06-29 | 251 | 86.5d |  |  | Nagarjuna Gogineni |  |
| 253 | 1.1.12.12 | Dev Code - Peer Review |  | 0.5d | 2015-06-29 | 2015-06-29 | 251 | 64d | 0d | start no earlier than 2015-02-23 | Jordan Brown | 4h |
| 254 | 1.1.12.13 | Development - Handoff Runbook / Test Cases |  | 1d | 2015-06-30 | 2015-06-30 | 253 | 64d | 0d | start no earlier than 2015-02-25 |  |  |
| 255 | 1.1.12.14 | Posted to Sharepoint and Git | milestone | 0d | 2015-06-30 | 2015-06-30 | 254 | 85d |  |  |  |  |
| 256 | 1.1.12.15 | QE |  | 5d | 2015-07-01 | 2015-07-08 | 254 | 80d |  |  |  |  |
| 257 | 1.1.12.16 | UAT |  | 10d | 2015-07-01 | 2015-07-15 | 254 | 64d | 0d | start no earlier than 2015-03-04 |  |  |
| 258 | 1.1.12.17 | Rollout |  | 1d | 2015-07-16 | 2015-07-16 | 257 | 74d |  | start no earlier than 2015-03-06 |  |  |
| 259 | 1.1.12.18 | Support |  | 10d | 2015-07-16 | 2015-07-29 | 257 | 64d | 0d | start no earlier than 2015-03-27 |  |  |
| 260 | 1.1.12.19 | Close |  | 1d | 2015-07-30 | 2015-07-30 | 259 | 64d |  |  |  |  |

Notes:
- 221: Schedule Checkpoint meetings every 2 weeks
- 241: Schedule Checkpoint meetings every 2 weeks

| ID | WBS | Task | Type | Duration | Start | Finish | Predecessors | Total slack | Free slack | Constraint | Resources | Work |
| --- | --- | --- | --- | --- | --- | --- | --- | --- | --- | --- | --- | --- |
| 261 | 1.1.13 | **Dim_GL** |  | 34d | 2015-06-23 | 2015-08-10 |  | 37d |  |  |  | 104h |
| 262 | 1.1.13.1 | SDA |  | 3d | 2015-06-23 | 2015-06-25 | 244 | 37d | 0d | start no earlier than 2015-04-13 | David Teniente | 24h |
| 263 | 1.1.13.2 | Architecture - Physical Model |  | 1d | 2015-06-26 | 2015-06-26 | 262 | 37d | 0d |  | David Teniente | 8h |
| 264 | 1.1.13.3 | Check into Git | milestone | 0d | 2015-06-26 | 2015-06-26 | 263 | 37d | 0d |  | David Teniente |  |
| 265 | 1.1.13.4 | Architecture Review | milestone | 0d | 2015-06-26 | 2015-06-26 | 263 | 87d |  |  |  |  |
| 266 | 1.1.13.5 | Field Mapping |  | 3d | 2015-06-29 | 2015-07-01 | 263 | 57d | 0d |  | Jordan Brown | 24h |
| 267 | 1.1.13.6 | Check into Git | milestone | 0d | 2015-07-01 | 2015-07-01 | 266 | 84d |  |  | Jordan Brown |  |
| 268 | 1.1.13.7 | Development - Staging/Connections |  | 2d | 2015-07-02 | 2015-07-06 | 266 | 57d | 0d |  | Nagarjuna Gogineni | 16h |
| 269 | 1.1.13.8 | Check into Git | milestone | 0d | 2015-07-06 | 2015-07-06 | 268 | 82d |  |  | Nagarjuna Gogineni |  |
| 270 | 1.1.13.9 | Dev Data - Peer Review |  | 0.5d | 2015-07-07 | 2015-07-07 | 268 | 57d | 0d |  | Jordan Brown | 4h |
| 271 | 1.1.13.10 | Development - Stage to Target |  | 2d | 2015-07-07 | 2015-07-09 | 270 | 57d | 0d |  | Nagarjuna Gogineni | 16h |
| 272 | 1.1.13.11 | Check into Git | milestone | 0d | 2015-07-09 | 2015-07-09 | 271 | 79.5d |  |  | Nagarjuna Gogineni |  |
| 273 | 1.1.13.12 | Dev Code - Peer Review |  | 0.5d | 2015-07-09 | 2015-07-09 | 271 | 57d | 0d | start no earlier than 2015-02-23 | Jordan Brown | 4h |
| 274 | 1.1.13.13 | Development - Handoff Runbook / Test Cases |  | 1d | 2015-07-10 | 2015-07-10 | 273 | 57d | 0d | start no earlier than 2015-02-25 | Nagarjuna Gogineni | 8h |
| 275 | 1.1.13.14 | Posted to Sharepoint and Git | milestone | 0d | 2015-07-10 | 2015-07-10 | 274 | 78d |  |  | Nagarjuna Gogineni |  |
| 276 | 1.1.13.15 | QE |  | 5d | 2015-07-13 | 2015-07-17 | 274 | 73d |  |  |  |  |
| 277 | 1.1.13.16 | UAT |  | 10d | 2015-07-13 | 2015-07-24 | 274 | 57d | 0d | start no earlier than 2015-03-04 |  |  |
| 278 | 1.1.13.17 | Rollout |  | 1d | 2015-07-27 | 2015-07-27 | 277 | 67d |  | start no earlier than 2015-03-06 |  |  |
| 279 | 1.1.13.18 | Support |  | 10d | 2015-07-27 | 2015-08-07 | 277 | 57d | 0d | start no earlier than 2015-03-27 |  |  |
| 280 | 1.1.13.19 | Close |  | 1d | 2015-08-10 | 2015-08-10 | 279 | 57d |  |  |  |  |
| 281 | 1.1.14 | **Product Agg** |  | 32d | 2015-06-29 | 2015-08-12 |  | 37d |  |  |  | 88h |
| 282 | 1.1.14.1 | Load Strategy |  | 2d | 2015-06-29 | 2015-06-30 | 264 | 37d | 0d |  | David Teniente | 16h |
| 283 | 1.1.14.2 | Architecture - Physical Model |  | 1d | 2015-07-01 | 2015-07-01 | 282 | 37d | 0d | start no earlier than 2015-04-27 | David Teniente | 8h |
| 284 | 1.1.14.3 | Field Mapping |  | 2d | 2015-07-02 | 2015-07-06 | 283 | 55d | 0d | start no earlier than 2015-05-07 | Jordan Brown | 16h |
| 285 | 1.1.14.4 | Check into Git | milestone | 0d | 2015-07-06 | 2015-07-06 | 284 | 82d |  |  | Jordan Brown |  |
| 286 | 1.1.14.5 | Architecture Review | milestone | 0d | 2015-07-06 | 2015-07-06 | 284 | 82d |  |  |  |  |
| 287 | 1.1.14.6 | Development - Staging/Connections |  | 2d | 2015-07-07 | 2015-07-08 | 284 | 55d | 0d |  | Jordan Brown | 16h |
| 288 | 1.1.14.7 | Dev Data - Peer Review |  | 0.5d | 2015-07-09 | 2015-07-09 | 287 | 55d | 0d |  | Nagarjuna Gogineni | 4h |
| 289 | 1.1.14.8 | Development - Stage to Target |  | 2d | 2015-07-09 | 2015-07-13 | 288 | 55d | 0d |  | Jordan Brown | 16h |
| 290 | 1.1.14.9 | Dev Code - Peer Review |  | 0.5d | 2015-07-13 | 2015-07-13 | 289 | 55d | 0d | start no earlier than 2015-02-23 | Nagarjuna Gogineni | 4h |
| 291 | 1.1.14.10 | Development - Handoff Runbook / Test Cases |  | 1d | 2015-07-14 | 2015-07-14 | 290 | 55d | 0d | start no earlier than 2015-02-25 | Jordan Brown | 8h |
| 292 | 1.1.14.11 | QE |  | 5d | 2015-07-15 | 2015-07-21 | 291 | 71d |  |  |  |  |
| 293 | 1.1.14.12 | UAT |  | 10d | 2015-07-15 | 2015-07-28 | 291 | 55d | 0d | start no earlier than 2015-03-04 |  |  |
| 294 | 1.1.14.13 | Rollout |  | 1d | 2015-07-29 | 2015-07-29 | 293 | 65d |  | start no earlier than 2015-03-06 |  |  |
| 295 | 1.1.14.14 | Support |  | 10d | 2015-07-29 | 2015-08-11 | 293 | 55d | 0d | start no earlier than 2015-03-27 |  |  |
| 296 | 1.1.14.15 | Close |  | 1d | 2015-08-12 | 2015-08-12 | 295 | 55d |  |  |  |  |

Notes:
- 261: Schedule Checkpoint meetings every 2 weeks
- 281: Schedule Checkpoint meetings every 2 weeks

| ID | WBS | Task | Type | Duration | Start | Finish | Predecessors | Total slack | Free slack | Constraint | Resources | Work |
| --- | --- | --- | --- | --- | --- | --- | --- | --- | --- | --- | --- | --- |
| 297 | 1.1.15 | **Daily Agg** |  | 27d | 2015-06-11 | 2015-07-20 |  | 52d |  |  |  | 88h |
| 298 | 1.1.15.1 | Load Strategy |  | 2d | 2015-07-02 | 2015-07-06 | 283 | 37d | 0d |  | David Teniente | 16h |
| 299 | 1.1.15.2 | Architecture - Physical Model |  | 1d | 2015-07-07 | 2015-07-07 | 298 | 37d | 0d |  | David Teniente | 8h |
| 300 | 1.1.15.3 | Field Mapping |  | 2d | 2015-07-08 | 2015-07-09 | 299 | 37d | 0d |  | David Teniente | 16h |
| 301 | 1.1.15.4 | Check into Git | milestone | 0d | 2015-07-09 | 2015-07-09 | 300 | 79d |  |  | David Teniente |  |
| 302 | 1.1.15.5 | Architecture Review | milestone | 0d | 2015-07-09 | 2015-07-09 | 300 | 79d |  |  |  |  |
| 303 | 1.1.15.6 | Development - Staging/Connections |  | 2d | 2015-06-11 | 2015-06-12 |  | 72d | 0d | start no earlier than 2015-06-11 | Nagarjuna Gogineni | 16h |
| 304 | 1.1.15.7 | Dev Data - Peer Review |  | 0.5d | 2015-06-15 | 2015-06-15 | 303 | 72d | 0d |  | Jordan Brown | 4h |
| 305 | 1.1.15.8 | Development - Stage to Target |  | 2d | 2015-06-15 | 2015-06-17 | 304 | 72d | 0d |  | Nagarjuna Gogineni | 16h |
| 306 | 1.1.15.9 | Dev Code - Peer Review |  | 0.5d | 2015-06-17 | 2015-06-17 | 305 | 72d | 0d | start no earlier than 2015-02-23 | Jordan Brown | 4h |
| 307 | 1.1.15.10 | Development - Handoff Runbook / Test Cases |  | 1d | 2015-06-18 | 2015-06-18 | 306 | 72d | 0d | start no earlier than 2015-02-25 | Nagarjuna Gogineni | 8h |
| 308 | 1.1.15.11 | QE |  | 5d | 2015-06-19 | 2015-06-25 | 307 | 88d |  |  |  |  |
| 309 | 1.1.15.12 | UAT |  | 10d | 2015-06-19 | 2015-07-02 | 307 | 72d | 0d | start no earlier than 2015-03-04 |  |  |
| 310 | 1.1.15.13 | Rollout |  | 1d | 2015-07-06 | 2015-07-06 | 309 | 82d |  | start no earlier than 2015-03-06 |  |  |
| 311 | 1.1.15.14 | Support |  | 10d | 2015-07-06 | 2015-07-17 | 309 | 72d | 0d | start no earlier than 2015-03-27 |  |  |
| 312 | 1.1.15.15 | Close |  | 1d | 2015-07-20 | 2015-07-20 | 311 | 72d |  |  |  |  |
| 313 | 1.1.16 | **Weekly Agg** |  | 32d | 2015-07-10 | 2015-08-24 |  | 37d |  |  |  | 88h |
| 314 | 1.1.16.1 | Load Strategy |  | 2d | 2015-07-10 | 2015-07-13 | 300 | 37d | 0d |  | David Teniente | 16h |
| 315 | 1.1.16.2 | Architecture - Physical Model |  | 1d | 2015-07-14 | 2015-07-14 | 314 | 37d | 0d |  | David Teniente | 8h |
| 316 | 1.1.16.3 | Field Mapping |  | 2d | 2015-07-15 | 2015-07-16 | 315 | 47d | 0d |  | Jordan Brown | 16h |
| 317 | 1.1.16.4 | Check into Git | milestone | 0d | 2015-07-16 | 2015-07-16 | 316 | 74d |  |  | Jordan Brown |  |
| 318 | 1.1.16.5 | Architecture Review | milestone | 0d | 2015-07-16 | 2015-07-16 | 316 | 74d |  |  |  |  |
| 319 | 1.1.16.6 | Development - Staging/Connections |  | 2d | 2015-07-17 | 2015-07-20 | 316 | 47d | 0d |  | Nagarjuna Gogineni | 16h |
| 320 | 1.1.16.7 | Dev Data - Peer Review |  | 0.5d | 2015-07-21 | 2015-07-21 | 319 | 47d | 0d |  | Jordan Brown | 4h |
| 321 | 1.1.16.8 | Development - Stage to Target |  | 2d | 2015-07-21 | 2015-07-23 | 320 | 47d | 0d |  | Nagarjuna Gogineni | 16h |
| 322 | 1.1.16.9 | Dev Code - Peer Review |  | 0.5d | 2015-07-23 | 2015-07-23 | 321 | 47d | 0d | start no earlier than 2015-02-23 | Jordan Brown | 4h |
| 323 | 1.1.16.10 | Development - Handoff Runbook / Test Cases |  | 1d | 2015-07-24 | 2015-07-24 | 322 | 47d | 0d | start no earlier than 2015-02-25 | Nagarjuna Gogineni | 8h |
| 324 | 1.1.16.11 | QE |  | 5d | 2015-07-27 | 2015-07-31 | 323 | 63d |  |  |  |  |
| 325 | 1.1.16.12 | UAT |  | 10d | 2015-07-27 | 2015-08-07 | 323 | 47d | 0d | start no earlier than 2015-03-04 |  |  |
| 326 | 1.1.16.13 | Rollout |  | 1d | 2015-08-10 | 2015-08-10 | 325 | 57d |  | start no earlier than 2015-03-06 |  |  |
| 327 | 1.1.16.14 | Support |  | 10d | 2015-08-10 | 2015-08-21 | 325 | 47d | 0d | start no earlier than 2015-03-27 |  |  |
| 328 | 1.1.16.15 | Close |  | 1d | 2015-08-24 | 2015-08-24 | 327 | 47d |  |  |  |  |

| ID | WBS | Task | Type | Duration | Start | Finish | Predecessors | Total slack | Free slack | Constraint | Resources | Work |
| --- | --- | --- | --- | --- | --- | --- | --- | --- | --- | --- | --- | --- |
| 329 | 1.1.17 | **Monthly Agg** |  | 32d | 2015-07-15 | 2015-08-27 |  | 37d |  |  |  | 88h |
| 330 | 1.1.17.1 | Load Strategy |  | 2d | 2015-07-15 | 2015-07-16 | 315 | 37d | 0d |  | David Teniente | 16h |
| 331 | 1.1.17.2 | Architecture - Physical Model |  | 1d | 2015-07-17 | 2015-07-17 | 330 | 37d | 0d |  | David Teniente | 8h |
| 332 | 1.1.17.3 | Field Mapping |  | 2d | 2015-07-20 | 2015-07-21 | 331 | 37d | 0d | start no earlier than 2015-05-19 | Jordan Brown | 16h |
| 333 | 1.1.17.4 | Check into Git | milestone | 0d | 2015-07-21 | 2015-07-21 | 332 | 37d | 0d |  | Jordan Brown |  |
| 334 | 1.1.17.5 | Architecture Review | milestone | 0d | 2015-07-21 | 2015-07-21 | 332 | 71d |  |  |  |  |
| 335 | 1.1.17.6 | Development - Staging/Connections |  | 2d | 2015-07-22 | 2015-07-23 | 332 | 44d | 0d |  | Jordan Brown | 16h |
| 336 | 1.1.17.7 | Dev Data - Peer Review |  | 0.5d | 2015-07-24 | 2015-07-24 | 335 | 44d | 0d |  | Nagarjuna Gogineni | 4h |
| 337 | 1.1.17.8 | Development - Stage to Target |  | 2d | 2015-07-24 | 2015-07-28 | 336 | 44d | 0d |  | Jordan Brown | 16h |
| 338 | 1.1.17.9 | Dev Code - Peer Review |  | 0.5d | 2015-07-28 | 2015-07-28 | 337 | 44d | 0d | start no earlier than 2015-02-23 | Nagarjuna Gogineni | 4h |
| 339 | 1.1.17.10 | Development - Handoff Runbook / Test Cases |  | 1d | 2015-07-29 | 2015-07-29 | 338 | 44d | 0d | start no earlier than 2015-02-25 | Jordan Brown | 8h |
| 340 | 1.1.17.11 | QE |  | 5d | 2015-07-30 | 2015-08-05 | 339 | 60d |  |  |  |  |
| 341 | 1.1.17.12 | UAT |  | 10d | 2015-07-30 | 2015-08-12 | 339 | 44d | 0d | start no earlier than 2015-03-04 |  |  |
| 342 | 1.1.17.13 | Rollout |  | 1d | 2015-08-13 | 2015-08-13 | 341 | 54d |  | start no earlier than 2015-03-06 |  |  |
| 343 | 1.1.17.14 | Support |  | 10d | 2015-08-13 | 2015-08-26 | 341 | 44d | 0d | start no earlier than 2015-03-27 |  |  |
| 344 | 1.1.17.15 | Close |  | 1d | 2015-08-27 | 2015-08-27 | 343 | 44d |  |  |  |  |
| 345 | 1.1.18 | **Fact_Account_Instance** |  | 34d | 2015-07-14 | 2015-08-28 |  | 0d |  |  |  |  |
| 346 | 1.1.18.1 | SDA | manual | 3d | 2015-07-14 | 2015-07-16 | 333 |  |  | start no earlier than 2015-07-14 |  |  |
| 347 | 1.1.18.2 | Architecture - Physical Model |  | 1d | 2015-07-17 | 2015-07-17 | 346 | 43d | 0d |  |  |  |
| 348 | 1.1.18.3 | Check into Git | milestone | 0d | 2015-07-17 | 2015-07-17 | 347 | 73d |  |  |  |  |
| 349 | 1.1.18.4 | Architecture Review | milestone | 0d | 2015-07-17 | 2015-07-17 | 347 | 73d |  |  |  |  |
| 350 | 1.1.18.5 | Field Mapping |  | 3d | 2015-07-20 | 2015-07-22 | 347 | 43d | 0d |  |  |  |
| 351 | 1.1.18.6 | Check into Git | milestone | 0d | 2015-07-22 | 2015-07-22 | 350 | 70d |  |  |  |  |
| 352 | 1.1.18.7 | Development - Staging/Connections |  | 2d | 2015-07-23 | 2015-07-24 | 350 | 43d | 0d |  |  |  |
| 353 | 1.1.18.8 | Check into Git | milestone | 0d | 2015-07-24 | 2015-07-24 | 352 | 68d |  |  |  |  |
| 354 | 1.1.18.9 | Dev Data - Peer Review |  | 0.5d | 2015-07-27 | 2015-07-27 | 352 | 43d | 0d |  |  |  |
| 355 | 1.1.18.10 | Development - Stage to Target |  | 2d | 2015-07-27 | 2015-07-29 | 354 | 43d | 0d |  |  |  |
| 356 | 1.1.18.11 | Check into Git | milestone | 0d | 2015-07-29 | 2015-07-29 | 355 | 65.5d |  |  |  |  |
| 357 | 1.1.18.12 | Dev Code - Peer Review |  | 0.5d | 2015-07-29 | 2015-07-29 | 355 | 43d | 0d | start no earlier than 2015-02-23 |  |  |
| 358 | 1.1.18.13 | Development - Handoff Runbook / Test Cases |  | 1d | 2015-07-30 | 2015-07-30 | 357 | 43d | 0d | start no earlier than 2015-02-25 |  |  |
| 359 | 1.1.18.14 | Posted to Sharepoint and Git | milestone | 0d | 2015-07-30 | 2015-07-30 | 358 | 64d |  |  |  |  |
| 360 | 1.1.18.15 | QE |  | 5d | 2015-07-31 | 2015-08-06 | 358 | 59d |  |  |  |  |
| 361 | 1.1.18.16 | UAT |  | 10d | 2015-07-31 | 2015-08-13 | 358 | 43d | 0d | start no earlier than 2015-03-04 |  |  |
| 362 | 1.1.18.17 | Rollout |  | 1d | 2015-08-14 | 2015-08-14 | 361 | 53d |  | start no earlier than 2015-03-06 |  |  |
| 363 | 1.1.18.18 | Support |  | 10d | 2015-08-14 | 2015-08-27 | 361 | 43d | 0d | start no earlier than 2015-03-27 |  |  |
| 364 | 1.1.18.19 | Close |  | 1d | 2015-08-28 | 2015-08-28 | 363 | 43d |  |  |  |  |

| ID | WBS | Task | Type | Duration | Start | Finish | Predecessors | Complete | Remaining | Total slack | Free slack | Constraint | Resources | Work | Actual work |
| --- | --- | --- | --- | --- | --- | --- | --- | --- | --- | --- | --- | --- | --- | --- | --- |
| 365 | 1.2 | **Ticket Dataset** |  | 141d | 2015-04-13 A | 2015-10-29 |  | 1% | 140.04d | 0d |  |  |  | 2328h | 100h |
| 366 | 1.2.1 | **Models** |  | 49d | 2015-04-24 A | 2015-07-02 |  | 10% | 44.01d | 83d |  |  |  | 440h | 44.8h |
| 367 | 1.2.1.1 | **Ticket Created** |  | 7d | 2015-04-24 A | 2015-05-04 |  | 80% | 1.4d | 0d |  |  |  | 56h | 44.8h |
| 368 | 1.2.1.1.1 | SDA |  | 4d | 2015-04-24 A | 2015-04-29 A |  | 100% |  |  |  | start no earlier than 2015-04-20 | Karteek | 32h | 32h |
| 369 | 1.2.1.1.2 | Architecture - Physical Model |  | 2d | 2015-04-30 A | 2015-05-01 | 368 | 80% | 0.4d | 0d |  |  | Karteek | 16h | 12.8h |
| 370 | 1.2.1.1.3 | Check into Git |  | 1d | 2015-05-01 A | 2015-05-04 | 369 |  | 1d | 0d |  |  | Karteek | 8h |  |
| 371 | 1.2.1.1.4 | Architecture Review | milestone | 0d | 2015-05-01 | 2015-05-01 | 369 |  |  | 1d |  |  |  |  |  |
| 372 | 1.2.1.2 | **Tickets Account Instance** |  | 6d | 2015-05-05 | 2015-05-12 |  |  |  | 0d |  |  |  | 48h |  |
| 373 | 1.2.1.2.1 | SDA |  | 4d | 2015-05-05 | 2015-05-08 | 367 |  |  | 0d |  | start no earlier than 2015-04-20 | Karteek | 32h |  |
| 374 | 1.2.1.2.2 | Architecture - Physical Model |  | 2d | 2015-05-11 | 2015-05-12 | 373 |  |  | 0d |  |  | Karteek | 16h |  |
| 375 | 1.2.1.2.3 | Check into Git | milestone | 0d | 2015-05-12 | 2015-05-12 | 374 |  |  | 0d |  |  | Karteek |  |  |
| 376 | 1.2.1.2.4 | Architecture Review | milestone | 0d | 2015-05-12 | 2015-05-12 | 374 |  |  | 0d |  |  |  |  |  |
| 377 | 1.2.1.3 | **Tickets Assigned** |  | 6d | 2015-05-13 | 2015-05-20 |  |  |  | 0d |  |  |  | 48h |  |
| 378 | 1.2.1.3.1 | SDA |  | 4d | 2015-05-13 | 2015-05-18 | 372 |  |  | 0d |  | start no earlier than 2015-04-20 | Karteek | 32h |  |
| 379 | 1.2.1.3.2 | Architecture - Physical Model |  | 2d | 2015-05-19 | 2015-05-20 | 378 |  |  | 113d | 0d |  | Karteek | 16h |  |
| 380 | 1.2.1.3.3 | Check into Git | milestone | 0d | 2015-05-20 | 2015-05-20 | 379 |  |  | 113d |  |  | Karteek |  |  |
| 381 | 1.2.1.3.4 | Architecture Review | milestone | 0d | 2015-05-20 | 2015-05-20 | 379 |  |  | 113d |  |  |  |  |  |
| 382 | 1.2.1.4 | **Tickets Queue** |  | 6d | 2015-05-19 | 2015-05-27 |  |  |  | 0d |  |  |  | 48h |  |
| 383 | 1.2.1.4.1 | SDA |  | 4d | 2015-05-19 | 2015-05-22 | 378 |  |  | 0d |  | start no earlier than 2015-04-20 | Karteek | 32h |  |
| 384 | 1.2.1.4.2 | Architecture - Physical Model |  | 2d | 2015-05-26 | 2015-05-27 | 383 |  |  | 0d |  |  | Karteek | 16h |  |
| 385 | 1.2.1.4.3 | Check into Git | milestone | 0d | 2015-05-27 | 2015-05-27 | 384 |  |  | 0d |  |  | Karteek |  |  |
| 386 | 1.2.1.4.4 | Architecture Review | milestone | 0d | 2015-05-27 | 2015-05-27 | 384 |  |  | 0d |  |  |  |  |  |
| 387 | 1.2.1.5 | **Tickets State** |  | 6d | 2015-05-28 | 2015-06-04 |  |  |  | 0d |  |  |  | 48h |  |
| 388 | 1.2.1.5.1 | SDA |  | 4d | 2015-05-28 | 2015-06-02 | 382 |  |  | 0d |  | start no earlier than 2015-04-20 | Karteek | 32h |  |
| 389 | 1.2.1.5.2 | Architecture - Physical Model |  | 2d | 2015-06-03 | 2015-06-04 | 388 |  |  | 103d | 0d |  | Karteek | 16h |  |
| 390 | 1.2.1.5.3 | Check into Git | milestone | 0d | 2015-06-04 | 2015-06-04 | 389 |  |  | 103d |  |  | Karteek |  |  |
| 391 | 1.2.1.5.4 | Architecture Review | milestone | 0d | 2015-06-04 | 2015-06-04 | 389 |  |  | 103d |  |  |  |  |  |

| ID | WBS | Task | Type | Duration | Start | Finish | Predecessors | Complete | Remaining | Total slack | Free slack | Constraint | Resources | Work | Actual work |
| --- | --- | --- | --- | --- | --- | --- | --- | --- | --- | --- | --- | --- | --- | --- | --- |
| 392 | 1.2.1.6 | **Tickets Resolution** |  | 6d | 2015-06-03 | 2015-06-10 |  |  |  | 0d |  |  |  | 48h |  |
| 393 | 1.2.1.6.1 | SDA |  | 4d | 2015-06-03 | 2015-06-08 | 388 |  |  | 0d |  | start no earlier than 2015-04-20 | Karteek | 32h |  |
| 394 | 1.2.1.6.2 | Architecture - Physical Model |  | 2d | 2015-06-09 | 2015-06-10 | 393 |  |  | 0d |  |  | Karteek | 16h |  |
| 395 | 1.2.1.6.3 | Check into Git | milestone | 0d | 2015-06-10 | 2015-06-10 | 394 |  |  | 0d |  |  | Karteek |  |  |
| 396 | 1.2.1.6.4 | Architecture Review | milestone | 0d | 2015-06-10 | 2015-06-10 | 394 |  |  | 0d |  |  |  |  |  |
| 397 | 1.2.1.7 | **Ticket 1st Response** |  | 6d | 2015-06-11 | 2015-06-18 |  |  |  | 0d |  |  |  | 48h |  |
| 398 | 1.2.1.7.1 | SDA |  | 4d | 2015-06-11 | 2015-06-16 | 392 |  |  | 0d |  | start no earlier than 2015-04-20 | Karteek | 32h |  |
| 399 | 1.2.1.7.2 | Architecture - Physical Model |  | 2d | 2015-06-17 | 2015-06-18 | 398 |  |  | 93d | 0d |  | Karteek | 16h |  |
| 400 | 1.2.1.7.3 | Check into Git | milestone | 0d | 2015-06-18 | 2015-06-18 | 399 |  |  | 93d |  |  | Karteek |  |  |
| 401 | 1.2.1.7.4 | Architecture Review | milestone | 0d | 2015-06-18 | 2015-06-18 | 399 |  |  | 93d |  |  |  |  |  |
| 402 | 1.2.1.8 | **Ticket Comments** |  | 6d | 2015-06-17 | 2015-06-24 |  |  |  | 0d |  |  |  | 48h |  |
| 403 | 1.2.1.8.1 | SDA |  | 4d | 2015-06-17 | 2015-06-22 | 398 |  |  | 0d |  | start no earlier than 2015-04-20 | Karteek | 32h |  |
| 404 | 1.2.1.8.2 | Architecture - Physical Model |  | 2d | 2015-06-23 | 2015-06-24 | 403 |  |  | 0d |  |  | Karteek | 16h |  |
| 405 | 1.2.1.8.3 | Check into Git | milestone | 0d | 2015-06-24 | 2015-06-24 | 404 |  |  | 0d |  |  | Karteek |  |  |
| 406 | 1.2.1.8.4 | Architecture Review | milestone | 0d | 2015-06-24 | 2015-06-24 | 404 |  |  | 0d |  |  |  |  |  |
| 407 | 1.2.1.9 | **Ticket Relationship** |  | 6d | 2015-06-25 | 2015-07-02 |  |  |  | 0d |  |  |  | 48h |  |
| 408 | 1.2.1.9.1 | SDA |  | 4d | 2015-06-25 | 2015-06-30 | 402 |  |  | 0d |  | start no earlier than 2015-04-20 | Karteek | 32h |  |
| 409 | 1.2.1.9.2 | Architecture - Physical Model |  | 2d | 2015-07-01 | 2015-07-02 | 408 |  |  | 0d |  |  | Karteek | 16h |  |
| 410 | 1.2.1.9.3 | Check into Git | milestone | 0d | 2015-07-02 | 2015-07-02 | 409 |  |  | 0d |  |  | Karteek |  |  |
| 411 | 1.2.1.9.4 | Architecture Review | milestone | 0d | 2015-07-02 | 2015-07-02 | 409 |  |  | 0d |  |  |  |  |  |
| 412 | 1.2.2 | **Core** |  | 129d | 2015-04-29 A | 2015-10-29 |  | 1% | 127.8d | 0d |  |  |  | 1024h | 33.6h |
| 413 | 1.2.2.1 | **Dim_Ticket** |  | 81d | 2015-04-29 A | 2015-08-21 |  | 11% | 72.05d | 48d |  |  |  | 88h | 33.6h |
| 414 | 1.2.2.1.1 | SDA |  | 3d | 2015-04-29 A | 2015-05-01 A |  | 100% |  |  |  | start no earlier than 2015-04-29 | Prakash | 24h | 24h |
| 415 | 1.2.2.1.2 | Field Mapping |  | 2d | 2015-04-29 A | 2015-05-05 | 414 | 60% | 0.8d | 42d | 0d |  | Prakash | 16h | 9.6h |
| 416 | 1.2.2.1.3 | Check into Git | milestone | 0d | 2015-05-05 | 2015-05-05 | 415 |  |  | 42d | 0d |  | Prakash |  |  |
| 417 | 1.2.2.1.4 | Development - Staging/Connections |  | 2d | 2015-07-16 | 2015-07-17 | 467 |  |  | 0d |  |  | Prasanth | 16h |  |
| 418 | 1.2.2.1.5 | Check into Git | milestone | 0d | 2015-07-17 | 2015-07-17 | 417 |  |  | 73d |  |  | Prasanth |  |  |
| 419 | 1.2.2.1.6 | Dev Data - Peer Review |  | 0.5d | 2015-07-20 | 2015-07-20 | 417 |  |  | 0d |  |  | Sravan | 4h |  |
| 420 | 1.2.2.1.7 | Development - Stage to Target |  | 2d | 2015-07-20 | 2015-07-22 | 419 |  |  | 0d |  |  | Prasanth | 16h |  |
| 421 | 1.2.2.1.8 | Check into Git | milestone | 0d | 2015-07-22 | 2015-07-22 | 420 |  |  | 70.5d |  |  | Prasanth |  |  |
| 422 | 1.2.2.1.9 | Dev Code - Peer Review |  | 0.5d | 2015-07-22 | 2015-07-22 | 420 |  |  | 0d |  | start no earlier than 2015-02-23 | Sravan | 4h |  |
| 423 | 1.2.2.1.10 | Development - Handoff Runbook / Test Cases |  | 1d | 2015-07-23 | 2015-07-23 | 422 |  |  | 0d |  | start no earlier than 2015-02-25 | Prasanth | 8h |  |
| 424 | 1.2.2.1.11 | Posted to Sharepoint and Git | milestone | 0d | 2015-07-23 | 2015-07-23 | 423 |  |  | 0d |  |  | Prasanth |  |  |
| 425 | 1.2.2.1.12 | QE |  | 5d | 2015-07-24 | 2015-07-30 | 423 |  |  | 64d |  |  |  |  |  |
| 426 | 1.2.2.1.13 | UAT |  | 10d | 2015-07-24 | 2015-08-06 | 423 |  |  | 48d | 0d | start no earlier than 2015-03-04 |  |  |  |
| 427 | 1.2.2.1.14 | Rollout |  | 1d | 2015-08-07 | 2015-08-07 | 426 |  |  | 58d |  | start no earlier than 2015-03-06 |  |  |  |
| 428 | 1.2.2.1.15 | Support |  | 10d | 2015-08-07 | 2015-08-20 | 426 |  |  | 48d | 0d | start no earlier than 2015-03-27 |  |  |  |
| 429 | 1.2.2.1.16 | Close |  | 1d | 2015-08-21 | 2015-08-21 | 428 |  |  | 48d |  |  |  |  |  |

| ID | WBS | Task | Type | Duration | Start | Finish | Predecessors | Total slack | Free slack | Constraint | Resources | Work |
| --- | --- | --- | --- | --- | --- | --- | --- | --- | --- | --- | --- | --- |
| 430 | 1.2.2.2 | **Fact_Ticket_Created** |  | 42d | 2015-07-06 | 2015-09-01 |  | 0d |  |  |  | 88h |
| 431 | 1.2.2.2.1 | SDA |  | 2d | 2015-07-06 | 2015-07-07 | 407 | 0d |  | start no earlier than 2015-04-29 | Prasanth | 16h |
| 432 | 1.2.2.2.2 | Field Mapping |  | 2d | 2015-07-08 | 2015-07-09 | 431 | 0d |  |  | Prasanth | 16h |
| 433 | 1.2.2.2.3 | Check into Git | milestone | 0d | 2015-07-09 | 2015-07-09 | 432 | 0d |  |  | Prasanth |  |
| 434 | 1.2.2.2.4 | Development - Staging/Connections |  | 3d | 2015-07-24 | 2015-07-28 | 424 | 0d |  |  | Prasanth | 24h |
| 435 | 1.2.2.2.5 | Check into Git | milestone | 0d | 2015-07-28 | 2015-07-28 | 434 | 66d |  |  | Prasanth |  |
| 436 | 1.2.2.2.6 | Dev Data - Peer Review |  | 0.5d | 2015-07-29 | 2015-07-29 | 434 | 0d |  |  | Sravan | 4h |
| 437 | 1.2.2.2.7 | Development - Stage to Target |  | 2d | 2015-07-29 | 2015-07-31 | 436 | 0d |  |  | Prasanth | 16h |
| 438 | 1.2.2.2.8 | Check into Git | milestone | 0d | 2015-07-31 | 2015-07-31 | 437 | 63.5d |  |  | Prasanth |  |
| 439 | 1.2.2.2.9 | Dev Code - Peer Review |  | 0.5d | 2015-07-31 | 2015-07-31 | 437 | 0d |  | start no earlier than 2015-02-23 | Sravan | 4h |
| 440 | 1.2.2.2.10 | Development - Handoff Runbook / Test Cases |  | 1d | 2015-08-03 | 2015-08-03 | 439 | 0d |  | start no earlier than 2015-02-25 | Prasanth | 8h |
| 441 | 1.2.2.2.11 | Posted to Sharepoint and Git | milestone | 0d | 2015-08-03 | 2015-08-03 | 440 | 0d |  |  | Prasanth |  |
| 442 | 1.2.2.2.12 | QE |  | 5d | 2015-08-04 | 2015-08-10 | 440 | 57d |  |  |  |  |
| 443 | 1.2.2.2.13 | UAT |  | 10d | 2015-08-04 | 2015-08-17 | 440 | 41d | 0d | start no earlier than 2015-03-04 |  |  |
| 444 | 1.2.2.2.14 | Rollout |  | 1d | 2015-08-18 | 2015-08-18 | 443 | 51d |  | start no earlier than 2015-03-06 |  |  |
| 445 | 1.2.2.2.15 | Support |  | 10d | 2015-08-18 | 2015-08-31 | 443 | 41d | 0d | start no earlier than 2015-03-27 |  |  |
| 446 | 1.2.2.2.16 | Close |  | 1d | 2015-09-01 | 2015-09-01 | 445 | 41d |  |  |  |  |
| 447 | 1.2.2.3 | **Fact_Ticket_Account_Instance** |  | 90d | 2015-05-06 | 2015-09-11 |  | 34d |  |  |  | 88h |
| 448 | 1.2.2.3.1 | SDA |  | 2d | 2015-05-06 | 2015-05-07 | 416 | 42d | 0d | start no earlier than 2015-04-13 | Prakash | 16h |
| 449 | 1.2.2.3.2 | Field Mapping |  | 2d | 2015-05-08 | 2015-05-11 | 448 | 42d | 0d |  | Prakash | 16h |
| 450 | 1.2.2.3.3 | Check into Git | milestone | 0d | 2015-05-11 | 2015-05-11 | 449 | 42d | 0d |  | Prakash |  |
| 451 | 1.2.2.3.4 | Development - Staging/Connections |  | 3d | 2015-08-04 | 2015-08-06 | 441 | 0d |  |  | Prasanth | 24h |
| 452 | 1.2.2.3.5 | Check into Git | milestone | 0d | 2015-08-06 | 2015-08-06 | 451 | 59d |  |  | Prasanth |  |
| 453 | 1.2.2.3.6 | Dev Data - Peer Review |  | 0.5d | 2015-08-07 | 2015-08-07 | 451 | 0d |  |  | Sravan | 4h |
| 454 | 1.2.2.3.7 | Development - Stage to Target |  | 2d | 2015-08-07 | 2015-08-11 | 453 | 0d |  |  | Prasanth | 16h |
| 455 | 1.2.2.3.8 | Check into Git | milestone | 0d | 2015-08-11 | 2015-08-11 | 454 | 56.5d |  |  | Prasanth |  |
| 456 | 1.2.2.3.9 | Dev Code - Peer Review |  | 0.5d | 2015-08-11 | 2015-08-11 | 454 | 0d |  | start no earlier than 2015-02-23 | Sravan | 4h |
| 457 | 1.2.2.3.10 | Development - Handoff Runbook / Test Cases |  | 1d | 2015-08-12 | 2015-08-12 | 456 | 0d |  | start no earlier than 2015-02-25 | Prasanth | 8h |
| 458 | 1.2.2.3.11 | Posted to Sharepoint and Git | milestone | 0d | 2015-08-12 | 2015-08-12 | 457 | 0d |  |  | Prasanth |  |
| 459 | 1.2.2.3.12 | QE |  | 5d | 2015-08-13 | 2015-08-19 | 457 | 50d |  |  |  |  |
| 460 | 1.2.2.3.13 | UAT |  | 10d | 2015-08-13 | 2015-08-26 | 457 | 34d | 0d | start no earlier than 2015-03-04 |  |  |
| 461 | 1.2.2.3.14 | Rollout |  | 1d | 2015-08-27 | 2015-08-27 | 460 | 44d |  | start no earlier than 2015-03-06 |  |  |
| 462 | 1.2.2.3.15 | Support |  | 10d | 2015-08-27 | 2015-09-10 | 460 | 34d | 0d | start no earlier than 2015-03-27 |  |  |
| 463 | 1.2.2.3.16 | Close |  | 1d | 2015-09-11 | 2015-09-11 | 462 | 34d |  |  |  |  |

| ID | WBS | Task | Type | Duration | Start | Finish | Predecessors | Total slack | Free slack | Constraint | Resources | Work |
| --- | --- | --- | --- | --- | --- | --- | --- | --- | --- | --- | --- | --- |
| 464 | 1.2.2.4 | **Fact_Ticket_Reponse** |  | 52d | 2015-07-10 | 2015-09-22 |  | 0d |  |  |  | 88h |
| 465 | 1.2.2.4.1 | SDA |  | 2d | 2015-07-10 | 2015-07-13 | 433 | 0d |  | start no earlier than 2015-04-13 | Prasanth | 16h |
| 466 | 1.2.2.4.2 | Field Mapping |  | 2d | 2015-07-14 | 2015-07-15 | 465 | 0d |  |  | Prasanth | 16h |
| 467 | 1.2.2.4.3 | Check into Git | milestone | 0d | 2015-07-15 | 2015-07-15 | 466 | 0d |  |  | Prasanth |  |
| 468 | 1.2.2.4.4 | Development - Staging/Connections |  | 3d | 2015-08-13 | 2015-08-17 | 458 | 0d |  |  | Prasanth | 24h |
| 469 | 1.2.2.4.5 | Check into Git | milestone | 0d | 2015-08-17 | 2015-08-17 | 468 | 52d |  |  | Prasanth |  |
| 470 | 1.2.2.4.6 | Dev Data - Peer Review |  | 0.5d | 2015-08-18 | 2015-08-18 | 468 | 0d |  |  | Sravan | 4h |
| 471 | 1.2.2.4.7 | Development - Stage to Target |  | 2d | 2015-08-18 | 2015-08-20 | 470 | 0d |  |  | Prasanth | 16h |
| 472 | 1.2.2.4.8 | Check into Git | milestone | 0d | 2015-08-20 | 2015-08-20 | 471 | 49.5d |  |  | Prasanth |  |
| 473 | 1.2.2.4.9 | Dev Code - Peer Review |  | 0.5d | 2015-08-20 | 2015-08-20 | 471 | 0d |  | start no earlier than 2015-02-23 | Sravan | 4h |
| 474 | 1.2.2.4.10 | Development - Handoff Runbook / Test Cases |  | 1d | 2015-08-21 | 2015-08-21 | 473 | 0d |  | start no earlier than 2015-02-25 | Prasanth | 8h |
| 475 | 1.2.2.4.11 | Posted to Sharepoint and Git | milestone | 0d | 2015-08-21 | 2015-08-21 | 474 | 0d |  |  | Prasanth |  |
| 476 | 1.2.2.4.12 | QE |  | 5d | 2015-08-24 | 2015-08-28 | 474 | 43d |  |  |  |  |
| 477 | 1.2.2.4.13 | UAT |  | 10d | 2015-08-24 | 2015-09-04 | 474 | 27d | 0d | start no earlier than 2015-03-04 |  |  |
| 478 | 1.2.2.4.14 | Rollout |  | 1d | 2015-09-08 | 2015-09-08 | 477 | 37d |  | start no earlier than 2015-03-06 |  |  |
| 479 | 1.2.2.4.15 | Support |  | 10d | 2015-09-08 | 2015-09-21 | 477 | 27d | 0d | start no earlier than 2015-03-27 |  |  |
| 480 | 1.2.2.4.16 | Close |  | 1d | 2015-09-22 | 2015-09-22 | 479 | 27d |  |  |  |  |
| 481 | 1.2.2.5 | **Dim_Ticket_Queue** |  | 99d | 2015-05-12 | 2015-09-30 |  | 21d |  |  |  | 72h |
| 482 | 1.2.2.5.1 | SDA |  | 1d | 2015-05-12 | 2015-05-12 | 450 | 42d | 0d | start no earlier than 2015-04-13 | Prakash | 8h |
| 483 | 1.2.2.5.2 | Field Mapping |  | 2d | 2015-05-13 | 2015-05-14 | 482 | 42d | 0d |  | Prakash | 16h |
| 484 | 1.2.2.5.3 | Check into Git | milestone | 0d | 2015-05-14 | 2015-05-14 | 483 | 42d | 0d |  | Prakash |  |
| 485 | 1.2.2.5.4 | Development - Staging/Connections |  | 2d | 2015-08-24 | 2015-08-25 | 475 | 0d |  |  | Prasanth | 16h |
| 486 | 1.2.2.5.5 | Check into Git | milestone | 0d | 2015-08-25 | 2015-08-25 | 485 | 46d |  |  | Prasanth |  |
| 487 | 1.2.2.5.6 | Dev Data - Peer Review |  | 0.5d | 2015-08-26 | 2015-08-26 | 485 | 0d |  |  | Sravan | 4h |
| 488 | 1.2.2.5.7 | Development - Stage to Target |  | 2d | 2015-08-26 | 2015-08-28 | 487 | 0d |  |  | Prasanth | 16h |
| 489 | 1.2.2.5.8 | Check into Git | milestone | 0d | 2015-08-28 | 2015-08-28 | 488 | 43.5d |  |  | Prasanth |  |
| 490 | 1.2.2.5.9 | Dev Code - Peer Review |  | 0.5d | 2015-08-28 | 2015-08-28 | 488 | 0d |  | start no earlier than 2015-02-23 | Sravan | 4h |
| 491 | 1.2.2.5.10 | Development - Handoff Runbook / Test Cases |  | 1d | 2015-08-31 | 2015-08-31 | 490 | 0d |  | start no earlier than 2015-02-25 | Prasanth | 8h |
| 492 | 1.2.2.5.11 | Posted to Sharepoint and Git | milestone | 0d | 2015-08-31 | 2015-08-31 | 491 | 0d |  |  | Prasanth |  |
| 493 | 1.2.2.5.12 | QE |  | 5d | 2015-09-01 | 2015-09-08 | 491 | 37d |  |  |  |  |
| 494 | 1.2.2.5.13 | UAT |  | 10d | 2015-09-01 | 2015-09-15 | 491 | 21d | 0d | start no earlier than 2015-03-04 |  |  |
| 495 | 1.2.2.5.14 | Rollout |  | 1d | 2015-09-16 | 2015-09-16 | 494 | 31d |  | start no earlier than 2015-03-06 |  |  |
| 496 | 1.2.2.5.15 | Support |  | 10d | 2015-09-16 | 2015-09-29 | 494 | 21d | 0d | start no earlier than 2015-03-27 |  |  |
| 497 | 1.2.2.5.16 | Close |  | 1d | 2015-09-30 | 2015-09-30 | 496 | 21d |  |  |  |  |

| ID | WBS | Task | Type | Duration | Start | Finish | Predecessors | Total slack | Free slack | Constraint | Resources | Work |
| --- | --- | --- | --- | --- | --- | --- | --- | --- | --- | --- | --- | --- |
| 498 | 1.2.2.6 | **Fact_Ticket_Queue** |  | 103d | 2015-05-15 | 2015-10-09 |  | 14d |  |  |  | 88h |
| 499 | 1.2.2.6.1 | SDA |  | 2d | 2015-05-15 | 2015-05-18 | 484 | 42d | 0d | start no earlier than 2015-04-13 | Prakash | 16h |
| 500 | 1.2.2.6.2 | Field Mapping |  | 2d | 2015-05-19 | 2015-05-20 | 499 | 42d | 0d |  | Prakash | 16h |
| 501 | 1.2.2.6.3 | Check into Git | milestone | 0d | 2015-05-20 | 2015-05-20 | 500 | 42d | 0d |  | Prakash |  |
| 502 | 1.2.2.6.4 | Development - Staging/Connections |  | 3d | 2015-09-01 | 2015-09-03 | 492 | 0d |  |  | Prasanth | 24h |
| 503 | 1.2.2.6.5 | Check into Git | milestone | 0d | 2015-09-03 | 2015-09-03 | 502 | 39d |  |  | Prasanth |  |
| 504 | 1.2.2.6.6 | Dev Data - Peer Review |  | 0.5d | 2015-09-04 | 2015-09-04 | 502 | 0d |  |  | Sravan | 4h |
| 505 | 1.2.2.6.7 | Development - Stage to Target |  | 2d | 2015-09-04 | 2015-09-09 | 504 | 0d |  |  | Prasanth | 16h |
| 506 | 1.2.2.6.8 | Check into Git | milestone | 0d | 2015-09-09 | 2015-09-09 | 505 | 36.5d |  |  | Prasanth |  |
| 507 | 1.2.2.6.9 | Dev Code - Peer Review |  | 0.5d | 2015-09-09 | 2015-09-09 | 505 | 0d |  | start no earlier than 2015-02-23 | Sravan | 4h |
| 508 | 1.2.2.6.10 | Development - Handoff Runbook / Test Cases |  | 1d | 2015-09-10 | 2015-09-10 | 507 | 0d |  | start no earlier than 2015-02-25 | Prasanth | 8h |
| 509 | 1.2.2.6.11 | Posted to Sharepoint and Git | milestone | 0d | 2015-09-10 | 2015-09-10 | 508 | 0d |  |  | Prasanth |  |
| 510 | 1.2.2.6.12 | QE |  | 5d | 2015-09-11 | 2015-09-17 | 508 | 30d |  |  |  |  |
| 511 | 1.2.2.6.13 | UAT |  | 10d | 2015-09-11 | 2015-09-24 | 508 | 14d | 0d | start no earlier than 2015-03-04 |  |  |
| 512 | 1.2.2.6.14 | Rollout |  | 1d | 2015-09-25 | 2015-09-25 | 511 | 24d |  | start no earlier than 2015-03-06 |  |  |
| 513 | 1.2.2.6.15 | Support |  | 10d | 2015-09-25 | 2015-10-08 | 511 | 14d | 0d | start no earlier than 2015-03-27 |  |  |
| 514 | 1.2.2.6.16 | Close |  | 1d | 2015-10-09 | 2015-10-09 | 513 | 14d |  |  |  |  |
| 515 | 1.2.2.7 | **Fact_Ticket_State** |  | 51d | 2015-05-21 | 2015-08-03 |  | 42d |  |  |  | 88h |
| 516 | 1.2.2.7.1 | SDA |  | 2d | 2015-05-21 | 2015-05-22 | 501 | 42d | 0d | start no earlier than 2015-04-13 | Prakash | 16h |
| 517 | 1.2.2.7.2 | Field Mapping |  | 2d | 2015-05-26 | 2015-05-27 | 516 | 42d | 0d |  | Prakash | 16h |
| 518 | 1.2.2.7.3 | Check into Git | milestone | 0d | 2015-05-27 | 2015-05-27 | 517 | 42d | 0d |  | Prakash |  |
| 519 | 1.2.2.7.4 | Development - Staging/Connections |  | 3d | 2015-06-24 | 2015-06-26 | 603 | 42d | 0d |  | Prakash | 24h |
| 520 | 1.2.2.7.5 | Check into Git | milestone | 0d | 2015-06-26 | 2015-06-26 | 519 | 87d |  |  | Prakash |  |
| 521 | 1.2.2.7.6 | Dev Data - Peer Review |  | 0.5d | 2015-06-29 | 2015-06-29 | 519 | 42d | 0d |  | Sravan | 4h |
| 522 | 1.2.2.7.7 | Development - Stage to Target |  | 2d | 2015-06-29 | 2015-07-01 | 521 | 42d | 0d |  | Prakash | 16h |
| 523 | 1.2.2.7.8 | Check into Git | milestone | 0d | 2015-07-01 | 2015-07-01 | 522 | 84.5d |  |  | Prakash |  |
| 524 | 1.2.2.7.9 | Dev Code - Peer Review |  | 0.5d | 2015-07-01 | 2015-07-01 | 522 | 42d | 0d | start no earlier than 2015-02-23 | Sravan | 4h |
| 525 | 1.2.2.7.10 | Development - Handoff Runbook / Test Cases |  | 1d | 2015-07-02 | 2015-07-02 | 524 | 42d | 0d | start no earlier than 2015-02-25 | Prakash | 8h |
| 526 | 1.2.2.7.11 | Posted to Sharepoint and Git | milestone | 0d | 2015-07-02 | 2015-07-02 | 525 | 42d | 0d |  | Prakash |  |
| 527 | 1.2.2.7.12 | QE |  | 5d | 2015-07-06 | 2015-07-10 | 525 | 78d |  |  |  |  |
| 528 | 1.2.2.7.13 | UAT |  | 10d | 2015-07-06 | 2015-07-17 | 525 | 62d | 0d | start no earlier than 2015-03-04 |  |  |
| 529 | 1.2.2.7.14 | Rollout |  | 1d | 2015-07-20 | 2015-07-20 | 528 | 72d |  | start no earlier than 2015-03-06 |  |  |
| 530 | 1.2.2.7.15 | Support |  | 10d | 2015-07-20 | 2015-07-31 | 528 | 62d | 0d | start no earlier than 2015-03-27 |  |  |
| 531 | 1.2.2.7.16 | Close |  | 1d | 2015-08-03 | 2015-08-03 | 530 | 62d |  |  |  |  |

| ID | WBS | Task | Type | Duration | Start | Finish | Predecessors | Total slack | Free slack | Constraint | Resources | Work |
| --- | --- | --- | --- | --- | --- | --- | --- | --- | --- | --- | --- | --- |
| 532 | 1.2.2.8 | **Dim_Ticket_Comment** |  | 53d | 2015-05-28 | 2015-08-11 |  | 42d |  |  |  | 72h |
| 533 | 1.2.2.8.1 | SDA |  | 1d | 2015-05-28 | 2015-05-28 | 518 | 42d | 0d | start no earlier than 2015-04-13 | Prakash | 8h |
| 534 | 1.2.2.8.2 | Field Mapping |  | 2d | 2015-05-29 | 2015-06-01 | 533 | 42d | 0d |  | Prakash | 16h |
| 535 | 1.2.2.8.3 | Check into Git | milestone | 0d | 2015-06-01 | 2015-06-01 | 534 | 42d | 0d |  | Prakash |  |
| 536 | 1.2.2.8.4 | Development - Staging/Connections |  | 2d | 2015-07-06 | 2015-07-07 | 526 | 42d | 0d |  | Prakash | 16h |
| 537 | 1.2.2.8.5 | Check into Git | milestone | 0d | 2015-07-07 | 2015-07-07 | 536 | 81d |  |  | Prakash |  |
| 538 | 1.2.2.8.6 | Dev Data - Peer Review |  | 0.5d | 2015-07-08 | 2015-07-08 | 536 | 42d | 0d |  | Prasanth | 4h |
| 539 | 1.2.2.8.7 | Development - Stage to Target |  | 2d | 2015-07-08 | 2015-07-10 | 538 | 42d | 0d |  | Prakash | 16h |
| 540 | 1.2.2.8.8 | Check into Git | milestone | 0d | 2015-07-10 | 2015-07-10 | 539 | 78.5d |  |  | Prakash |  |
| 541 | 1.2.2.8.9 | Dev Code - Peer Review |  | 0.5d | 2015-07-10 | 2015-07-10 | 539 | 42d | 0d | start no earlier than 2015-02-23 | Prasanth | 4h |
| 542 | 1.2.2.8.10 | Development - Handoff Runbook / Test Cases |  | 1d | 2015-07-13 | 2015-07-13 | 541 | 42d | 0d | start no earlier than 2015-02-25 | Prakash | 8h |
| 543 | 1.2.2.8.11 | Posted to Sharepoint and Git | milestone | 0d | 2015-07-13 | 2015-07-13 | 542 | 42d | 0d |  | Prakash |  |
| 544 | 1.2.2.8.12 | QE |  | 5d | 2015-07-14 | 2015-07-20 | 542 | 72d |  |  |  |  |
| 545 | 1.2.2.8.13 | UAT |  | 10d | 2015-07-14 | 2015-07-27 | 542 | 56d | 0d | start no earlier than 2015-03-04 |  |  |
| 546 | 1.2.2.8.14 | Rollout |  | 1d | 2015-07-28 | 2015-07-28 | 545 | 66d |  | start no earlier than 2015-03-06 |  |  |
| 547 | 1.2.2.8.15 | Support |  | 10d | 2015-07-28 | 2015-08-10 | 545 | 56d | 0d | start no earlier than 2015-03-27 |  |  |
| 548 | 1.2.2.8.16 | Close |  | 1d | 2015-08-11 | 2015-08-11 | 547 | 56d |  |  |  |  |
| 549 | 1.2.2.9 | **Fact_Ticket_Comment** |  | 99d | 2015-06-02 | 2015-10-20 |  | 7d |  |  |  | 88h |
| 550 | 1.2.2.9.1 | SDA |  | 2d | 2015-06-02 | 2015-06-03 | 535 | 42d | 0d | start no earlier than 2015-04-13 | Prakash | 16h |
| 551 | 1.2.2.9.2 | Field Mapping |  | 2d | 2015-06-04 | 2015-06-05 | 550 | 42d | 0d |  | Prakash | 16h |
| 552 | 1.2.2.9.3 | Check into Git | milestone | 0d | 2015-06-05 | 2015-06-05 | 551 | 42d | 0d |  | Prakash |  |
| 553 | 1.2.2.9.4 | Development - Staging/Connections |  | 3d | 2015-09-11 | 2015-09-15 | 509 | 0d |  |  | Prasanth | 24h |
| 554 | 1.2.2.9.5 | Check into Git | milestone | 0d | 2015-09-15 | 2015-09-15 | 553 | 32d |  |  | Prasanth |  |
| 555 | 1.2.2.9.6 | Dev Data - Peer Review |  | 0.5d | 2015-09-16 | 2015-09-16 | 553 | 0d |  |  | Prakash | 4h |
| 556 | 1.2.2.9.7 | Development - Stage to Target |  | 2d | 2015-09-16 | 2015-09-18 | 555 | 0d |  |  | Prasanth | 16h |
| 557 | 1.2.2.9.8 | Check into Git | milestone | 0d | 2015-09-18 | 2015-09-18 | 556 | 29.5d |  |  | Prasanth |  |
| 558 | 1.2.2.9.9 | Dev Code - Peer Review |  | 0.5d | 2015-09-18 | 2015-09-18 | 556 | 0d |  | start no earlier than 2015-02-23 | Prakash | 4h |
| 559 | 1.2.2.9.10 | Development - Handoff Runbook / Test Cases |  | 1d | 2015-09-21 | 2015-09-21 | 558 | 0d |  | start no earlier than 2015-02-25 | Prasanth | 8h |
| 560 | 1.2.2.9.11 | Posted to Sharepoint and Git | milestone | 0d | 2015-09-21 | 2015-09-21 | 559 | 0d |  |  | Prasanth |  |
| 561 | 1.2.2.9.12 | QE |  | 5d | 2015-09-22 | 2015-09-28 | 559 | 23d |  |  |  |  |
| 562 | 1.2.2.9.13 | UAT |  | 10d | 2015-09-22 | 2015-10-05 | 559 | 7d | 0d | start no earlier than 2015-03-04 |  |  |
| 563 | 1.2.2.9.14 | Rollout |  | 1d | 2015-10-06 | 2015-10-06 | 562 | 17d |  | start no earlier than 2015-03-06 |  |  |
| 564 | 1.2.2.9.15 | Support |  | 10d | 2015-10-06 | 2015-10-19 | 562 | 7d | 0d | start no earlier than 2015-03-27 |  |  |
| 565 | 1.2.2.9.16 | Close |  | 1d | 2015-10-20 | 2015-10-20 | 564 | 7d |  |  |  |  |

| ID | WBS | Task | Type | Duration | Start | Finish | Predecessors | Total slack | Free slack | Constraint | Resources | Work |
| --- | --- | --- | --- | --- | --- | --- | --- | --- | --- | --- | --- | --- |
| 566 | 1.2.2.10 | **Fact_Ticket_Assignment** |  | 53d | 2015-06-08 | 2015-08-20 |  | 42d |  |  |  | 88h |
| 567 | 1.2.2.10.1 | SDA |  | 2d | 2015-06-08 | 2015-06-09 | 552 | 42d | 0d | start no earlier than 2015-04-13 | Prakash | 16h |
| 568 | 1.2.2.10.2 | Field Mapping |  | 2d | 2015-06-10 | 2015-06-11 | 567 | 42d | 0d |  | Prakash | 16h |
| 569 | 1.2.2.10.3 | Check into Git | milestone | 0d | 2015-06-11 | 2015-06-11 | 568 | 42d | 0d |  | Prakash |  |
| 570 | 1.2.2.10.4 | Development - Staging/Connections |  | 3d | 2015-07-14 | 2015-07-16 | 543 | 42d | 0d |  | Prakash | 24h |
| 571 | 1.2.2.10.5 | Check into Git | milestone | 0d | 2015-07-16 | 2015-07-16 | 570 | 74d |  |  | Prakash |  |
| 572 | 1.2.2.10.6 | Dev Data - Peer Review |  | 0.5d | 2015-07-17 | 2015-07-17 | 570 | 42d | 0d |  | Prasanth | 4h |
| 573 | 1.2.2.10.7 | Development - Stage to Target |  | 2d | 2015-07-17 | 2015-07-21 | 572 | 42d | 0d |  | Prakash | 16h |
| 574 | 1.2.2.10.8 | Check into Git | milestone | 0d | 2015-07-21 | 2015-07-21 | 573 | 71.5d |  |  | Prakash |  |
| 575 | 1.2.2.10.9 | Dev Code - Peer Review |  | 0.5d | 2015-07-21 | 2015-07-21 | 573 | 42d | 0d | start no earlier than 2015-02-23 | Prasanth | 4h |
| 576 | 1.2.2.10.10 | Development - Handoff Runbook / Test Cases |  | 1d | 2015-07-22 | 2015-07-22 | 575 | 42d | 0d | start no earlier than 2015-02-25 | Prakash | 8h |
| 577 | 1.2.2.10.11 | Posted to Sharepoint and Git | milestone | 0d | 2015-07-22 | 2015-07-22 | 576 | 42d | 0d |  | Prakash |  |
| 578 | 1.2.2.10.12 | QE |  | 5d | 2015-07-23 | 2015-07-29 | 576 | 65d |  |  |  |  |
| 579 | 1.2.2.10.13 | UAT |  | 10d | 2015-07-23 | 2015-08-05 | 576 | 49d | 0d | start no earlier than 2015-03-04 |  |  |
| 580 | 1.2.2.10.14 | Rollout |  | 1d | 2015-08-06 | 2015-08-06 | 579 | 59d |  | start no earlier than 2015-03-06 |  |  |
| 581 | 1.2.2.10.15 | Support |  | 10d | 2015-08-06 | 2015-08-19 | 579 | 49d | 0d | start no earlier than 2015-03-27 |  |  |
| 582 | 1.2.2.10.16 | Close |  | 1d | 2015-08-20 | 2015-08-20 | 581 | 49d |  |  |  |  |
| 583 | 1.2.2.11 | **Fact_Ticket_Relationship (Parent)** |  | 98d | 2015-06-12 | 2015-10-29 |  | 0d |  |  |  | 88h |
| 584 | 1.2.2.11.1 | SDA |  | 2d | 2015-06-12 | 2015-06-15 | 569 | 42d | 0d | start no earlier than 2015-04-13 | Prakash | 16h |
| 585 | 1.2.2.11.2 | Field Mapping |  | 2d | 2015-06-16 | 2015-06-17 | 584 | 42d | 0d |  | Prakash | 16h |
| 586 | 1.2.2.11.3 | Check into Git | milestone | 0d | 2015-06-17 | 2015-06-17 | 585 | 42d | 0d |  | Prakash |  |
| 587 | 1.2.2.11.4 | Development - Staging/Connections |  | 3d | 2015-09-22 | 2015-09-24 | 560 | 0d |  |  | Prasanth | 24h |
| 588 | 1.2.2.11.5 | Check into Git | milestone | 0d | 2015-09-24 | 2015-09-24 | 587 | 25d |  |  | Prasanth |  |
| 589 | 1.2.2.11.6 | Dev Data - Peer Review |  | 0.5d | 2015-09-25 | 2015-09-25 | 587 | 0d |  |  | Prakash | 4h |
| 590 | 1.2.2.11.7 | Development - Stage to Target |  | 2d | 2015-09-25 | 2015-09-29 | 589 | 0d |  |  | Prasanth | 16h |
| 591 | 1.2.2.11.8 | Check into Git | milestone | 0d | 2015-09-29 | 2015-09-29 | 590 | 22.5d |  |  | Prasanth |  |
| 592 | 1.2.2.11.9 | Dev Code - Peer Review |  | 0.5d | 2015-09-29 | 2015-09-29 | 590 | 0d |  | start no earlier than 2015-02-23 | Prakash | 4h |
| 593 | 1.2.2.11.10 | Development - Handoff Runbook / Test Cases |  | 1d | 2015-09-30 | 2015-09-30 | 592 | 0d |  | start no earlier than 2015-02-25 | Prasanth | 8h |
| 594 | 1.2.2.11.11 | Posted to Sharepoint and Git | milestone | 0d | 2015-09-30 | 2015-09-30 | 593 | 21d |  |  | Prasanth |  |
| 595 | 1.2.2.11.12 | QE |  | 5d | 2015-10-01 | 2015-10-07 | 593 | 16d |  |  |  |  |
| 596 | 1.2.2.11.13 | UAT |  | 10d | 2015-10-01 | 2015-10-14 | 593 | 0d |  | start no earlier than 2015-03-04 |  |  |
| 597 | 1.2.2.11.14 | Rollout |  | 1d | 2015-10-15 | 2015-10-15 | 596 | 10d |  | start no earlier than 2015-03-06 |  |  |
| 598 | 1.2.2.11.15 | Support |  | 10d | 2015-10-15 | 2015-10-28 | 596 | 0d |  | start no earlier than 2015-03-27 |  |  |
| 599 | 1.2.2.11.16 | Close |  | 1d | 2015-10-29 | 2015-10-29 | 598 | 0d |  |  |  |  |

| ID | WBS | Task | Type | Duration | Start | Finish | Predecessors | Complete | Remaining | Total slack | Free slack | Constraint | Resources | Work | Actual work |
| --- | --- | --- | --- | --- | --- | --- | --- | --- | --- | --- | --- | --- | --- | --- | --- |
| 600 | 1.2.2.12 | **Fact_Ticket_Resolved** |  | 52d | 2015-06-18 | 2015-08-31 |  |  |  | 42d |  |  |  | 88h |  |
| 601 | 1.2.2.12.1 | SDA |  | 2d | 2015-06-18 | 2015-06-19 | 586 |  |  | 42d | 0d | start no earlier than 2015-04-13 | Prakash | 16h |  |
| 602 | 1.2.2.12.2 | Field Mapping |  | 2d | 2015-06-22 | 2015-06-23 | 601 |  |  | 42d | 0d |  | Prakash | 16h |  |
| 603 | 1.2.2.12.3 | Check into Git | milestone | 0d | 2015-06-23 | 2015-06-23 | 602 |  |  | 42d | 0d |  | Prakash |  |  |
| 604 | 1.2.2.12.4 | Development - Staging/Connections |  | 3d | 2015-07-23 | 2015-07-27 | 577 |  |  | 42d | 0d |  | Prakash | 24h |  |
| 605 | 1.2.2.12.5 | Check into Git | milestone | 0d | 2015-07-27 | 2015-07-27 | 604 |  |  | 67d |  |  | Prakash |  |  |
| 606 | 1.2.2.12.6 | Dev Data - Peer Review |  | 0.5d | 2015-07-28 | 2015-07-28 | 604 |  |  | 42d | 0d |  | Prasanth | 4h |  |
| 607 | 1.2.2.12.7 | Development - Stage to Target |  | 2d | 2015-07-28 | 2015-07-30 | 606 |  |  | 42d | 0d |  | Prakash | 16h |  |
| 608 | 1.2.2.12.8 | Check into Git | milestone | 0d | 2015-07-30 | 2015-07-30 | 607 |  |  | 64.5d |  |  | Prakash |  |  |
| 609 | 1.2.2.12.9 | Dev Code - Peer Review |  | 0.5d | 2015-07-30 | 2015-07-30 | 607 |  |  | 42d | 0d | start no earlier than 2015-02-23 | Prasanth | 4h |  |
| 610 | 1.2.2.12.10 | Development - Handoff Runbook / Test Cases |  | 1d | 2015-07-31 | 2015-07-31 | 609 |  |  | 42d | 0d | start no earlier than 2015-02-25 | Prakash | 8h |  |
| 611 | 1.2.2.12.11 | Posted to Sharepoint and Git | milestone | 0d | 2015-07-31 | 2015-07-31 | 610 |  |  | 63d |  |  | Prakash |  |  |
| 612 | 1.2.2.12.12 | QE |  | 5d | 2015-08-03 | 2015-08-07 | 610 |  |  | 58d |  |  |  |  |  |
| 613 | 1.2.2.12.13 | UAT |  | 10d | 2015-08-03 | 2015-08-14 | 610 |  |  | 42d | 0d | start no earlier than 2015-03-04 |  |  |  |
| 614 | 1.2.2.12.14 | Rollout |  | 1d | 2015-08-17 | 2015-08-17 | 613 |  |  | 52d |  | start no earlier than 2015-03-06 |  |  |  |
| 615 | 1.2.2.12.15 | Support |  | 10d | 2015-08-17 | 2015-08-28 | 613 |  |  | 42d | 0d | start no earlier than 2015-03-27 |  |  |  |
| 616 | 1.2.2.12.16 | Close |  | 1d | 2015-08-31 | 2015-08-31 | 615 |  |  | 42d |  |  |  |  |  |
| 617 | 1.2.3 | **Encore** |  | 86d | 2015-04-29 A | 2015-08-28 |  | 1% | 85.46d | 43d |  |  |  | 864h | 21.6h |
| 618 | 1.2.3.1 | **Dim_Ticket** |  | 33d | 2015-04-29 A | 2015-06-15 |  | 8% | 30.42d | 96d |  |  |  | 60h | 21.6h |
| 619 | 1.2.3.1.1 | SDA |  | 2d | 2015-04-29 A | 2015-04-30 A |  | 100% |  |  |  | start no earlier than 2015-04-29 | Karteek | 16h | 16h |
| 620 | 1.2.3.1.2 | Field Mapping |  | 1d | 2015-05-01 A | 2015-05-01 | 619 | 70% | 0.3d | 92d | 0d |  | Karteek | 8h | 5.6h |
| 621 | 1.2.3.1.3 | Check into Git | milestone | 0d | 2015-05-01 | 2015-05-01 | 620 |  |  | 92d | 0d |  | Karteek |  |  |
| 622 | 1.2.3.1.4 | Development - Staging/Connections |  | 2d | 2015-05-11 | 2015-05-12 | 666 |  |  | 43d | 0d |  | Sravan | 16h |  |
| 623 | 1.2.3.1.5 | Check into Git | milestone | 0d | 2015-05-12 | 2015-05-12 | 622 |  |  | 119d |  |  | Sravan |  |  |
| 624 | 1.2.3.1.6 | Dev Data - Peer Review |  | 0.5d | 2015-05-13 | 2015-05-13 | 622 |  |  | 118.5d |  |  | Prasanth | 4h |  |
| 625 | 1.2.3.1.7 | Stage to Target Testing with new source |  | 1d | 2015-05-13 | 2015-05-13 | 622 |  |  | 43d | 0d | start no earlier than 2015-02-23 | Sravan | 8h |  |
| 626 | 1.2.3.1.8 | Development - Handoff Runbook / Test Cases |  | 1d | 2015-05-14 | 2015-05-14 | 625 |  |  | 43d | 0d | start no earlier than 2015-02-25 | Sravan | 8h |  |
| 627 | 1.2.3.1.9 | Posted to Sharepoint and Git | milestone | 0d | 2015-05-14 | 2015-05-14 | 626 |  |  | 43d | 0d |  | Sravan |  |  |
| 628 | 1.2.3.1.10 | QE |  | 5d | 2015-05-15 | 2015-05-21 | 626 |  |  | 112d |  |  |  |  |  |
| 629 | 1.2.3.1.11 | UAT |  | 10d | 2015-05-15 | 2015-05-29 | 626 |  |  | 96d | 0d | start no earlier than 2015-03-04 |  |  |  |
| 630 | 1.2.3.1.12 | Rollout |  | 1d | 2015-06-01 | 2015-06-01 | 629 |  |  | 106d |  | start no earlier than 2015-03-06 |  |  |  |
| 631 | 1.2.3.1.13 | Support |  | 10d | 2015-06-01 | 2015-06-12 | 629 |  |  | 96d | 0d | start no earlier than 2015-03-27 |  |  |  |
| 632 | 1.2.3.1.14 | Close |  | 1d | 2015-06-15 | 2015-06-15 | 631 |  |  | 96d |  |  |  |  |  |

| ID | WBS | Task | Type | Duration | Start | Finish | Predecessors | Total slack | Free slack | Constraint | Resources | Work |
| --- | --- | --- | --- | --- | --- | --- | --- | --- | --- | --- | --- | --- |
| 633 | 1.2.3.2 | **Fact_Ticket_Created** |  | 38d | 2015-04-29 | 2015-06-22 |  | 43d |  |  |  | 76h |
| 634 | 1.2.3.2.1 | SDA |  | 2d | 2015-04-29 | 2015-04-30 |  | 43d | 0d | start no earlier than 2015-04-29 | Sravan | 16h |
| 635 | 1.2.3.2.2 | Field Mapping |  | 2d | 2015-05-01 | 2015-05-04 | 634 | 43d | 0d |  | Sravan | 16h |
| 636 | 1.2.3.2.3 | Check into Git | milestone | 0d | 2015-05-04 | 2015-05-04 | 635 | 43d | 0d |  | Sravan |  |
| 637 | 1.2.3.2.4 | Development - Staging/Connections |  | 3d | 2015-05-15 | 2015-05-19 | 627 | 43d | 0d |  | Sravan | 24h |
| 638 | 1.2.3.2.5 | Check into Git | milestone | 0d | 2015-05-19 | 2015-05-19 | 637 | 114d |  |  | Sravan |  |
| 639 | 1.2.3.2.6 | Dev Data - Peer Review |  | 0.5d | 2015-05-20 | 2015-05-20 | 637 | 113.5d |  |  | Prasanth | 4h |
| 640 | 1.2.3.2.7 | Stage to Target Testing with new source |  | 1d | 2015-05-20 | 2015-05-20 | 637 | 43d | 0d | start no earlier than 2015-02-23 | Sravan | 8h |
| 641 | 1.2.3.2.8 | Development - Handoff Runbook / Test Cases |  | 1d | 2015-05-21 | 2015-05-21 | 640 | 43d | 0d | start no earlier than 2015-02-25 | Sravan | 8h |
| 642 | 1.2.3.2.9 | Posted to Sharepoint and Git | milestone | 0d | 2015-05-21 | 2015-05-21 | 641 | 43d | 0d |  | Sravan |  |
| 643 | 1.2.3.2.10 | QE |  | 5d | 2015-05-22 | 2015-05-29 | 641 | 107d |  |  |  |  |
| 644 | 1.2.3.2.11 | UAT |  | 10d | 2015-05-22 | 2015-06-05 | 641 | 91d | 0d | start no earlier than 2015-03-04 |  |  |
| 645 | 1.2.3.2.12 | Rollout |  | 1d | 2015-06-08 | 2015-06-08 | 644 | 101d |  | start no earlier than 2015-03-06 |  |  |
| 646 | 1.2.3.2.13 | Support |  | 10d | 2015-06-08 | 2015-06-19 | 644 | 91d | 0d | start no earlier than 2015-03-27 |  |  |
| 647 | 1.2.3.2.14 | Close |  | 1d | 2015-06-22 | 2015-06-22 | 646 | 91d |  |  |  |  |
| 648 | 1.2.3.3 | **Fact_Ticket_Account_Instance** |  | 40d | 2015-05-04 | 2015-06-29 |  | 57d |  |  |  | 76h |
| 649 | 1.2.3.3.1 | SDA |  | 2d | 2015-05-04 | 2015-05-05 | 621 | 92d | 0d | start no earlier than 2015-04-13 | Karteek | 16h |
| 650 | 1.2.3.3.2 | Field Mapping |  | 2d | 2015-05-06 | 2015-05-07 | 649 | 92d | 0d |  | Karteek | 16h |
| 651 | 1.2.3.3.3 | Check into Git | milestone | 0d | 2015-05-07 | 2015-05-07 | 650 | 92d | 0d |  | Karteek |  |
| 652 | 1.2.3.3.4 | Development - Staging/Connections |  | 3d | 2015-05-22 | 2015-05-27 | 642 | 43d | 0d |  | Sravan | 24h |
| 653 | 1.2.3.3.5 | Check into Git | milestone | 0d | 2015-05-27 | 2015-05-27 | 652 | 109d |  |  | Sravan |  |
| 654 | 1.2.3.3.6 | Dev Data - Peer Review |  | 0.5d | 2015-05-28 | 2015-05-28 | 652 | 108.5d |  |  | Prasanth | 4h |
| 655 | 1.2.3.3.7 | Stage to Target Testing with new source |  | 1d | 2015-05-28 | 2015-05-28 | 652 | 43d | 0d | start no earlier than 2015-02-23 | Sravan | 8h |
| 656 | 1.2.3.3.8 | Development - Handoff Runbook / Test Cases |  | 1d | 2015-05-29 | 2015-05-29 | 655 | 43d | 0d | start no earlier than 2015-02-25 | Sravan | 8h |
| 657 | 1.2.3.3.9 | Posted to Sharepoint and Git | milestone | 0d | 2015-05-29 | 2015-05-29 | 656 | 43d | 0d |  | Sravan |  |
| 658 | 1.2.3.3.10 | QE |  | 5d | 2015-06-01 | 2015-06-05 | 656 | 102d |  |  |  |  |
| 659 | 1.2.3.3.11 | UAT |  | 10d | 2015-06-01 | 2015-06-12 | 656 | 86d | 0d | start no earlier than 2015-03-04 |  |  |
| 660 | 1.2.3.3.12 | Rollout |  | 1d | 2015-06-15 | 2015-06-15 | 659 | 96d |  | start no earlier than 2015-03-06 |  |  |
| 661 | 1.2.3.3.13 | Support |  | 10d | 2015-06-15 | 2015-06-26 | 659 | 86d | 0d | start no earlier than 2015-03-27 |  |  |
| 662 | 1.2.3.3.14 | Close |  | 1d | 2015-06-29 | 2015-06-29 | 661 | 86d |  |  |  |  |

| ID | WBS | Task | Type | Duration | Start | Finish | Predecessors | Total slack | Free slack | Constraint | Resources | Work |
| --- | --- | --- | --- | --- | --- | --- | --- | --- | --- | --- | --- | --- |
| 663 | 1.2.3.4 | **Fact_Ticket_Reponse** |  | 44d | 2015-05-05 | 2015-07-07 |  | 43d |  |  |  | 76h |
| 664 | 1.2.3.4.1 | SDA |  | 2d | 2015-05-05 | 2015-05-06 | 636 | 43d | 0d | start no earlier than 2015-04-13 | Sravan | 16h |
| 665 | 1.2.3.4.2 | Field Mapping |  | 2d | 2015-05-07 | 2015-05-08 | 664 | 43d | 0d |  | Sravan | 16h |
| 666 | 1.2.3.4.3 | Check into Git | milestone | 0d | 2015-05-08 | 2015-05-08 | 665 | 43d | 0d |  | Sravan |  |
| 667 | 1.2.3.4.4 | Development - Staging/Connections |  | 3d | 2015-06-01 | 2015-06-03 | 657 | 43d | 0d |  | Sravan | 24h |
| 668 | 1.2.3.4.5 | Check into Git | milestone | 0d | 2015-06-03 | 2015-06-03 | 667 | 104d |  |  | Sravan |  |
| 669 | 1.2.3.4.6 | Dev Data - Peer Review |  | 0.5d | 2015-06-04 | 2015-06-04 | 667 | 103.5d |  |  | Prasanth | 4h |
| 670 | 1.2.3.4.7 | Stage to Target Testing with new source |  | 1d | 2015-06-04 | 2015-06-04 | 667 | 43d | 0d | start no earlier than 2015-02-23 | Sravan | 8h |
| 671 | 1.2.3.4.8 | Development - Handoff Runbook / Test Cases |  | 1d | 2015-06-05 | 2015-06-05 | 670 | 43d | 0d | start no earlier than 2015-02-25 | Sravan | 8h |
| 672 | 1.2.3.4.9 | Posted to Sharepoint and Git | milestone | 0d | 2015-06-05 | 2015-06-05 | 671 | 43d | 0d |  | Sravan |  |
| 673 | 1.2.3.4.10 | QE |  | 5d | 2015-06-08 | 2015-06-12 | 671 | 97d |  |  |  |  |
| 674 | 1.2.3.4.11 | UAT |  | 10d | 2015-06-08 | 2015-06-19 | 671 | 81d | 0d | start no earlier than 2015-03-04 |  |  |
| 675 | 1.2.3.4.12 | Rollout |  | 1d | 2015-06-22 | 2015-06-22 | 674 | 91d |  | start no earlier than 2015-03-06 |  |  |
| 676 | 1.2.3.4.13 | Support |  | 10d | 2015-06-22 | 2015-07-06 | 674 | 81d | 0d | start no earlier than 2015-03-27 |  |  |
| 677 | 1.2.3.4.14 | Close |  | 1d | 2015-07-07 | 2015-07-07 | 676 | 81d |  |  |  |  |
| 678 | 1.2.3.5 | **Dim_Ticket_Queue** |  | 45d | 2015-05-08 | 2015-07-13 |  | 63d |  |  |  | 60h |
| 679 | 1.2.3.5.1 | SDA |  | 2d | 2015-05-08 | 2015-05-11 | 651 | 92d | 0d | start no earlier than 2015-04-13 | Karteek | 16h |
| 680 | 1.2.3.5.2 | Field Mapping |  | 1d | 2015-05-12 | 2015-05-12 | 679 | 92d | 0d |  | Karteek | 8h |
| 681 | 1.2.3.5.3 | Check into Git | milestone | 0d | 2015-05-12 | 2015-05-12 | 680 | 92d | 0d |  | Karteek |  |
| 682 | 1.2.3.5.4 | Development - Staging/Connections |  | 2d | 2015-06-08 | 2015-06-09 | 672 | 43d | 0d |  | Sravan | 16h |
| 683 | 1.2.3.5.5 | Check into Git | milestone | 0d | 2015-06-09 | 2015-06-09 | 682 | 100d |  |  | Sravan |  |
| 684 | 1.2.3.5.6 | Dev Data - Peer Review |  | 0.5d | 2015-06-10 | 2015-06-10 | 682 | 99.5d |  |  | Prasanth | 4h |
| 685 | 1.2.3.5.7 | Stage to Target Testing with new source |  | 1d | 2015-06-10 | 2015-06-10 | 682 | 43d | 0d | start no earlier than 2015-02-23 | Sravan | 8h |
| 686 | 1.2.3.5.8 | Development - Handoff Runbook / Test Cases |  | 1d | 2015-06-11 | 2015-06-11 | 685 | 43d | 0d | start no earlier than 2015-02-25 | Sravan | 8h |
| 687 | 1.2.3.5.9 | Posted to Sharepoint and Git | milestone | 0d | 2015-06-11 | 2015-06-11 | 686 | 43d | 0d |  | Sravan |  |
| 688 | 1.2.3.5.10 | QE |  | 5d | 2015-06-12 | 2015-06-18 | 686 | 93d |  |  |  |  |
| 689 | 1.2.3.5.11 | UAT |  | 10d | 2015-06-12 | 2015-06-25 | 686 | 77d | 0d | start no earlier than 2015-03-04 |  |  |
| 690 | 1.2.3.5.12 | Rollout |  | 1d | 2015-06-26 | 2015-06-26 | 689 | 87d |  | start no earlier than 2015-03-06 |  |  |
| 691 | 1.2.3.5.13 | Support |  | 10d | 2015-06-26 | 2015-07-10 | 689 | 77d | 0d | start no earlier than 2015-03-27 |  |  |
| 692 | 1.2.3.5.14 | Close |  | 1d | 2015-07-13 | 2015-07-13 | 691 | 77d |  |  |  |  |

| ID | WBS | Task | Type | Duration | Start | Finish | Predecessors | Total slack | Free slack | Constraint | Resources | Work |
| --- | --- | --- | --- | --- | --- | --- | --- | --- | --- | --- | --- | --- |
| 693 | 1.2.3.6 | **Fact_Ticket_Queue** |  | 47d | 2015-05-13 | 2015-07-20 |  | 64d |  |  |  | 76h |
| 694 | 1.2.3.6.1 | SDA |  | 2d | 2015-05-13 | 2015-05-14 | 681 | 92d | 0d | start no earlier than 2015-04-13 | Karteek | 16h |
| 695 | 1.2.3.6.2 | Field Mapping |  | 2d | 2015-05-15 | 2015-05-18 | 694 | 92d | 0d |  | Karteek | 16h |
| 696 | 1.2.3.6.3 | Check into Git | milestone | 0d | 2015-05-18 | 2015-05-18 | 695 | 92d | 0d |  | Karteek |  |
| 697 | 1.2.3.6.4 | Development - Staging/Connections |  | 3d | 2015-06-12 | 2015-06-16 | 687 | 43d | 0d |  | Sravan | 24h |
| 698 | 1.2.3.6.5 | Check into Git | milestone | 0d | 2015-06-16 | 2015-06-16 | 697 | 95d |  |  | Sravan |  |
| 699 | 1.2.3.6.6 | Dev Data - Peer Review |  | 0.5d | 2015-06-17 | 2015-06-17 | 697 | 94.5d |  |  | Sravan | 4h |
| 700 | 1.2.3.6.7 | Stage to Target Testing with new source |  | 1d | 2015-06-17 | 2015-06-17 | 697 | 43d | 0d | start no earlier than 2015-02-23 | Sravan | 8h |
| 701 | 1.2.3.6.8 | Development - Handoff Runbook / Test Cases |  | 1d | 2015-06-18 | 2015-06-18 | 700 | 43d | 0d | start no earlier than 2015-02-25 | Sravan | 8h |
| 702 | 1.2.3.6.9 | Posted to Sharepoint and Git | milestone | 0d | 2015-06-18 | 2015-06-18 | 701 | 43d | 0d |  | Sravan |  |
| 703 | 1.2.3.6.10 | QE |  | 5d | 2015-06-19 | 2015-06-25 | 701 | 88d |  |  |  |  |
| 704 | 1.2.3.6.11 | UAT |  | 10d | 2015-06-19 | 2015-07-02 | 701 | 72d | 0d | start no earlier than 2015-03-04 |  |  |
| 705 | 1.2.3.6.12 | Rollout |  | 1d | 2015-07-06 | 2015-07-06 | 704 | 82d |  | start no earlier than 2015-03-06 |  |  |
| 706 | 1.2.3.6.13 | Support |  | 10d | 2015-07-06 | 2015-07-17 | 704 | 72d | 0d | start no earlier than 2015-03-27 |  |  |
| 707 | 1.2.3.6.14 | Close |  | 1d | 2015-07-20 | 2015-07-20 | 706 | 72d |  |  |  |  |
| 708 | 1.2.3.7 | **Fact_Ticket_State** |  | 48d | 2015-05-19 | 2015-07-27 |  | 65d |  |  |  | 76h |
| 709 | 1.2.3.7.1 | SDA |  | 2d | 2015-05-19 | 2015-05-20 | 696 | 92d | 0d | start no earlier than 2015-04-13 | Karteek | 16h |
| 710 | 1.2.3.7.2 | Field Mapping |  | 2d | 2015-05-21 | 2015-05-22 | 709 | 92d | 0d |  | Karteek | 16h |
| 711 | 1.2.3.7.3 | Check into Git | milestone | 0d | 2015-05-22 | 2015-05-22 | 710 | 92d | 0d |  | Karteek |  |
| 712 | 1.2.3.7.4 | Development - Staging/Connections |  | 3d | 2015-06-19 | 2015-06-23 | 702 | 43d | 0d |  | Sravan | 24h |
| 713 | 1.2.3.7.5 | Check into Git | milestone | 0d | 2015-06-23 | 2015-06-23 | 712 | 90d |  |  | Sravan |  |
| 714 | 1.2.3.7.6 | Dev Data - Peer Review |  | 0.5d | 2015-06-24 | 2015-06-24 | 712 | 89.5d |  |  | Prasanth | 4h |
| 715 | 1.2.3.7.7 | Stage to Target Testing with new source |  | 1d | 2015-06-24 | 2015-06-24 | 712 | 43d | 0d | start no earlier than 2015-02-23 | Sravan | 8h |
| 716 | 1.2.3.7.8 | Development - Handoff Runbook / Test Cases |  | 1d | 2015-06-25 | 2015-06-25 | 715 | 43d | 0d | start no earlier than 2015-02-25 | Sravan | 8h |
| 717 | 1.2.3.7.9 | Posted to Sharepoint and Git | milestone | 0d | 2015-06-25 | 2015-06-25 | 716 | 43d | 0d |  | Sravan |  |
| 718 | 1.2.3.7.10 | QE |  | 5d | 2015-06-26 | 2015-07-02 | 716 | 83d |  |  |  |  |
| 719 | 1.2.3.7.11 | UAT |  | 10d | 2015-06-26 | 2015-07-10 | 716 | 67d | 0d | start no earlier than 2015-03-04 |  |  |
| 720 | 1.2.3.7.12 | Rollout |  | 1d | 2015-07-13 | 2015-07-13 | 719 | 77d |  | start no earlier than 2015-03-06 |  |  |
| 721 | 1.2.3.7.13 | Support |  | 10d | 2015-07-13 | 2015-07-24 | 719 | 67d | 0d | start no earlier than 2015-03-27 |  |  |
| 722 | 1.2.3.7.14 | Close |  | 1d | 2015-07-27 | 2015-07-27 | 721 | 67d |  |  |  |  |

| ID | WBS | Task | Type | Duration | Start | Finish | Predecessors | Total slack | Free slack | Constraint | Resources | Work |
| --- | --- | --- | --- | --- | --- | --- | --- | --- | --- | --- | --- | --- |
| 723 | 1.2.3.8 | **Dim_Ticket_Comment** |  | 48d | 2015-05-26 | 2015-07-31 |  | 63d |  |  |  | 60h |
| 724 | 1.2.3.8.1 | SDA |  | 2d | 2015-05-26 | 2015-05-27 | 711 | 92d | 0d | start no earlier than 2015-04-13 | Karteek | 16h |
| 725 | 1.2.3.8.2 | Field Mapping |  | 1d | 2015-05-28 | 2015-05-28 | 724 | 92d | 0d |  | Karteek | 8h |
| 726 | 1.2.3.8.3 | Check into Git | milestone | 0d | 2015-05-28 | 2015-05-28 | 725 | 92d | 0d |  | Karteek |  |
| 727 | 1.2.3.8.4 | Development - Staging/Connections |  | 2d | 2015-06-26 | 2015-06-29 | 717 | 43d | 0d |  | Sravan | 16h |
| 728 | 1.2.3.8.5 | Check into Git | milestone | 0d | 2015-06-29 | 2015-06-29 | 727 | 86d |  |  | Sravan |  |
| 729 | 1.2.3.8.6 | Dev Data - Peer Review |  | 0.5d | 2015-06-30 | 2015-06-30 | 727 | 85.5d |  |  | Prasanth | 4h |
| 730 | 1.2.3.8.7 | Stage to Target Testing with new source |  | 1d | 2015-06-30 | 2015-06-30 | 727 | 43d | 0d | start no earlier than 2015-02-23 | Sravan | 8h |
| 731 | 1.2.3.8.8 | Development - Handoff Runbook / Test Cases |  | 1d | 2015-07-01 | 2015-07-01 | 730 | 43d | 0d | start no earlier than 2015-02-25 | Sravan | 8h |
| 732 | 1.2.3.8.9 | Posted to Sharepoint and Git | milestone | 0d | 2015-07-01 | 2015-07-01 | 731 | 43d | 0d |  | Sravan |  |
| 733 | 1.2.3.8.10 | QE |  | 5d | 2015-07-02 | 2015-07-09 | 731 | 79d |  |  |  |  |
| 734 | 1.2.3.8.11 | UAT |  | 10d | 2015-07-02 | 2015-07-16 | 731 | 63d | 0d | start no earlier than 2015-03-04 |  |  |
| 735 | 1.2.3.8.12 | Rollout |  | 1d | 2015-07-17 | 2015-07-17 | 734 | 73d |  | start no earlier than 2015-03-06 |  |  |
| 736 | 1.2.3.8.13 | Support |  | 10d | 2015-07-17 | 2015-07-30 | 734 | 63d | 0d | start no earlier than 2015-03-27 |  |  |
| 737 | 1.2.3.8.14 | Close |  | 1d | 2015-07-31 | 2015-07-31 | 736 | 63d |  |  |  |  |
| 738 | 1.2.3.9 | **Fact_Ticket_Comment** |  | 50d | 2015-05-29 | 2015-08-07 |  | 58d |  |  |  | 76h |
| 739 | 1.2.3.9.1 | SDA |  | 2d | 2015-05-29 | 2015-06-01 | 726 | 92d | 0d | start no earlier than 2015-04-13 | Karteek | 16h |
| 740 | 1.2.3.9.2 | Field Mapping |  | 2d | 2015-06-02 | 2015-06-03 | 739 | 92d | 0d |  | Karteek | 16h |
| 741 | 1.2.3.9.3 | Check into Git | milestone | 0d | 2015-06-03 | 2015-06-03 | 740 | 92d | 0d |  | Karteek |  |
| 742 | 1.2.3.9.4 | Development - Staging/Connections |  | 3d | 2015-07-02 | 2015-07-07 | 732 | 43d | 0d |  | Sravan | 24h |
| 743 | 1.2.3.9.5 | Check into Git | milestone | 0d | 2015-07-07 | 2015-07-07 | 742 | 81d |  |  | Sravan |  |
| 744 | 1.2.3.9.6 | Dev Data - Peer Review |  | 0.5d | 2015-07-08 | 2015-07-08 | 742 | 80.5d |  |  | Prasanth | 4h |
| 745 | 1.2.3.9.7 | Stage to Target Testing with new source |  | 1d | 2015-07-08 | 2015-07-08 | 742 | 43d | 0d | start no earlier than 2015-02-23 | Sravan | 8h |
| 746 | 1.2.3.9.8 | Development - Handoff Runbook / Test Cases |  | 1d | 2015-07-09 | 2015-07-09 | 745 | 43d | 0d | start no earlier than 2015-02-25 | Sravan | 8h |
| 747 | 1.2.3.9.9 | Posted to Sharepoint and Git | milestone | 0d | 2015-07-09 | 2015-07-09 | 746 | 43d | 0d |  | Sravan |  |
| 748 | 1.2.3.9.10 | QE |  | 5d | 2015-07-10 | 2015-07-16 | 746 | 74d |  |  |  |  |
| 749 | 1.2.3.9.11 | UAT |  | 10d | 2015-07-10 | 2015-07-23 | 746 | 58d | 0d | start no earlier than 2015-03-04 |  |  |
| 750 | 1.2.3.9.12 | Rollout |  | 1d | 2015-07-24 | 2015-07-24 | 749 | 68d |  | start no earlier than 2015-03-06 |  |  |
| 751 | 1.2.3.9.13 | Support |  | 10d | 2015-07-24 | 2015-08-06 | 749 | 58d | 0d | start no earlier than 2015-03-27 |  |  |
| 752 | 1.2.3.9.14 | Close |  | 1d | 2015-08-07 | 2015-08-07 | 751 | 58d |  |  |  |  |

| ID | WBS | Task | Type | Duration | Start | Finish | Predecessors | Total slack | Free slack | Constraint | Resources | Work |
| --- | --- | --- | --- | --- | --- | --- | --- | --- | --- | --- | --- | --- |
| 753 | 1.2.3.10 | **Fact_Ticket_Assignment** |  | 51d | 2015-06-04 | 2015-08-14 |  | 53d |  |  |  | 76h |
| 754 | 1.2.3.10.1 | SDA |  | 2d | 2015-06-04 | 2015-06-05 | 741 | 92d | 0d | start no earlier than 2015-04-13 | Karteek | 16h |
| 755 | 1.2.3.10.2 | Field Mapping |  | 2d | 2015-06-08 | 2015-06-09 | 754 | 92d | 0d |  | Karteek | 16h |
| 756 | 1.2.3.10.3 | Check into Git | milestone | 0d | 2015-06-09 | 2015-06-09 | 755 | 92d | 0d |  | Karteek |  |
| 757 | 1.2.3.10.4 | Development - Staging/Connections |  | 3d | 2015-07-10 | 2015-07-14 | 747 | 43d | 0d |  | Sravan | 24h |
| 758 | 1.2.3.10.5 | Check into Git | milestone | 0d | 2015-07-14 | 2015-07-14 | 757 | 76d |  |  | Sravan |  |
| 759 | 1.2.3.10.6 | Dev Data - Peer Review |  | 0.5d | 2015-07-15 | 2015-07-15 | 757 | 75.5d |  |  | Prasanth | 4h |
| 760 | 1.2.3.10.7 | Stage to Target Testing with new source |  | 1d | 2015-07-15 | 2015-07-15 | 757 | 43d | 0d | start no earlier than 2015-02-23 | Sravan | 8h |
| 761 | 1.2.3.10.8 | Development - Handoff Runbook / Test Cases |  | 1d | 2015-07-16 | 2015-07-16 | 760 | 43d | 0d | start no earlier than 2015-02-25 | Sravan | 8h |
| 762 | 1.2.3.10.9 | Posted to Sharepoint and Git | milestone | 0d | 2015-07-16 | 2015-07-16 | 761 | 43d | 0d |  | Sravan |  |
| 763 | 1.2.3.10.10 | QE |  | 5d | 2015-07-17 | 2015-07-23 | 761 | 69d |  |  |  |  |
| 764 | 1.2.3.10.11 | UAT |  | 10d | 2015-07-17 | 2015-07-30 | 761 | 53d | 0d | start no earlier than 2015-03-04 |  |  |
| 765 | 1.2.3.10.12 | Rollout |  | 1d | 2015-07-31 | 2015-07-31 | 764 | 63d |  | start no earlier than 2015-03-06 |  |  |
| 766 | 1.2.3.10.13 | Support |  | 10d | 2015-07-31 | 2015-08-13 | 764 | 53d | 0d | start no earlier than 2015-03-27 |  |  |
| 767 | 1.2.3.10.14 | Close |  | 1d | 2015-08-14 | 2015-08-14 | 766 | 53d |  |  |  |  |
| 768 | 1.2.3.11 | **Fact_Ticket_Relationship (Parent)** |  | 52d | 2015-06-10 | 2015-08-21 |  | 48d |  |  |  | 76h |
| 769 | 1.2.3.11.1 | SDA |  | 2d | 2015-06-10 | 2015-06-11 | 756 | 92d | 0d | start no earlier than 2015-04-13 | Karteek | 16h |
| 770 | 1.2.3.11.2 | Field Mapping |  | 2d | 2015-06-12 | 2015-06-15 | 769 | 92d | 0d |  | Karteek | 16h |
| 771 | 1.2.3.11.3 | Check into Git | milestone | 0d | 2015-06-15 | 2015-06-15 | 770 | 92d | 0d |  | Karteek |  |
| 772 | 1.2.3.11.4 | Development - Staging/Connections |  | 3d | 2015-07-17 | 2015-07-21 | 762 | 43d | 0d |  | Sravan | 24h |
| 773 | 1.2.3.11.5 | Check into Git | milestone | 0d | 2015-07-21 | 2015-07-21 | 772 | 71d |  |  | Sravan |  |
| 774 | 1.2.3.11.6 | Dev Data - Peer Review |  | 0.5d | 2015-07-22 | 2015-07-22 | 772 | 70.5d |  |  | Prasanth | 4h |
| 775 | 1.2.3.11.7 | Stage to Target Testing with new source |  | 1d | 2015-07-22 | 2015-07-22 | 772 | 43d | 0d | start no earlier than 2015-02-23 | Sravan | 8h |
| 776 | 1.2.3.11.8 | Development - Handoff Runbook / Test Cases |  | 1d | 2015-07-23 | 2015-07-23 | 775 | 43d | 0d | start no earlier than 2015-02-25 | Sravan | 8h |
| 777 | 1.2.3.11.9 | Posted to Sharepoint and Git | milestone | 0d | 2015-07-23 | 2015-07-23 | 776 | 43d | 0d |  | Sravan |  |
| 778 | 1.2.3.11.10 | QE |  | 5d | 2015-07-24 | 2015-07-30 | 776 | 64d |  |  |  |  |
| 779 | 1.2.3.11.11 | UAT |  | 10d | 2015-07-24 | 2015-08-06 | 776 | 48d | 0d | start no earlier than 2015-03-04 |  |  |
| 780 | 1.2.3.11.12 | Rollout |  | 1d | 2015-08-07 | 2015-08-07 | 779 | 58d |  | start no earlier than 2015-03-06 |  |  |
| 781 | 1.2.3.11.13 | Support |  | 10d | 2015-08-07 | 2015-08-20 | 779 | 48d | 0d | start no earlier than 2015-03-27 |  |  |
| 782 | 1.2.3.11.14 | Close |  | 1d | 2015-08-21 | 2015-08-21 | 781 | 48d |  |  |  |  |

| ID | WBS | Task | Type | Duration | Start | Finish | Predecessors | Total slack | Free slack | Constraint | Resources | Work |
| --- | --- | --- | --- | --- | --- | --- | --- | --- | --- | --- | --- | --- |
| 783 | 1.2.3.12 | **Fact_Ticket_Resolved** |  | 53d | 2015-06-16 | 2015-08-28 |  | 43d |  |  |  | 76h |
| 784 | 1.2.3.12.1 | SDA |  | 2d | 2015-06-16 | 2015-06-17 | 771 | 92d | 0d | start no earlier than 2015-04-13 | Karteek | 16h |
| 785 | 1.2.3.12.2 | Field Mapping |  | 2d | 2015-06-18 | 2015-06-19 | 784 | 92d | 0d |  | Karteek | 16h |
| 786 | 1.2.3.12.3 | Check into Git | milestone | 0d | 2015-06-19 | 2015-06-19 | 785 | 92d |  |  | Karteek |  |
| 787 | 1.2.3.12.4 | Development - Staging/Connections |  | 3d | 2015-07-24 | 2015-07-28 | 777 | 43d | 0d |  | Sravan | 24h |
| 788 | 1.2.3.12.5 | Check into Git | milestone | 0d | 2015-07-28 | 2015-07-28 | 787 | 66d |  |  | Sravan |  |
| 789 | 1.2.3.12.6 | Dev Data - Peer Review |  | 0.5d | 2015-07-29 | 2015-07-29 | 787 | 65.5d |  |  | Prasanth | 4h |
| 790 | 1.2.3.12.7 | Stage to Target Testing with new source |  | 1d | 2015-07-29 | 2015-07-29 | 787 | 43d | 0d | start no earlier than 2015-02-23 | Sravan | 8h |
| 791 | 1.2.3.12.8 | Development - Handoff Runbook / Test Cases |  | 1d | 2015-07-30 | 2015-07-30 | 790 | 43d | 0d | start no earlier than 2015-02-25 | Sravan | 8h |
| 792 | 1.2.3.12.9 | Posted to Sharepoint and Git | milestone | 0d | 2015-07-30 | 2015-07-30 | 791 | 64d |  |  | Sravan |  |
| 793 | 1.2.3.12.10 | QE |  | 5d | 2015-07-31 | 2015-08-06 | 791 | 59d |  |  |  |  |
| 794 | 1.2.3.12.11 | UAT |  | 10d | 2015-07-31 | 2015-08-13 | 791 | 43d | 0d | start no earlier than 2015-03-04 |  |  |
| 795 | 1.2.3.12.12 | Rollout |  | 1d | 2015-08-14 | 2015-08-14 | 794 | 53d |  | start no earlier than 2015-03-06 |  |  |
| 796 | 1.2.3.12.13 | Support |  | 10d | 2015-08-14 | 2015-08-27 | 794 | 43d | 0d | start no earlier than 2015-03-27 |  |  |
| 797 | 1.2.3.12.14 | Close |  | 1d | 2015-08-28 | 2015-08-28 | 796 | 43d |  |  |  |  |
| 798 | 1.2.4 | **RT** |  | 43d | 2015-04-13 | 2015-06-11 |  | 98d |  |  |  |  |
| 799 | 1.2.4.1 | **Dim_Ticket** |  | 29d | 2015-04-29 | 2015-06-09 |  | 100d |  |  |  |  |
| 800 | 1.2.4.1.1 | SDA |  | 2d | 2015-04-29 | 2015-04-30 |  | 100d | 0d | start no earlier than 2015-04-29 |  |  |
| 801 | 1.2.4.1.2 | Field Mapping |  | 2d | 2015-05-01 | 2015-05-04 | 800 | 100d | 0d |  |  |  |
| 802 | 1.2.4.1.3 | Check into Git | milestone | 0d | 2015-05-04 | 2015-05-04 | 801 | 125d |  |  |  |  |
| 803 | 1.2.4.1.4 | Development - Staging/Connections |  | 2d | 2015-05-05 | 2015-05-06 | 801 | 100d | 0d |  |  |  |
| 804 | 1.2.4.1.5 | Check into Git | milestone | 0d | 2015-05-06 | 2015-05-06 | 803 | 123d |  |  |  |  |
| 805 | 1.2.4.1.6 | Dev Data - Peer Review |  | 0.5d | 2015-05-07 | 2015-05-07 | 803 | 122.5d |  |  |  |  |
| 806 | 1.2.4.1.7 | Stage to Target Testing with new source |  | 1d | 2015-05-07 | 2015-05-07 | 803 | 100d | 0d | start no earlier than 2015-02-23 |  |  |
| 807 | 1.2.4.1.8 | Development - Handoff Runbook / Test Cases |  | 1d | 2015-05-08 | 2015-05-08 | 806 | 100d | 0d | start no earlier than 2015-02-25 |  |  |
| 808 | 1.2.4.1.9 | Posted to Sharepoint and Git | milestone | 0d | 2015-05-08 | 2015-05-08 | 807 | 121d |  |  |  |  |
| 809 | 1.2.4.1.10 | QE |  | 5d | 2015-05-11 | 2015-05-15 | 807 | 116d |  |  |  |  |
| 810 | 1.2.4.1.11 | UAT |  | 10d | 2015-05-11 | 2015-05-22 | 807 | 100d | 0d | start no earlier than 2015-03-04 |  |  |
| 811 | 1.2.4.1.12 | Rollout |  | 1d | 2015-05-26 | 2015-05-26 | 810 | 110d |  | start no earlier than 2015-03-06 |  |  |
| 812 | 1.2.4.1.13 | Support |  | 10d | 2015-05-26 | 2015-06-08 | 810 | 100d | 0d | start no earlier than 2015-03-27 |  |  |
| 813 | 1.2.4.1.14 | Close |  | 1d | 2015-06-09 | 2015-06-09 | 812 | 100d |  |  |  |  |

| ID | WBS | Task | Type | Duration | Start | Finish | Predecessors | Total slack | Free slack | Constraint |
| --- | --- | --- | --- | --- | --- | --- | --- | --- | --- | --- |
| 814 | 1.2.4.2 | **Fact_Ticket_Created** |  | 31d | 2015-04-29 | 2015-06-11 |  | 98d |  |  |
| 815 | 1.2.4.2.1 | SDA |  | 2d | 2015-04-29 | 2015-04-30 |  | 98d | 0d | start no earlier than 2015-04-29 |
| 816 | 1.2.4.2.2 | Field Mapping |  | 3d | 2015-05-01 | 2015-05-05 | 815 | 98d | 0d |  |
| 817 | 1.2.4.2.3 | Check into Git | milestone | 0d | 2015-05-05 | 2015-05-05 | 816 | 124d |  |  |
| 818 | 1.2.4.2.4 | Development - Staging/Connections |  | 3d | 2015-05-06 | 2015-05-08 | 816 | 98d | 0d |  |
| 819 | 1.2.4.2.5 | Check into Git | milestone | 0d | 2015-05-08 | 2015-05-08 | 818 | 121d |  |  |
| 820 | 1.2.4.2.6 | Dev Data - Peer Review |  | 0.5d | 2015-05-11 | 2015-05-11 | 818 | 120.5d |  |  |
| 821 | 1.2.4.2.7 | Stage to Target Testing with new source |  | 1d | 2015-05-11 | 2015-05-11 | 818 | 98d | 0d | start no earlier than 2015-02-23 |
| 822 | 1.2.4.2.8 | Development - Handoff Runbook / Test Cases |  | 1d | 2015-05-12 | 2015-05-12 | 821 | 98d | 0d | start no earlier than 2015-02-25 |
| 823 | 1.2.4.2.9 | Posted to Sharepoint and Git | milestone | 0d | 2015-05-12 | 2015-05-12 | 822 | 119d |  |  |
| 824 | 1.2.4.2.10 | QE |  | 5d | 2015-05-13 | 2015-05-19 | 822 | 114d |  |  |
| 825 | 1.2.4.2.11 | UAT |  | 10d | 2015-05-13 | 2015-05-27 | 822 | 98d | 0d | start no earlier than 2015-03-04 |
| 826 | 1.2.4.2.12 | Rollout |  | 1d | 2015-05-28 | 2015-05-28 | 825 | 108d |  | start no earlier than 2015-03-06 |
| 827 | 1.2.4.2.13 | Support |  | 10d | 2015-05-28 | 2015-06-10 | 825 | 98d | 0d | start no earlier than 2015-03-27 |
| 828 | 1.2.4.2.14 | Close |  | 1d | 2015-06-11 | 2015-06-11 | 827 | 98d |  |  |
| 829 | 1.2.4.3 | **Fact_Ticket_Account_Instance** |  | 31d | 2015-04-13 | 2015-05-26 |  | 110d |  |  |
| 830 | 1.2.4.3.1 | SDA |  | 2d | 2015-04-13 | 2015-04-14 |  | 110d | 0d | start no earlier than 2015-04-13 |
| 831 | 1.2.4.3.2 | Field Mapping |  | 3d | 2015-04-15 | 2015-04-17 | 830 | 110d | 0d |  |
| 832 | 1.2.4.3.3 | Check into Git | milestone | 0d | 2015-04-17 | 2015-04-17 | 831 | 136d |  |  |
| 833 | 1.2.4.3.4 | Development - Staging/Connections |  | 3d | 2015-04-20 | 2015-04-22 | 831 | 110d | 0d |  |
| 834 | 1.2.4.3.5 | Check into Git | milestone | 0d | 2015-04-22 | 2015-04-22 | 833 | 133d |  |  |
| 835 | 1.2.4.3.6 | Dev Data - Peer Review |  | 0.5d | 2015-04-23 | 2015-04-23 | 833 | 132.5d |  |  |
| 836 | 1.2.4.3.7 | Stage to Target Testing with new source |  | 1d | 2015-04-23 | 2015-04-23 | 833 | 110d | 0d | start no earlier than 2015-02-23 |
| 837 | 1.2.4.3.8 | Development - Handoff Runbook / Test Cases |  | 1d | 2015-04-24 | 2015-04-24 | 836 | 110d | 0d | start no earlier than 2015-02-25 |
| 838 | 1.2.4.3.9 | Posted to Sharepoint and Git | milestone | 0d | 2015-04-24 | 2015-04-24 | 837 | 131d |  |  |
| 839 | 1.2.4.3.10 | QE |  | 5d | 2015-04-27 | 2015-05-01 | 837 | 126d |  |  |
| 840 | 1.2.4.3.11 | UAT |  | 10d | 2015-04-27 | 2015-05-08 | 837 | 110d | 0d | start no earlier than 2015-03-04 |
| 841 | 1.2.4.3.12 | Rollout |  | 1d | 2015-05-11 | 2015-05-11 | 840 | 120d |  | start no earlier than 2015-03-06 |
| 842 | 1.2.4.3.13 | Support |  | 10d | 2015-05-11 | 2015-05-22 | 840 | 110d | 0d | start no earlier than 2015-03-27 |
| 843 | 1.2.4.3.14 | Close |  | 1d | 2015-05-26 | 2015-05-26 | 842 | 110d |  |  |

| ID | WBS | Task | Type | Duration | Start | Finish | Predecessors | Total slack | Free slack | Constraint |
| --- | --- | --- | --- | --- | --- | --- | --- | --- | --- | --- |
| 844 | 1.2.4.4 | **Fact_Ticket_Reponse** |  | 31d | 2015-04-13 | 2015-05-26 |  | 110d |  |  |
| 845 | 1.2.4.4.1 | SDA |  | 2d | 2015-04-13 | 2015-04-14 |  | 110d | 0d | start no earlier than 2015-04-13 |
| 846 | 1.2.4.4.2 | Field Mapping |  | 3d | 2015-04-15 | 2015-04-17 | 845 | 110d | 0d |  |
| 847 | 1.2.4.4.3 | Check into Git | milestone | 0d | 2015-04-17 | 2015-04-17 | 846 | 136d |  |  |
| 848 | 1.2.4.4.4 | Development - Staging/Connections |  | 3d | 2015-04-20 | 2015-04-22 | 846 | 110d | 0d |  |
| 849 | 1.2.4.4.5 | Check into Git | milestone | 0d | 2015-04-22 | 2015-04-22 | 848 | 133d |  |  |
| 850 | 1.2.4.4.6 | Dev Data - Peer Review |  | 0.5d | 2015-04-23 | 2015-04-23 | 848 | 132.5d |  |  |
| 851 | 1.2.4.4.7 | Stage to Target Testing with new source |  | 1d | 2015-04-23 | 2015-04-23 | 848 | 110d | 0d | start no earlier than 2015-02-23 |
| 852 | 1.2.4.4.8 | Development - Handoff Runbook / Test Cases |  | 1d | 2015-04-24 | 2015-04-24 | 851 | 110d | 0d | start no earlier than 2015-02-25 |
| 853 | 1.2.4.4.9 | Posted to Sharepoint and Git | milestone | 0d | 2015-04-24 | 2015-04-24 | 852 | 131d |  |  |
| 854 | 1.2.4.4.10 | QE |  | 5d | 2015-04-27 | 2015-05-01 | 852 | 126d |  |  |
| 855 | 1.2.4.4.11 | UAT |  | 10d | 2015-04-27 | 2015-05-08 | 852 | 110d | 0d | start no earlier than 2015-03-04 |
| 856 | 1.2.4.4.12 | Rollout |  | 1d | 2015-05-11 | 2015-05-11 | 855 | 120d |  | start no earlier than 2015-03-06 |
| 857 | 1.2.4.4.13 | Support |  | 10d | 2015-05-11 | 2015-05-22 | 855 | 110d | 0d | start no earlier than 2015-03-27 |
| 858 | 1.2.4.4.14 | Close |  | 1d | 2015-05-26 | 2015-05-26 | 857 | 110d |  |  |
| 859 | 1.2.4.5 | **Dim_Ticket_Queue** |  | 29d | 2015-04-13 | 2015-05-21 |  | 112d |  |  |
| 860 | 1.2.4.5.1 | SDA |  | 2d | 2015-04-13 | 2015-04-14 |  | 112d | 0d | start no earlier than 2015-04-13 |
| 861 | 1.2.4.5.2 | Field Mapping |  | 2d | 2015-04-15 | 2015-04-16 | 860 | 112d | 0d |  |
| 862 | 1.2.4.5.3 | Check into Git | milestone | 0d | 2015-04-16 | 2015-04-16 | 861 | 137d |  |  |
| 863 | 1.2.4.5.4 | Development - Staging/Connections |  | 2d | 2015-04-17 | 2015-04-20 | 861 | 112d | 0d |  |
| 864 | 1.2.4.5.5 | Check into Git | milestone | 0d | 2015-04-20 | 2015-04-20 | 863 | 135d |  |  |
| 865 | 1.2.4.5.6 | Dev Data - Peer Review |  | 0.5d | 2015-04-21 | 2015-04-21 | 863 | 134.5d |  |  |
| 866 | 1.2.4.5.7 | Stage to Target Testing with new source |  | 1d | 2015-04-21 | 2015-04-21 | 863 | 112d | 0d | start no earlier than 2015-02-23 |
| 867 | 1.2.4.5.8 | Development - Handoff Runbook / Test Cases |  | 1d | 2015-04-22 | 2015-04-22 | 866 | 112d | 0d | start no earlier than 2015-02-25 |
| 868 | 1.2.4.5.9 | Posted to Sharepoint and Git | milestone | 0d | 2015-04-22 | 2015-04-22 | 867 | 133d |  |  |
| 869 | 1.2.4.5.10 | QE |  | 5d | 2015-04-23 | 2015-04-29 | 867 | 128d |  |  |
| 870 | 1.2.4.5.11 | UAT |  | 10d | 2015-04-23 | 2015-05-06 | 867 | 112d | 0d | start no earlier than 2015-03-04 |
| 871 | 1.2.4.5.12 | Rollout |  | 1d | 2015-05-07 | 2015-05-07 | 870 | 122d |  | start no earlier than 2015-03-06 |
| 872 | 1.2.4.5.13 | Support |  | 10d | 2015-05-07 | 2015-05-20 | 870 | 112d | 0d | start no earlier than 2015-03-27 |
| 873 | 1.2.4.5.14 | Close |  | 1d | 2015-05-21 | 2015-05-21 | 872 | 112d |  |  |

| ID | WBS | Task | Type | Duration | Start | Finish | Predecessors | Total slack | Free slack | Constraint |
| --- | --- | --- | --- | --- | --- | --- | --- | --- | --- | --- |
| 874 | 1.2.4.6 | **Fact_Ticket_Queue** |  | 31d | 2015-04-13 | 2015-05-26 |  | 110d |  |  |
| 875 | 1.2.4.6.1 | SDA |  | 2d | 2015-04-13 | 2015-04-14 |  | 110d | 0d | start no earlier than 2015-04-13 |
| 876 | 1.2.4.6.2 | Field Mapping |  | 3d | 2015-04-15 | 2015-04-17 | 875 | 110d | 0d |  |
| 877 | 1.2.4.6.3 | Check into Git | milestone | 0d | 2015-04-17 | 2015-04-17 | 876 | 136d |  |  |
| 878 | 1.2.4.6.4 | Development - Staging/Connections |  | 3d | 2015-04-20 | 2015-04-22 | 876 | 110d | 0d |  |
| 879 | 1.2.4.6.5 | Check into Git | milestone | 0d | 2015-04-22 | 2015-04-22 | 878 | 133d |  |  |
| 880 | 1.2.4.6.6 | Dev Data - Peer Review |  | 0.5d | 2015-04-23 | 2015-04-23 | 878 | 132.5d |  |  |
| 881 | 1.2.4.6.7 | Stage to Target Testing with new source |  | 1d | 2015-04-23 | 2015-04-23 | 878 | 110d | 0d | start no earlier than 2015-02-23 |
| 882 | 1.2.4.6.8 | Development - Handoff Runbook / Test Cases |  | 1d | 2015-04-24 | 2015-04-24 | 881 | 110d | 0d | start no earlier than 2015-02-25 |
| 883 | 1.2.4.6.9 | Posted to Sharepoint and Git | milestone | 0d | 2015-04-24 | 2015-04-24 | 882 | 131d |  |  |
| 884 | 1.2.4.6.10 | QE |  | 5d | 2015-04-27 | 2015-05-01 | 882 | 126d |  |  |
| 885 | 1.2.4.6.11 | UAT |  | 10d | 2015-04-27 | 2015-05-08 | 882 | 110d | 0d | start no earlier than 2015-03-04 |
| 886 | 1.2.4.6.12 | Rollout |  | 1d | 2015-05-11 | 2015-05-11 | 885 | 120d |  | start no earlier than 2015-03-06 |
| 887 | 1.2.4.6.13 | Support |  | 10d | 2015-05-11 | 2015-05-22 | 885 | 110d | 0d | start no earlier than 2015-03-27 |
| 888 | 1.2.4.6.14 | Close |  | 1d | 2015-05-26 | 2015-05-26 | 887 | 110d |  |  |
| 889 | 1.2.4.7 | **Fact_Ticket_State** |  | 31d | 2015-04-13 | 2015-05-26 |  | 110d |  |  |
| 890 | 1.2.4.7.1 | SDA |  | 2d | 2015-04-13 | 2015-04-14 |  | 110d | 0d | start no earlier than 2015-04-13 |
| 891 | 1.2.4.7.2 | Field Mapping |  | 3d | 2015-04-15 | 2015-04-17 | 890 | 110d | 0d |  |
| 892 | 1.2.4.7.3 | Check into Git | milestone | 0d | 2015-04-17 | 2015-04-17 | 891 | 136d |  |  |
| 893 | 1.2.4.7.4 | Development - Staging/Connections |  | 3d | 2015-04-20 | 2015-04-22 | 891 | 110d | 0d |  |
| 894 | 1.2.4.7.5 | Check into Git | milestone | 0d | 2015-04-22 | 2015-04-22 | 893 | 133d |  |  |
| 895 | 1.2.4.7.6 | Dev Data - Peer Review |  | 0.5d | 2015-04-23 | 2015-04-23 | 893 | 132.5d |  |  |
| 896 | 1.2.4.7.7 | Stage to Target Testing with new source |  | 1d | 2015-04-23 | 2015-04-23 | 893 | 110d | 0d | start no earlier than 2015-02-23 |
| 897 | 1.2.4.7.8 | Development - Handoff Runbook / Test Cases |  | 1d | 2015-04-24 | 2015-04-24 | 896 | 110d | 0d | start no earlier than 2015-02-25 |
| 898 | 1.2.4.7.9 | Posted to Sharepoint and Git | milestone | 0d | 2015-04-24 | 2015-04-24 | 897 | 131d |  |  |
| 899 | 1.2.4.7.10 | QE |  | 5d | 2015-04-27 | 2015-05-01 | 897 | 126d |  |  |
| 900 | 1.2.4.7.11 | UAT |  | 10d | 2015-04-27 | 2015-05-08 | 897 | 110d | 0d | start no earlier than 2015-03-04 |
| 901 | 1.2.4.7.12 | Rollout |  | 1d | 2015-05-11 | 2015-05-11 | 900 | 120d |  | start no earlier than 2015-03-06 |
| 902 | 1.2.4.7.13 | Support |  | 10d | 2015-05-11 | 2015-05-22 | 900 | 110d | 0d | start no earlier than 2015-03-27 |
| 903 | 1.2.4.7.14 | Close |  | 1d | 2015-05-26 | 2015-05-26 | 902 | 110d |  |  |

| ID | WBS | Task | Type | Duration | Start | Finish | Predecessors | Total slack | Free slack | Constraint |
| --- | --- | --- | --- | --- | --- | --- | --- | --- | --- | --- |
| 904 | 1.2.4.8 | **Dim_Ticket_Comment** |  | 29d | 2015-04-13 | 2015-05-21 |  | 112d |  |  |
| 905 | 1.2.4.8.1 | SDA |  | 2d | 2015-04-13 | 2015-04-14 |  | 112d | 0d | start no earlier than 2015-04-13 |
| 906 | 1.2.4.8.2 | Field Mapping |  | 2d | 2015-04-15 | 2015-04-16 | 905 | 112d | 0d |  |
| 907 | 1.2.4.8.3 | Check into Git | milestone | 0d | 2015-04-16 | 2015-04-16 | 906 | 137d |  |  |
| 908 | 1.2.4.8.4 | Development - Staging/Connections |  | 2d | 2015-04-17 | 2015-04-20 | 906 | 112d | 0d |  |
| 909 | 1.2.4.8.5 | Check into Git | milestone | 0d | 2015-04-20 | 2015-04-20 | 908 | 135d |  |  |
| 910 | 1.2.4.8.6 | Dev Data - Peer Review |  | 0.5d | 2015-04-21 | 2015-04-21 | 908 | 134.5d |  |  |
| 911 | 1.2.4.8.7 | Stage to Target Testing with new source |  | 1d | 2015-04-21 | 2015-04-21 | 908 | 112d | 0d | start no earlier than 2015-02-23 |
| 912 | 1.2.4.8.8 | Development - Handoff Runbook / Test Cases |  | 1d | 2015-04-22 | 2015-04-22 | 911 | 112d | 0d | start no earlier than 2015-02-25 |
| 913 | 1.2.4.8.9 | Posted to Sharepoint and Git | milestone | 0d | 2015-04-22 | 2015-04-22 | 912 | 133d |  |  |
| 914 | 1.2.4.8.10 | QE |  | 5d | 2015-04-23 | 2015-04-29 | 912 | 128d |  |  |
| 915 | 1.2.4.8.11 | UAT |  | 10d | 2015-04-23 | 2015-05-06 | 912 | 112d | 0d | start no earlier than 2015-03-04 |
| 916 | 1.2.4.8.12 | Rollout |  | 1d | 2015-05-07 | 2015-05-07 | 915 | 122d |  | start no earlier than 2015-03-06 |
| 917 | 1.2.4.8.13 | Support |  | 10d | 2015-05-07 | 2015-05-20 | 915 | 112d | 0d | start no earlier than 2015-03-27 |
| 918 | 1.2.4.8.14 | Close |  | 1d | 2015-05-21 | 2015-05-21 | 917 | 112d |  |  |
| 919 | 1.2.4.9 | **Fact_Ticket_Comment** |  | 31d | 2015-04-13 | 2015-05-26 |  | 110d |  |  |
| 920 | 1.2.4.9.1 | SDA |  | 2d | 2015-04-13 | 2015-04-14 |  | 110d | 0d | start no earlier than 2015-04-13 |
| 921 | 1.2.4.9.2 | Field Mapping |  | 3d | 2015-04-15 | 2015-04-17 | 920 | 110d | 0d |  |
| 922 | 1.2.4.9.3 | Check into Git | milestone | 0d | 2015-04-17 | 2015-04-17 | 921 | 136d |  |  |
| 923 | 1.2.4.9.4 | Development - Staging/Connections |  | 3d | 2015-04-20 | 2015-04-22 | 921 | 110d | 0d |  |
| 924 | 1.2.4.9.5 | Check into Git | milestone | 0d | 2015-04-22 | 2015-04-22 | 923 | 133d |  |  |
| 925 | 1.2.4.9.6 | Dev Data - Peer Review |  | 0.5d | 2015-04-23 | 2015-04-23 | 923 | 132.5d |  |  |
| 926 | 1.2.4.9.7 | Stage to Target Testing with new source |  | 1d | 2015-04-23 | 2015-04-23 | 923 | 110d | 0d | start no earlier than 2015-02-23 |
| 927 | 1.2.4.9.8 | Development - Handoff Runbook / Test Cases |  | 1d | 2015-04-24 | 2015-04-24 | 926 | 110d | 0d | start no earlier than 2015-02-25 |
| 928 | 1.2.4.9.9 | Posted to Sharepoint and Git | milestone | 0d | 2015-04-24 | 2015-04-24 | 927 | 131d |  |  |
| 929 | 1.2.4.9.10 | QE |  | 5d | 2015-04-27 | 2015-05-01 | 927 | 126d |  |  |
| 930 | 1.2.4.9.11 | UAT |  | 10d | 2015-04-27 | 2015-05-08 | 927 | 110d | 0d | start no earlier than 2015-03-04 |
| 931 | 1.2.4.9.12 | Rollout |  | 1d | 2015-05-11 | 2015-05-11 | 930 | 120d |  | start no earlier than 2015-03-06 |
| 932 | 1.2.4.9.13 | Support |  | 10d | 2015-05-11 | 2015-05-22 | 930 | 110d | 0d | start no earlier than 2015-03-27 |
| 933 | 1.2.4.9.14 | Close |  | 1d | 2015-05-26 | 2015-05-26 | 932 | 110d |  |  |

| ID | WBS | Task | Type | Duration | Start | Finish | Predecessors | Total slack | Free slack | Constraint |
| --- | --- | --- | --- | --- | --- | --- | --- | --- | --- | --- |
| 934 | 1.2.4.10 | **Fact_Ticket_Assignment** |  | 31d | 2015-04-13 | 2015-05-26 |  | 110d |  |  |
| 935 | 1.2.4.10.1 | SDA |  | 2d | 2015-04-13 | 2015-04-14 |  | 110d | 0d | start no earlier than 2015-04-13 |
| 936 | 1.2.4.10.2 | Field Mapping |  | 3d | 2015-04-15 | 2015-04-17 | 935 | 110d | 0d |  |
| 937 | 1.2.4.10.3 | Check into Git | milestone | 0d | 2015-04-17 | 2015-04-17 | 936 | 136d |  |  |
| 938 | 1.2.4.10.4 | Development - Staging/Connections |  | 3d | 2015-04-20 | 2015-04-22 | 936 | 110d | 0d |  |
| 939 | 1.2.4.10.5 | Check into Git | milestone | 0d | 2015-04-22 | 2015-04-22 | 938 | 133d |  |  |
| 940 | 1.2.4.10.6 | Dev Data - Peer Review |  | 0.5d | 2015-04-23 | 2015-04-23 | 938 | 132.5d |  |  |
| 941 | 1.2.4.10.7 | Stage to Target Testing with new source |  | 1d | 2015-04-23 | 2015-04-23 | 938 | 110d | 0d | start no earlier than 2015-02-23 |
| 942 | 1.2.4.10.8 | Development - Handoff Runbook / Test Cases |  | 1d | 2015-04-24 | 2015-04-24 | 941 | 110d | 0d | start no earlier than 2015-02-25 |
| 943 | 1.2.4.10.9 | Posted to Sharepoint and Git | milestone | 0d | 2015-04-24 | 2015-04-24 | 942 | 131d |  |  |
| 944 | 1.2.4.10.10 | QE |  | 5d | 2015-04-27 | 2015-05-01 | 942 | 126d |  |  |
| 945 | 1.2.4.10.11 | UAT |  | 10d | 2015-04-27 | 2015-05-08 | 942 | 110d | 0d | start no earlier than 2015-03-04 |
| 946 | 1.2.4.10.12 | Rollout |  | 1d | 2015-05-11 | 2015-05-11 | 945 | 120d |  | start no earlier than 2015-03-06 |
| 947 | 1.2.4.10.13 | Support |  | 10d | 2015-05-11 | 2015-05-22 | 945 | 110d | 0d | start no earlier than 2015-03-27 |
| 948 | 1.2.4.10.14 | Close |  | 1d | 2015-05-26 | 2015-05-26 | 947 | 110d |  |  |
| 949 | 1.2.4.11 | **Fact_Ticket_Relationship (Parent)** |  | 31d | 2015-04-13 | 2015-05-26 |  | 110d |  |  |
| 950 | 1.2.4.11.1 | SDA |  | 2d | 2015-04-13 | 2015-04-14 |  | 110d | 0d | start no earlier than 2015-04-13 |
| 951 | 1.2.4.11.2 | Field Mapping |  | 3d | 2015-04-15 | 2015-04-17 | 950 | 110d | 0d |  |
| 952 | 1.2.4.11.3 | Check into Git | milestone | 0d | 2015-04-17 | 2015-04-17 | 951 | 136d |  |  |
| 953 | 1.2.4.11.4 | Development - Staging/Connections |  | 3d | 2015-04-20 | 2015-04-22 | 951 | 110d | 0d |  |
| 954 | 1.2.4.11.5 | Check into Git | milestone | 0d | 2015-04-22 | 2015-04-22 | 953 | 133d |  |  |
| 955 | 1.2.4.11.6 | Dev Data - Peer Review |  | 0.5d | 2015-04-23 | 2015-04-23 | 953 | 132.5d |  |  |
| 956 | 1.2.4.11.7 | Stage to Target Testing with new source |  | 1d | 2015-04-23 | 2015-04-23 | 953 | 110d | 0d | start no earlier than 2015-02-23 |
| 957 | 1.2.4.11.8 | Development - Handoff Runbook / Test Cases |  | 1d | 2015-04-24 | 2015-04-24 | 956 | 110d | 0d | start no earlier than 2015-02-25 |
| 958 | 1.2.4.11.9 | Posted to Sharepoint and Git | milestone | 0d | 2015-04-24 | 2015-04-24 | 957 | 131d |  |  |
| 959 | 1.2.4.11.10 | QE |  | 5d | 2015-04-27 | 2015-05-01 | 957 | 126d |  |  |
| 960 | 1.2.4.11.11 | UAT |  | 10d | 2015-04-27 | 2015-05-08 | 957 | 110d | 0d | start no earlier than 2015-03-04 |
| 961 | 1.2.4.11.12 | Rollout |  | 1d | 2015-05-11 | 2015-05-11 | 960 | 120d |  | start no earlier than 2015-03-06 |
| 962 | 1.2.4.11.13 | Support |  | 10d | 2015-05-11 | 2015-05-22 | 960 | 110d | 0d | start no earlier than 2015-03-27 |
| 963 | 1.2.4.11.14 | Close |  | 1d | 2015-05-26 | 2015-05-26 | 962 | 110d |  |  |

| ID | WBS | Task | Type | Duration | Start | Finish | Predecessors | Total slack | Free slack | Constraint |
| --- | --- | --- | --- | --- | --- | --- | --- | --- | --- | --- |
| 964 | 1.2.4.12 | **Fact_Ticket_Resolved** |  | 31d | 2015-04-13 | 2015-05-26 |  | 110d |  |  |
| 965 | 1.2.4.12.1 | SDA |  | 2d | 2015-04-13 | 2015-04-14 |  | 110d | 0d | start no earlier than 2015-04-13 |
| 966 | 1.2.4.12.2 | Field Mapping |  | 3d | 2015-04-15 | 2015-04-17 | 965 | 110d | 0d |  |
| 967 | 1.2.4.12.3 | Check into Git | milestone | 0d | 2015-04-17 | 2015-04-17 | 966 | 136d |  |  |
| 968 | 1.2.4.12.4 | Development - Staging/Connections |  | 3d | 2015-04-20 | 2015-04-22 | 966 | 110d | 0d |  |
| 969 | 1.2.4.12.5 | Check into Git | milestone | 0d | 2015-04-22 | 2015-04-22 | 968 | 133d |  |  |
| 970 | 1.2.4.12.6 | Dev Data - Peer Review |  | 0.5d | 2015-04-23 | 2015-04-23 | 968 | 132.5d |  |  |
| 971 | 1.2.4.12.7 | Stage to Target Testing with new source |  | 1d | 2015-04-23 | 2015-04-23 | 968 | 110d | 0d | start no earlier than 2015-02-23 |
| 972 | 1.2.4.12.8 | Development - Handoff Runbook / Test Cases |  | 1d | 2015-04-24 | 2015-04-24 | 971 | 110d | 0d | start no earlier than 2015-02-25 |
| 973 | 1.2.4.12.9 | Posted to Sharepoint and Git | milestone | 0d | 2015-04-24 | 2015-04-24 | 972 | 131d |  |  |
| 974 | 1.2.4.12.10 | QE |  | 5d | 2015-04-27 | 2015-05-01 | 972 | 126d |  |  |
| 975 | 1.2.4.12.11 | UAT |  | 10d | 2015-04-27 | 2015-05-08 | 972 | 110d | 0d | start no earlier than 2015-03-04 |
| 976 | 1.2.4.12.12 | Rollout |  | 1d | 2015-05-11 | 2015-05-11 | 975 | 120d |  | start no earlier than 2015-03-06 |
| 977 | 1.2.4.12.13 | Support |  | 10d | 2015-05-11 | 2015-05-22 | 975 | 110d | 0d | start no earlier than 2015-03-27 |
| 978 | 1.2.4.12.14 | Close |  | 1d | 2015-05-26 | 2015-05-26 | 977 | 110d |  |  |
| 979 | 1.2.5 | **Zendesk** |  | 43d | 2015-04-13 | 2015-06-11 |  | 98d |  |  |
| 980 | 1.2.5.1 | **Dim_Ticket** |  | 29d | 2015-04-29 | 2015-06-09 |  | 100d |  |  |
| 981 | 1.2.5.1.1 | SDA |  | 2d | 2015-04-29 | 2015-04-30 |  | 100d | 0d | start no earlier than 2015-04-29 |
| 982 | 1.2.5.1.2 | Field Mapping |  | 2d | 2015-05-01 | 2015-05-04 | 981 | 100d | 0d |  |
| 983 | 1.2.5.1.3 | Check into Git | milestone | 0d | 2015-05-04 | 2015-05-04 | 982 | 125d |  |  |
| 984 | 1.2.5.1.4 | Development - Staging/Connections |  | 2d | 2015-05-05 | 2015-05-06 | 982 | 100d | 0d |  |
| 985 | 1.2.5.1.5 | Check into Git | milestone | 0d | 2015-05-06 | 2015-05-06 | 984 | 123d |  |  |
| 986 | 1.2.5.1.6 | Dev Data - Peer Review |  | 0.5d | 2015-05-07 | 2015-05-07 | 984 | 122.5d |  |  |
| 987 | 1.2.5.1.7 | Stage to Target Testing with new source |  | 1d | 2015-05-07 | 2015-05-07 | 984 | 100d | 0d | start no earlier than 2015-02-23 |
| 988 | 1.2.5.1.8 | Development - Handoff Runbook / Test Cases |  | 1d | 2015-05-08 | 2015-05-08 | 987 | 100d | 0d | start no earlier than 2015-02-25 |
| 989 | 1.2.5.1.9 | Posted to Sharepoint and Git | milestone | 0d | 2015-05-08 | 2015-05-08 | 988 | 121d |  |  |
| 990 | 1.2.5.1.10 | QE |  | 5d | 2015-05-11 | 2015-05-15 | 988 | 116d |  |  |
| 991 | 1.2.5.1.11 | UAT |  | 10d | 2015-05-11 | 2015-05-22 | 988 | 100d | 0d | start no earlier than 2015-03-04 |
| 992 | 1.2.5.1.12 | Rollout |  | 1d | 2015-05-26 | 2015-05-26 | 991 | 110d |  | start no earlier than 2015-03-06 |
| 993 | 1.2.5.1.13 | Support |  | 10d | 2015-05-26 | 2015-06-08 | 991 | 100d | 0d | start no earlier than 2015-03-27 |
| 994 | 1.2.5.1.14 | Close |  | 1d | 2015-06-09 | 2015-06-09 | 993 | 100d |  |  |

| ID | WBS | Task | Type | Duration | Start | Finish | Predecessors | Total slack | Free slack | Constraint |
| --- | --- | --- | --- | --- | --- | --- | --- | --- | --- | --- |
| 995 | 1.2.5.2 | **Fact_Ticket_Created** |  | 31d | 2015-04-29 | 2015-06-11 |  | 98d |  |  |
| 996 | 1.2.5.2.1 | SDA |  | 2d | 2015-04-29 | 2015-04-30 |  | 98d | 0d | start no earlier than 2015-04-29 |
| 997 | 1.2.5.2.2 | Field Mapping |  | 3d | 2015-05-01 | 2015-05-05 | 996 | 98d | 0d |  |
| 998 | 1.2.5.2.3 | Check into Git | milestone | 0d | 2015-05-05 | 2015-05-05 | 997 | 124d |  |  |
| 999 | 1.2.5.2.4 | Development - Staging/Connections |  | 3d | 2015-05-06 | 2015-05-08 | 997 | 98d | 0d |  |
| 1000 | 1.2.5.2.5 | Check into Git | milestone | 0d | 2015-05-08 | 2015-05-08 | 999 | 121d |  |  |
| 1001 | 1.2.5.2.6 | Dev Data - Peer Review |  | 0.5d | 2015-05-11 | 2015-05-11 | 999 | 120.5d |  |  |
| 1002 | 1.2.5.2.7 | Stage to Target Testing with new source |  | 1d | 2015-05-11 | 2015-05-11 | 999 | 98d | 0d | start no earlier than 2015-02-23 |
| 1003 | 1.2.5.2.8 | Development - Handoff Runbook / Test Cases |  | 1d | 2015-05-12 | 2015-05-12 | 1002 | 98d | 0d | start no earlier than 2015-02-25 |
| 1004 | 1.2.5.2.9 | Posted to Sharepoint and Git | milestone | 0d | 2015-05-12 | 2015-05-12 | 1003 | 119d |  |  |
| 1005 | 1.2.5.2.10 | QE |  | 5d | 2015-05-13 | 2015-05-19 | 1003 | 114d |  |  |
| 1006 | 1.2.5.2.11 | UAT |  | 10d | 2015-05-13 | 2015-05-27 | 1003 | 98d | 0d | start no earlier than 2015-03-04 |
| 1007 | 1.2.5.2.12 | Rollout |  | 1d | 2015-05-28 | 2015-05-28 | 1006 | 108d |  | start no earlier than 2015-03-06 |
| 1008 | 1.2.5.2.13 | Support |  | 10d | 2015-05-28 | 2015-06-10 | 1006 | 98d | 0d | start no earlier than 2015-03-27 |
| 1009 | 1.2.5.2.14 | Close |  | 1d | 2015-06-11 | 2015-06-11 | 1008 | 98d |  |  |
| 1010 | 1.2.5.3 | **Fact_Ticket_Account_Instance** |  | 31d | 2015-04-13 | 2015-05-26 |  | 110d |  |  |
| 1011 | 1.2.5.3.1 | SDA |  | 2d | 2015-04-13 | 2015-04-14 |  | 110d | 0d | start no earlier than 2015-04-13 |
| 1012 | 1.2.5.3.2 | Field Mapping |  | 3d | 2015-04-15 | 2015-04-17 | 1011 | 110d | 0d |  |
| 1013 | 1.2.5.3.3 | Check into Git | milestone | 0d | 2015-04-17 | 2015-04-17 | 1012 | 136d |  |  |
| 1014 | 1.2.5.3.4 | Development - Staging/Connections |  | 3d | 2015-04-20 | 2015-04-22 | 1012 | 110d | 0d |  |
| 1015 | 1.2.5.3.5 | Check into Git | milestone | 0d | 2015-04-22 | 2015-04-22 | 1014 | 133d |  |  |
| 1016 | 1.2.5.3.6 | Dev Data - Peer Review |  | 0.5d | 2015-04-23 | 2015-04-23 | 1014 | 132.5d |  |  |
| 1017 | 1.2.5.3.7 | Stage to Target Testing with new source |  | 1d | 2015-04-23 | 2015-04-23 | 1014 | 110d | 0d | start no earlier than 2015-02-23 |
| 1018 | 1.2.5.3.8 | Development - Handoff Runbook / Test Cases |  | 1d | 2015-04-24 | 2015-04-24 | 1017 | 110d | 0d | start no earlier than 2015-02-25 |
| 1019 | 1.2.5.3.9 | Posted to Sharepoint and Git | milestone | 0d | 2015-04-24 | 2015-04-24 | 1018 | 131d |  |  |
| 1020 | 1.2.5.3.10 | QE |  | 5d | 2015-04-27 | 2015-05-01 | 1018 | 126d |  |  |
| 1021 | 1.2.5.3.11 | UAT |  | 10d | 2015-04-27 | 2015-05-08 | 1018 | 110d | 0d | start no earlier than 2015-03-04 |
| 1022 | 1.2.5.3.12 | Rollout |  | 1d | 2015-05-11 | 2015-05-11 | 1021 | 120d |  | start no earlier than 2015-03-06 |
| 1023 | 1.2.5.3.13 | Support |  | 10d | 2015-05-11 | 2015-05-22 | 1021 | 110d | 0d | start no earlier than 2015-03-27 |
| 1024 | 1.2.5.3.14 | Close |  | 1d | 2015-05-26 | 2015-05-26 | 1023 | 110d |  |  |

| ID | WBS | Task | Type | Duration | Start | Finish | Predecessors | Total slack | Free slack | Constraint |
| --- | --- | --- | --- | --- | --- | --- | --- | --- | --- | --- |
| 1025 | 1.2.5.4 | **Fact_Ticket_Reponse** |  | 31d | 2015-04-13 | 2015-05-26 |  | 110d |  |  |
| 1026 | 1.2.5.4.1 | SDA |  | 2d | 2015-04-13 | 2015-04-14 |  | 110d | 0d | start no earlier than 2015-04-13 |
| 1027 | 1.2.5.4.2 | Field Mapping |  | 3d | 2015-04-15 | 2015-04-17 | 1026 | 110d | 0d |  |
| 1028 | 1.2.5.4.3 | Check into Git | milestone | 0d | 2015-04-17 | 2015-04-17 | 1027 | 136d |  |  |
| 1029 | 1.2.5.4.4 | Development - Staging/Connections |  | 3d | 2015-04-20 | 2015-04-22 | 1027 | 110d | 0d |  |
| 1030 | 1.2.5.4.5 | Check into Git | milestone | 0d | 2015-04-22 | 2015-04-22 | 1029 | 133d |  |  |
| 1031 | 1.2.5.4.6 | Dev Data - Peer Review |  | 0.5d | 2015-04-23 | 2015-04-23 | 1029 | 132.5d |  |  |
| 1032 | 1.2.5.4.7 | Stage to Target Testing with new source |  | 1d | 2015-04-23 | 2015-04-23 | 1029 | 110d | 0d | start no earlier than 2015-02-23 |
| 1033 | 1.2.5.4.8 | Development - Handoff Runbook / Test Cases |  | 1d | 2015-04-24 | 2015-04-24 | 1032 | 110d | 0d | start no earlier than 2015-02-25 |
| 1034 | 1.2.5.4.9 | Posted to Sharepoint and Git | milestone | 0d | 2015-04-24 | 2015-04-24 | 1033 | 131d |  |  |
| 1035 | 1.2.5.4.10 | QE |  | 5d | 2015-04-27 | 2015-05-01 | 1033 | 126d |  |  |
| 1036 | 1.2.5.4.11 | UAT |  | 10d | 2015-04-27 | 2015-05-08 | 1033 | 110d | 0d | start no earlier than 2015-03-04 |
| 1037 | 1.2.5.4.12 | Rollout |  | 1d | 2015-05-11 | 2015-05-11 | 1036 | 120d |  | start no earlier than 2015-03-06 |
| 1038 | 1.2.5.4.13 | Support |  | 10d | 2015-05-11 | 2015-05-22 | 1036 | 110d | 0d | start no earlier than 2015-03-27 |
| 1039 | 1.2.5.4.14 | Close |  | 1d | 2015-05-26 | 2015-05-26 | 1038 | 110d |  |  |
| 1040 | 1.2.5.5 | **Dim_Ticket_Queue** |  | 29d | 2015-04-13 | 2015-05-21 |  | 112d |  |  |
| 1041 | 1.2.5.5.1 | SDA |  | 2d | 2015-04-13 | 2015-04-14 |  | 112d | 0d | start no earlier than 2015-04-13 |
| 1042 | 1.2.5.5.2 | Field Mapping |  | 2d | 2015-04-15 | 2015-04-16 | 1041 | 112d | 0d |  |
| 1043 | 1.2.5.5.3 | Check into Git | milestone | 0d | 2015-04-16 | 2015-04-16 | 1042 | 137d |  |  |
| 1044 | 1.2.5.5.4 | Development - Staging/Connections |  | 2d | 2015-04-17 | 2015-04-20 | 1042 | 112d | 0d |  |
| 1045 | 1.2.5.5.5 | Check into Git | milestone | 0d | 2015-04-20 | 2015-04-20 | 1044 | 135d |  |  |
| 1046 | 1.2.5.5.6 | Dev Data - Peer Review |  | 0.5d | 2015-04-21 | 2015-04-21 | 1044 | 134.5d |  |  |
| 1047 | 1.2.5.5.7 | Stage to Target Testing with new source |  | 1d | 2015-04-21 | 2015-04-21 | 1044 | 112d | 0d | start no earlier than 2015-02-23 |
| 1048 | 1.2.5.5.8 | Development - Handoff Runbook / Test Cases |  | 1d | 2015-04-22 | 2015-04-22 | 1047 | 112d | 0d | start no earlier than 2015-02-25 |
| 1049 | 1.2.5.5.9 | Posted to Sharepoint and Git | milestone | 0d | 2015-04-22 | 2015-04-22 | 1048 | 133d |  |  |
| 1050 | 1.2.5.5.10 | QE |  | 5d | 2015-04-23 | 2015-04-29 | 1048 | 128d |  |  |
| 1051 | 1.2.5.5.11 | UAT |  | 10d | 2015-04-23 | 2015-05-06 | 1048 | 112d | 0d | start no earlier than 2015-03-04 |
| 1052 | 1.2.5.5.12 | Rollout |  | 1d | 2015-05-07 | 2015-05-07 | 1051 | 122d |  | start no earlier than 2015-03-06 |
| 1053 | 1.2.5.5.13 | Support |  | 10d | 2015-05-07 | 2015-05-20 | 1051 | 112d | 0d | start no earlier than 2015-03-27 |
| 1054 | 1.2.5.5.14 | Close |  | 1d | 2015-05-21 | 2015-05-21 | 1053 | 112d |  |  |

| ID | WBS | Task | Type | Duration | Start | Finish | Predecessors | Total slack | Free slack | Constraint |
| --- | --- | --- | --- | --- | --- | --- | --- | --- | --- | --- |
| 1055 | 1.2.5.6 | **Fact_Ticket_Queue** |  | 31d | 2015-04-13 | 2015-05-26 |  | 110d |  |  |
| 1056 | 1.2.5.6.1 | SDA |  | 2d | 2015-04-13 | 2015-04-14 |  | 110d | 0d | start no earlier than 2015-04-13 |
| 1057 | 1.2.5.6.2 | Field Mapping |  | 3d | 2015-04-15 | 2015-04-17 | 1056 | 110d | 0d |  |
| 1058 | 1.2.5.6.3 | Check into Git | milestone | 0d | 2015-04-17 | 2015-04-17 | 1057 | 136d |  |  |
| 1059 | 1.2.5.6.4 | Development - Staging/Connections |  | 3d | 2015-04-20 | 2015-04-22 | 1057 | 110d | 0d |  |
| 1060 | 1.2.5.6.5 | Check into Git | milestone | 0d | 2015-04-22 | 2015-04-22 | 1059 | 133d |  |  |
| 1061 | 1.2.5.6.6 | Dev Data - Peer Review |  | 0.5d | 2015-04-23 | 2015-04-23 | 1059 | 132.5d |  |  |
| 1062 | 1.2.5.6.7 | Stage to Target Testing with new source |  | 1d | 2015-04-23 | 2015-04-23 | 1059 | 110d | 0d | start no earlier than 2015-02-23 |
| 1063 | 1.2.5.6.8 | Development - Handoff Runbook / Test Cases |  | 1d | 2015-04-24 | 2015-04-24 | 1062 | 110d | 0d | start no earlier than 2015-02-25 |
| 1064 | 1.2.5.6.9 | Posted to Sharepoint and Git | milestone | 0d | 2015-04-24 | 2015-04-24 | 1063 | 131d |  |  |
| 1065 | 1.2.5.6.10 | QE |  | 5d | 2015-04-27 | 2015-05-01 | 1063 | 126d |  |  |
| 1066 | 1.2.5.6.11 | UAT |  | 10d | 2015-04-27 | 2015-05-08 | 1063 | 110d | 0d | start no earlier than 2015-03-04 |
| 1067 | 1.2.5.6.12 | Rollout |  | 1d | 2015-05-11 | 2015-05-11 | 1066 | 120d |  | start no earlier than 2015-03-06 |
| 1068 | 1.2.5.6.13 | Support |  | 10d | 2015-05-11 | 2015-05-22 | 1066 | 110d | 0d | start no earlier than 2015-03-27 |
| 1069 | 1.2.5.6.14 | Close |  | 1d | 2015-05-26 | 2015-05-26 | 1068 | 110d |  |  |
| 1070 | 1.2.5.7 | **Fact_Ticket_State** |  | 31d | 2015-04-13 | 2015-05-26 |  | 110d |  |  |
| 1071 | 1.2.5.7.1 | SDA |  | 2d | 2015-04-13 | 2015-04-14 |  | 110d | 0d | start no earlier than 2015-04-13 |
| 1072 | 1.2.5.7.2 | Field Mapping |  | 3d | 2015-04-15 | 2015-04-17 | 1071 | 110d | 0d |  |
| 1073 | 1.2.5.7.3 | Check into Git | milestone | 0d | 2015-04-17 | 2015-04-17 | 1072 | 136d |  |  |
| 1074 | 1.2.5.7.4 | Development - Staging/Connections |  | 3d | 2015-04-20 | 2015-04-22 | 1072 | 110d | 0d |  |
| 1075 | 1.2.5.7.5 | Check into Git | milestone | 0d | 2015-04-22 | 2015-04-22 | 1074 | 133d |  |  |
| 1076 | 1.2.5.7.6 | Dev Data - Peer Review |  | 0.5d | 2015-04-23 | 2015-04-23 | 1074 | 132.5d |  |  |
| 1077 | 1.2.5.7.7 | Stage to Target Testing with new source |  | 1d | 2015-04-23 | 2015-04-23 | 1074 | 110d | 0d | start no earlier than 2015-02-23 |
| 1078 | 1.2.5.7.8 | Development - Handoff Runbook / Test Cases |  | 1d | 2015-04-24 | 2015-04-24 | 1077 | 110d | 0d | start no earlier than 2015-02-25 |
| 1079 | 1.2.5.7.9 | Posted to Sharepoint and Git | milestone | 0d | 2015-04-24 | 2015-04-24 | 1078 | 131d |  |  |
| 1080 | 1.2.5.7.10 | QE |  | 5d | 2015-04-27 | 2015-05-01 | 1078 | 126d |  |  |
| 1081 | 1.2.5.7.11 | UAT |  | 10d | 2015-04-27 | 2015-05-08 | 1078 | 110d | 0d | start no earlier than 2015-03-04 |
| 1082 | 1.2.5.7.12 | Rollout |  | 1d | 2015-05-11 | 2015-05-11 | 1081 | 120d |  | start no earlier than 2015-03-06 |
| 1083 | 1.2.5.7.13 | Support |  | 10d | 2015-05-11 | 2015-05-22 | 1081 | 110d | 0d | start no earlier than 2015-03-27 |
| 1084 | 1.2.5.7.14 | Close |  | 1d | 2015-05-26 | 2015-05-26 | 1083 | 110d |  |  |

| ID | WBS | Task | Type | Duration | Start | Finish | Predecessors | Total slack | Free slack | Constraint |
| --- | --- | --- | --- | --- | --- | --- | --- | --- | --- | --- |
| 1085 | 1.2.5.8 | **Dim_Ticket_Comment** |  | 29d | 2015-04-13 | 2015-05-21 |  | 112d |  |  |
| 1086 | 1.2.5.8.1 | SDA |  | 2d | 2015-04-13 | 2015-04-14 |  | 112d | 0d | start no earlier than 2015-04-13 |
| 1087 | 1.2.5.8.2 | Field Mapping |  | 2d | 2015-04-15 | 2015-04-16 | 1086 | 112d | 0d |  |
| 1088 | 1.2.5.8.3 | Check into Git | milestone | 0d | 2015-04-16 | 2015-04-16 | 1087 | 137d |  |  |
| 1089 | 1.2.5.8.4 | Development - Staging/Connections |  | 2d | 2015-04-17 | 2015-04-20 | 1087 | 112d | 0d |  |
| 1090 | 1.2.5.8.5 | Check into Git | milestone | 0d | 2015-04-20 | 2015-04-20 | 1089 | 135d |  |  |
| 1091 | 1.2.5.8.6 | Dev Data - Peer Review |  | 0.5d | 2015-04-21 | 2015-04-21 | 1089 | 134.5d |  |  |
| 1092 | 1.2.5.8.7 | Stage to Target Testing with new source |  | 1d | 2015-04-21 | 2015-04-21 | 1089 | 112d | 0d | start no earlier than 2015-02-23 |
| 1093 | 1.2.5.8.8 | Development - Handoff Runbook / Test Cases |  | 1d | 2015-04-22 | 2015-04-22 | 1092 | 112d | 0d | start no earlier than 2015-02-25 |
| 1094 | 1.2.5.8.9 | Posted to Sharepoint and Git | milestone | 0d | 2015-04-22 | 2015-04-22 | 1093 | 133d |  |  |
| 1095 | 1.2.5.8.10 | QE |  | 5d | 2015-04-23 | 2015-04-29 | 1093 | 128d |  |  |
| 1096 | 1.2.5.8.11 | UAT |  | 10d | 2015-04-23 | 2015-05-06 | 1093 | 112d | 0d | start no earlier than 2015-03-04 |
| 1097 | 1.2.5.8.12 | Rollout |  | 1d | 2015-05-07 | 2015-05-07 | 1096 | 122d |  | start no earlier than 2015-03-06 |
| 1098 | 1.2.5.8.13 | Support |  | 10d | 2015-05-07 | 2015-05-20 | 1096 | 112d | 0d | start no earlier than 2015-03-27 |
| 1099 | 1.2.5.8.14 | Close |  | 1d | 2015-05-21 | 2015-05-21 | 1098 | 112d |  |  |
| 1100 | 1.2.5.9 | **Fact_Ticket_Comment** |  | 31d | 2015-04-13 | 2015-05-26 |  | 110d |  |  |
| 1101 | 1.2.5.9.1 | SDA |  | 2d | 2015-04-13 | 2015-04-14 |  | 110d | 0d | start no earlier than 2015-04-13 |
| 1102 | 1.2.5.9.2 | Field Mapping |  | 3d | 2015-04-15 | 2015-04-17 | 1101 | 110d | 0d |  |
| 1103 | 1.2.5.9.3 | Check into Git | milestone | 0d | 2015-04-17 | 2015-04-17 | 1102 | 136d |  |  |
| 1104 | 1.2.5.9.4 | Development - Staging/Connections |  | 3d | 2015-04-20 | 2015-04-22 | 1102 | 110d | 0d |  |
| 1105 | 1.2.5.9.5 | Check into Git | milestone | 0d | 2015-04-22 | 2015-04-22 | 1104 | 133d |  |  |
| 1106 | 1.2.5.9.6 | Dev Data - Peer Review |  | 0.5d | 2015-04-23 | 2015-04-23 | 1104 | 132.5d |  |  |
| 1107 | 1.2.5.9.7 | Stage to Target Testing with new source |  | 1d | 2015-04-23 | 2015-04-23 | 1104 | 110d | 0d | start no earlier than 2015-02-23 |
| 1108 | 1.2.5.9.8 | Development - Handoff Runbook / Test Cases |  | 1d | 2015-04-24 | 2015-04-24 | 1107 | 110d | 0d | start no earlier than 2015-02-25 |
| 1109 | 1.2.5.9.9 | Posted to Sharepoint and Git | milestone | 0d | 2015-04-24 | 2015-04-24 | 1108 | 131d |  |  |
| 1110 | 1.2.5.9.10 | QE |  | 5d | 2015-04-27 | 2015-05-01 | 1108 | 126d |  |  |
| 1111 | 1.2.5.9.11 | UAT |  | 10d | 2015-04-27 | 2015-05-08 | 1108 | 110d | 0d | start no earlier than 2015-03-04 |
| 1112 | 1.2.5.9.12 | Rollout |  | 1d | 2015-05-11 | 2015-05-11 | 1111 | 120d |  | start no earlier than 2015-03-06 |
| 1113 | 1.2.5.9.13 | Support |  | 10d | 2015-05-11 | 2015-05-22 | 1111 | 110d | 0d | start no earlier than 2015-03-27 |
| 1114 | 1.2.5.9.14 | Close |  | 1d | 2015-05-26 | 2015-05-26 | 1113 | 110d |  |  |

| ID | WBS | Task | Type | Duration | Start | Finish | Predecessors | Total slack | Free slack | Constraint |
| --- | --- | --- | --- | --- | --- | --- | --- | --- | --- | --- |
| 1115 | 1.2.5.10 | **Fact_Ticket_Assignment** |  | 31d | 2015-04-13 | 2015-05-26 |  | 110d |  |  |
| 1116 | 1.2.5.10.1 | SDA |  | 2d | 2015-04-13 | 2015-04-14 |  | 110d | 0d | start no earlier than 2015-04-13 |
| 1117 | 1.2.5.10.2 | Field Mapping |  | 3d | 2015-04-15 | 2015-04-17 | 1116 | 110d | 0d |  |
| 1118 | 1.2.5.10.3 | Check into Git | milestone | 0d | 2015-04-17 | 2015-04-17 | 1117 | 136d |  |  |
| 1119 | 1.2.5.10.4 | Development - Staging/Connections |  | 3d | 2015-04-20 | 2015-04-22 | 1117 | 110d | 0d |  |
| 1120 | 1.2.5.10.5 | Check into Git | milestone | 0d | 2015-04-22 | 2015-04-22 | 1119 | 133d |  |  |
| 1121 | 1.2.5.10.6 | Dev Data - Peer Review |  | 0.5d | 2015-04-23 | 2015-04-23 | 1119 | 132.5d |  |  |
| 1122 | 1.2.5.10.7 | Stage to Target Testing with new source |  | 1d | 2015-04-23 | 2015-04-23 | 1119 | 110d | 0d | start no earlier than 2015-02-23 |
| 1123 | 1.2.5.10.8 | Development - Handoff Runbook / Test Cases |  | 1d | 2015-04-24 | 2015-04-24 | 1122 | 110d | 0d | start no earlier than 2015-02-25 |
| 1124 | 1.2.5.10.9 | Posted to Sharepoint and Git | milestone | 0d | 2015-04-24 | 2015-04-24 | 1123 | 131d |  |  |
| 1125 | 1.2.5.10.10 | QE |  | 5d | 2015-04-27 | 2015-05-01 | 1123 | 126d |  |  |
| 1126 | 1.2.5.10.11 | UAT |  | 10d | 2015-04-27 | 2015-05-08 | 1123 | 110d | 0d | start no earlier than 2015-03-04 |
| 1127 | 1.2.5.10.12 | Rollout |  | 1d | 2015-05-11 | 2015-05-11 | 1126 | 120d |  | start no earlier than 2015-03-06 |
| 1128 | 1.2.5.10.13 | Support |  | 10d | 2015-05-11 | 2015-05-22 | 1126 | 110d | 0d | start no earlier than 2015-03-27 |
| 1129 | 1.2.5.10.14 | Close |  | 1d | 2015-05-26 | 2015-05-26 | 1128 | 110d |  |  |
| 1130 | 1.2.5.11 | **Fact_Ticket_Relationship (Parent)** |  | 31d | 2015-04-13 | 2015-05-26 |  | 110d |  |  |
| 1131 | 1.2.5.11.1 | SDA |  | 2d | 2015-04-13 | 2015-04-14 |  | 110d | 0d | start no earlier than 2015-04-13 |
| 1132 | 1.2.5.11.2 | Field Mapping |  | 3d | 2015-04-15 | 2015-04-17 | 1131 | 110d | 0d |  |
| 1133 | 1.2.5.11.3 | Check into Git | milestone | 0d | 2015-04-17 | 2015-04-17 | 1132 | 136d |  |  |
| 1134 | 1.2.5.11.4 | Development - Staging/Connections |  | 3d | 2015-04-20 | 2015-04-22 | 1132 | 110d | 0d |  |
| 1135 | 1.2.5.11.5 | Check into Git | milestone | 0d | 2015-04-22 | 2015-04-22 | 1134 | 133d |  |  |
| 1136 | 1.2.5.11.6 | Dev Data - Peer Review |  | 0.5d | 2015-04-23 | 2015-04-23 | 1134 | 132.5d |  |  |
| 1137 | 1.2.5.11.7 | Stage to Target Testing with new source |  | 1d | 2015-04-23 | 2015-04-23 | 1134 | 110d | 0d | start no earlier than 2015-02-23 |
| 1138 | 1.2.5.11.8 | Development - Handoff Runbook / Test Cases |  | 1d | 2015-04-24 | 2015-04-24 | 1137 | 110d | 0d | start no earlier than 2015-02-25 |
| 1139 | 1.2.5.11.9 | Posted to Sharepoint and Git | milestone | 0d | 2015-04-24 | 2015-04-24 | 1138 | 131d |  |  |
| 1140 | 1.2.5.11.10 | QE |  | 5d | 2015-04-27 | 2015-05-01 | 1138 | 126d |  |  |
| 1141 | 1.2.5.11.11 | UAT |  | 10d | 2015-04-27 | 2015-05-08 | 1138 | 110d | 0d | start no earlier than 2015-03-04 |
| 1142 | 1.2.5.11.12 | Rollout |  | 1d | 2015-05-11 | 2015-05-11 | 1141 | 120d |  | start no earlier than 2015-03-06 |
| 1143 | 1.2.5.11.13 | Support |  | 10d | 2015-05-11 | 2015-05-22 | 1141 | 110d | 0d | start no earlier than 2015-03-27 |
| 1144 | 1.2.5.11.14 | Close |  | 1d | 2015-05-26 | 2015-05-26 | 1143 | 110d |  |  |

| ID | WBS | Task | Type | Duration | Start | Finish | Predecessors | Total slack | Free slack | Constraint | Resources | Work |
| --- | --- | --- | --- | --- | --- | --- | --- | --- | --- | --- | --- | --- |
| 1145 | 1.2.5.12 | **Fact_Ticket_Resolved** |  | 31d | 2015-04-13 | 2015-05-26 |  | 110d |  |  |  |  |
| 1146 | 1.2.5.12.1 | SDA |  | 2d | 2015-04-13 | 2015-04-14 |  | 110d | 0d | start no earlier than 2015-04-13 |  |  |
| 1147 | 1.2.5.12.2 | Field Mapping |  | 3d | 2015-04-15 | 2015-04-17 | 1146 | 110d | 0d |  |  |  |
| 1148 | 1.2.5.12.3 | Check into Git | milestone | 0d | 2015-04-17 | 2015-04-17 | 1147 | 136d |  |  |  |  |
| 1149 | 1.2.5.12.4 | Development - Staging/Connections |  | 3d | 2015-04-20 | 2015-04-22 | 1147 | 110d | 0d |  |  |  |
| 1150 | 1.2.5.12.5 | Check into Git | milestone | 0d | 2015-04-22 | 2015-04-22 | 1149 | 133d |  |  |  |  |
| 1151 | 1.2.5.12.6 | Dev Data - Peer Review |  | 0.5d | 2015-04-23 | 2015-04-23 | 1149 | 132.5d |  |  |  |  |
| 1152 | 1.2.5.12.7 | Stage to Target Testing with new source |  | 1d | 2015-04-23 | 2015-04-23 | 1149 | 110d | 0d | start no earlier than 2015-02-23 |  |  |
| 1153 | 1.2.5.12.8 | Development - Handoff Runbook / Test Cases |  | 1d | 2015-04-24 | 2015-04-24 | 1152 | 110d | 0d | start no earlier than 2015-02-25 |  |  |
| 1154 | 1.2.5.12.9 | Posted to Sharepoint and Git | milestone | 0d | 2015-04-24 | 2015-04-24 | 1153 | 131d |  |  |  |  |
| 1155 | 1.2.5.12.10 | QE |  | 5d | 2015-04-27 | 2015-05-01 | 1153 | 126d |  |  |  |  |
| 1156 | 1.2.5.12.11 | UAT |  | 10d | 2015-04-27 | 2015-05-08 | 1153 | 110d | 0d | start no earlier than 2015-03-04 |  |  |
| 1157 | 1.2.5.12.12 | Rollout |  | 1d | 2015-05-11 | 2015-05-11 | 1156 | 120d |  | start no earlier than 2015-03-06 |  |  |
| 1158 | 1.2.5.12.13 | Support |  | 10d | 2015-05-11 | 2015-05-22 | 1156 | 110d | 0d | start no earlier than 2015-03-27 |  |  |
| 1159 | 1.2.5.12.14 | Close |  | 1d | 2015-05-26 | 2015-05-26 | 1158 | 110d |  |  |  |  |
| 1160 | 2 | **Encore ODS Events Table Problem** |  | 18d | 2015-05-05 | 2015-05-29 |  | 107d |  |  |  | 16h |
| 1161 | 2.1 | Change the source qualifier query from value to event assignee value. |  | 1d | 2015-05-05 | 2015-05-05 |  | 107d | 0d | start no earlier than 2015-05-05 | Nagarjuna Gogineni | 8h |
| 1162 | 2.2 | Fix the history in events table using the persisted stage events table or raw table that we have. |  | 1d | 2015-05-06 | 2015-05-06 | 1161 | 107d | 0d |  | Nagarjuna Gogineni | 8h |
| 1163 | 2.3 | QE |  | 5d | 2015-05-07 | 2015-05-13 | 1162 | 107d | 0d |  |  |  |
| 1164 | 2.4 | UAT |  | 5d | 2015-05-14 | 2015-05-20 | 1163 | 107d | 0d | start no earlier than 2015-03-04 |  |  |
| 1165 | 2.5 | Rollout |  | 1d | 2015-05-21 | 2015-05-21 | 1164 | 112d |  | start no earlier than 2015-03-06 |  |  |
| 1166 | 2.6 | Support |  | 5d | 2015-05-21 | 2015-05-28 | 1164 | 107d | 0d | start no earlier than 2015-03-27 |  |  |
| 1167 | 2.7 | Close |  | 1d | 2015-05-29 | 2015-05-29 | 1166 | 107d |  |  |  |  |
| 1168 | 3 | **Customer Experience Dataset** |  | 56d | 2015-04-27 | 2015-07-15 |  | 75d |  |  |  | 560h |
| 1169 | 3.1 | Dev Staging - 1 |  | 2d | 2015-04-27 | 2015-04-28 |  | 75d | 0d | start no earlier than 2015-04-27 | Kranthi | 16h |
| 1170 | 3.2 | Dev to Target |  | 1d | 2015-04-29 | 2015-04-29 | 1169 | 75d | 0d |  | Kranthi | 8h |
| 1171 | 3.3 | Peer Review |  | 1d | 2015-04-30 | 2015-04-30 | 1170 | 75d | 0d |  | Shaheeb | 8h |
| 1172 | 3.4 | Dev Staging - 2 |  | 2d | 2015-04-27 | 2015-04-28 |  | 128d | 0d | start no earlier than 2015-04-27 | Shaheeb | 16h |
| 1173 | 3.5 | Dev to Target |  | 1d | 2015-04-29 | 2015-04-29 | 1172 | 128d |  |  | Shaheeb | 8h |
| 1174 | 3.6 | Peer Review |  | 1d | 2015-04-30 | 2015-04-30 | 1170 | 99d | 0d |  | Kranthi | 8h |
| 1175 | 3.7 | Dev Staging - 3 |  | 2d | 2015-05-01 | 2015-05-04 | 1174 | 99d | 0d |  | Kranthi | 16h |
| 1176 | 3.8 | Dev to Target |  | 1d | 2015-05-05 | 2015-05-05 | 1175 | 99d | 0d |  | Kranthi | 8h |
| 1177 | 3.9 | Peer Review |  | 1d | 2015-05-01 | 2015-05-01 | 1171 | 75d | 0d |  | Shaheeb | 8h |
| 1178 | 3.10 | Dev Staging - 4 |  | 2d | 2015-05-04 | 2015-05-05 | 1177 | 75d | 0d |  | Shaheeb | 16h |
| 1179 | 3.11 | Dev to Target |  | 1d | 2015-05-06 | 2015-05-06 | 1178 | 75d | 0d |  | Shaheeb | 8h |
| 1180 | 3.12 | Peer Review |  | 1d | 2015-05-06 | 2015-05-06 | 1176 | 99d | 0d |  | Kranthi | 8h |
| 1181 | 3.13 | Dev Staging - 5 |  | 2d | 2015-05-07 | 2015-05-08 | 1180 | 99d | 0d |  | Kranthi | 16h |
| 1182 | 3.14 | Dev to Target |  | 1d | 2015-05-11 | 2015-05-11 | 1181 | 99d | 0d |  | Kranthi | 8h |
| 1183 | 3.15 | Peer Review |  | 1d | 2015-05-07 | 2015-05-07 | 1179 | 75d | 0d |  | Shaheeb | 8h |
| 1184 | 3.16 | Dev Staging - 6 |  | 2d | 2015-05-08 | 2015-05-11 | 1183 | 75d | 0d |  | Shaheeb | 16h |
| 1185 | 3.17 | Dev to Target |  | 1d | 2015-05-12 | 2015-05-12 | 1184 | 75d | 0d |  | Shaheeb | 8h |
| 1186 | 3.18 | Peer Review |  | 1d | 2015-05-12 | 2015-05-12 | 1182 | 99d | 0d |  | Kranthi | 8h |
| 1187 | 3.19 | Dev Staging - 7 |  | 2d | 2015-05-13 | 2015-05-14 | 1186 | 99d | 0d |  | Kranthi | 16h |
| 1188 | 3.20 | Dev to Target |  | 1d | 2015-05-15 | 2015-05-15 | 1187 | 99d | 0d |  | Kranthi | 8h |
| 1189 | 3.21 | Peer Review |  | 1d | 2015-05-13 | 2015-05-13 | 1185 | 75d | 0d |  | Shaheeb | 8h |
| 1190 | 3.22 | Dev Staging - 8 |  | 2d | 2015-05-14 | 2015-05-15 | 1189 | 75d | 0d | start no earlier than 2015-04-27 | Shaheeb | 16h |
| 1191 | 3.23 | Dev to Target |  | 1d | 2015-05-18 | 2015-05-18 | 1190 | 75d | 0d |  | Shaheeb | 8h |
| 1192 | 3.24 | Peer Review |  | 1d | 2015-05-18 | 2015-05-18 | 1188 | 99d | 0d |  | Kranthi | 8h |
| 1193 | 3.25 | Dev Staging - 9 |  | 2d | 2015-05-19 | 2015-05-20 | 1192 | 99d | 0d |  | Kranthi | 16h |
| 1194 | 3.26 | Dev to Target |  | 1d | 2015-05-21 | 2015-05-21 | 1193 | 99d | 0d |  | Kranthi | 8h |
| 1195 | 3.27 | Peer Review |  | 1d | 2015-05-19 | 2015-05-19 | 1191 | 75d | 0d |  | Shaheeb | 8h |
| 1196 | 3.28 | Dev Staging - 10 |  | 2d | 2015-05-20 | 2015-05-21 | 1195 | 75d | 0d |  | Shaheeb | 16h |
| 1197 | 3.29 | Dev to Target |  | 1d | 2015-05-22 | 2015-05-22 | 1196 | 75d | 0d |  | Shaheeb | 8h |
| 1198 | 3.30 | Peer Review |  | 1d | 2015-05-22 | 2015-05-22 | 1194 | 99d | 0d |  | Kranthi | 8h |
| 1199 | 3.31 | Dev Staging - 11 |  | 2d | 2015-05-26 | 2015-05-27 | 1198 | 99d | 0d |  | Kranthi | 16h |
| 1200 | 3.32 | Dev to Target |  | 1d | 2015-05-28 | 2015-05-28 | 1199 | 99d | 0d |  | Kranthi | 8h |
| 1201 | 3.33 | Peer Review |  | 1d | 2015-05-26 | 2015-05-26 | 1197 | 75d | 0d |  | Shaheeb | 8h |
| 1202 | 3.34 | Dev Staging - 12 |  | 2d | 2015-05-27 | 2015-05-28 | 1201 | 75d | 0d |  | Shaheeb | 16h |
| 1203 | 3.35 | Dev to Target |  | 1d | 2015-05-29 | 2015-05-29 | 1202 | 75d | 0d |  | Shaheeb | 8h |
| 1204 | 3.36 | Peer Review |  | 1d | 2015-05-29 | 2015-05-29 | 1200 | 99d | 0d |  | Kranthi | 8h |
| 1205 | 3.37 | Dev Staging - 13 |  | 2d | 2015-06-01 | 2015-06-02 | 1204 | 99d | 0d |  | Kranthi | 16h |
| 1206 | 3.38 | Dev to Target |  | 1d | 2015-06-03 | 2015-06-03 | 1205 | 99d | 0d |  | Kranthi | 8h |
| 1207 | 3.39 | Peer Review |  | 1d | 2015-06-01 | 2015-06-01 | 1203 | 75d | 0d |  | Shaheeb | 8h |
| 1208 | 3.40 | Dev Staging - 14 |  | 2d | 2015-06-02 | 2015-06-03 | 1207 | 75d | 0d |  | Shaheeb | 16h |
| 1209 | 3.41 | Dev to Target |  | 1d | 2015-06-04 | 2015-06-04 | 1208 | 75d | 0d |  | Shaheeb | 8h |
| 1210 | 3.42 | Peer Review |  | 1d | 2015-06-04 | 2015-06-04 | 1206 | 99d | 0d |  | Kranthi | 8h |
| 1211 | 3.43 | Dev Staging - 15 |  | 2d | 2015-06-05 | 2015-06-08 | 1210 | 99d | 0d |  | Kranthi | 16h |
| 1212 | 3.44 | Dev to Target |  | 1d | 2015-06-09 | 2015-06-09 | 1211 | 99d | 0d |  | Kranthi | 8h |
| 1213 | 3.45 | Peer Review |  | 1d | 2015-06-05 | 2015-06-05 | 1209 | 75d | 0d |  | Shaheeb | 8h |
| 1214 | 3.46 | Dev Staging - 16 |  | 2d | 2015-06-08 | 2015-06-09 | 1213 | 75d | 0d |  | Shaheeb | 16h |

| ID | WBS | Task | Type | Duration | Start | Finish | Predecessors | Complete | Remaining | Total slack | Free slack | Constraint | Resources | Work |
| --- | --- | --- | --- | --- | --- | --- | --- | --- | --- | --- | --- | --- | --- | --- |
| 1215 | 3.47 | Dev to Target |  | 1d | 2015-06-10 | 2015-06-10 | 1214 |  |  | 75d | 0d |  | Shaheeb | 8h |
| 1216 | 3.48 | Peer Review |  | 1d | 2015-06-10 | 2015-06-10 | 1212 |  |  | 99d |  |  | Kranthi | 8h |
| 1217 | 3.49 | Development - Handoff Runbook / Test Cases |  | 3d | 2015-06-11 | 2015-06-15 | 1215 |  |  | 75d | 0d | start no earlier than 2015-02-25 | Kranthi; Shaheeb | 48h |
| 1218 | 3.50 | QE |  | 5d | 2015-06-16 | 2015-06-22 | 1217 |  |  | 91d |  |  |  |  |
| 1219 | 3.51 | UAT |  | 10d | 2015-06-16 | 2015-06-29 | 1217 |  |  | 75d | 0d | start no earlier than 2015-03-04 |  |  |
| 1220 | 3.52 | Rollout |  | 1d | 2015-06-30 | 2015-06-30 | 1219 |  |  | 85d |  | start no earlier than 2015-03-06 |  |  |
| 1221 | 3.53 | Support |  | 10d | 2015-06-30 | 2015-07-14 | 1219 |  |  | 75d | 0d | start no earlier than 2015-03-27 |  |  |
| 1222 | 3.54 | Close |  | 1d | 2015-07-15 | 2015-07-15 | 1221 |  |  | 75d |  |  |  |  |
| 1223 | 4 | Relational Platform | manual | 1d? | 2015-01-06 | 2015-01-06 |  |  |  |  |  |  |  |  |
| 1224 | 5 | **Technical Writers** |  | 90d? | 2014-12-11 A | 2015-04-15 |  | 9% | 82.06d? | 138d |  |  |  |  |
| 1225 | 5.1 | **ODP Architecture Design Doc** |  | 52d | 2015-01-06 A | 2015-03-18 |  | 75% | 13.25d | 158d |  |  |  |  |
| 1226 | 5.1.1 | Analysis |  | 15d | 2015-01-06 A | 2015-01-26 A |  | 100% |  |  |  |  |  |  |
| 1227 | 5.1.2 | Creation |  | 15d | 2015-01-27 A | 2015-02-16 A | 1226 | 100% |  |  |  |  |  |  |
| 1228 | 5.1.3 | Peer Review |  | 5d | 2015-02-17 A | 2015-02-23 A | 1227 | 100% |  |  |  |  |  |  |
| 1229 | 5.1.4 | Technical Review |  | 5d | 2015-02-24 A | 2015-03-02 | 1228 | 75% | 1.25d | 158d | 0d |  |  |  |
| 1230 | 5.1.5 | Revisions |  | 5d | 2015-03-03 | 2015-03-09 | 1229 |  |  | 158d | 0d |  |  |  |
| 1231 | 5.1.6 | Final Review |  | 5d | 2015-03-10 | 2015-03-16 | 1230 |  |  | 158d | 0d |  |  |  |
| 1232 | 5.1.7 | Completion |  | 1d | 2015-03-17 | 2015-03-17 | 1231 |  |  | 158d | 0d |  |  |  |
| 1233 | 5.1.8 | Upload to sharepoint |  | 1d | 2015-03-18 | 2015-03-18 | 1232 |  |  | 158d |  |  |  |  |
| 1234 | 5.2 | **Dev Ops Run Books** |  | 45d | 2015-01-06 | 2015-03-09 |  |  |  | 0d |  |  |  |  |
| 1235 | 5.2.1 | **Raptor** |  | 45d | 2015-01-06 | 2015-03-09 |  |  |  |  |  |  |  |  |
| 1236 | 5.2.1.1 | Analysis | manual | 10d | 2015-01-06 | 2015-01-19 |  |  |  |  |  |  |  |  |
| 1237 | 5.2.1.2 | drafting version 1 | manual | 10d | 2015-01-20 | 2015-02-02 | 1236 |  |  |  |  |  |  |  |
| 1238 | 5.2.1.3 | first draft review | manual | 5d | 2015-02-03 | 2015-02-09 | 1237 |  |  |  |  |  |  |  |
| 1239 | 5.2.1.4 | 2nd draft | manual | 5d | 2015-02-10 | 2015-02-16 | 1238 |  |  |  |  |  |  |  |
| 1240 | 5.2.1.5 | 2nd draft review | manual | 5d | 2015-02-17 | 2015-02-23 | 1239 |  |  |  |  |  |  |  |
| 1241 | 5.2.1.6 | 3rd and final | manual | 5d | 2015-02-24 | 2015-03-02 | 1240 |  |  |  |  |  |  |  |
| 1242 | 5.2.1.7 | Final Review | manual | 5d | 2015-03-03 | 2015-03-09 | 1241 |  |  |  |  |  |  |  |

Notes:
- 1235: Late Tasks
- 1236: Late Tasks

| ID | WBS | Task | Type | Duration | Start | Finish | Predecessors | Total slack |
| --- | --- | --- | --- | --- | --- | --- | --- | --- |
| 1243 | 5.2.2 | **Proposal Manager** |  | 45d | 2015-01-06 | 2015-03-09 |  | 0d |
| 1244 | 5.2.2.1 | Analysis | manual | 10d | 2015-01-06 | 2015-01-19 |  |  |
| 1245 | 5.2.2.2 | drafting version 1 | manual | 10d | 2015-01-20 | 2015-02-02 | 1244 |  |
| 1246 | 5.2.2.3 | first draft review | manual | 5d | 2015-02-03 | 2015-02-09 | 1245 |  |
| 1247 | 5.2.2.4 | 2nd draft | manual | 5d | 2015-02-10 | 2015-02-16 | 1246 |  |
| 1248 | 5.2.2.5 | 2nd draft review | manual | 5d | 2015-02-17 | 2015-02-23 | 1247 |  |
| 1249 | 5.2.2.6 | 3rd and final | manual | 5d | 2015-02-24 | 2015-03-02 | 1248 |  |
| 1250 | 5.2.2.7 | Final Review | manual | 5d | 2015-03-03 | 2015-03-09 | 1249 |  |
| 1251 | 5.2.3 | **eConnect** |  | 45d | 2015-01-06 | 2015-03-09 |  | 0d |
| 1252 | 5.2.3.1 | Analysis | manual | 10d | 2015-01-06 | 2015-01-19 |  |  |
| 1253 | 5.2.3.2 | drafting version 1 | manual | 10d | 2015-01-20 | 2015-02-02 | 1252 |  |
| 1254 | 5.2.3.3 | first draft review | manual | 5d | 2015-02-03 | 2015-02-09 | 1253 |  |
| 1255 | 5.2.3.4 | 2nd draft | manual | 5d | 2015-02-10 | 2015-02-16 | 1254 |  |
| 1256 | 5.2.3.5 | 2nd draft review | manual | 5d | 2015-02-17 | 2015-02-23 | 1255 |  |
| 1257 | 5.2.3.6 | 3rd and final | manual | 5d | 2015-02-24 | 2015-03-02 | 1256 |  |
| 1258 | 5.2.3.7 | Final Review | manual | 5d | 2015-03-03 | 2015-03-09 | 1257 |  |
| 1259 | 5.2.4 | **Doc Depot** |  | 45d | 2015-01-06 | 2015-03-09 |  | 0d |
| 1260 | 5.2.4.1 | Analysis | manual | 10d | 2015-01-06 | 2015-01-19 |  |  |
| 1261 | 5.2.4.2 | drafting version 1 | manual | 10d | 2015-01-20 | 2015-02-02 | 1260 |  |
| 1262 | 5.2.4.3 | first draft review | manual | 5d | 2015-02-03 | 2015-02-09 | 1261 |  |
| 1263 | 5.2.4.4 | 2nd draft | manual | 5d | 2015-02-10 | 2015-02-16 | 1262 |  |
| 1264 | 5.2.4.5 | 2nd draft review | manual | 5d | 2015-02-17 | 2015-02-23 | 1263 |  |
| 1265 | 5.2.4.6 | 3rd and final | manual | 5d | 2015-02-24 | 2015-03-02 | 1264 |  |
| 1266 | 5.2.4.7 | Final Review | manual | 5d | 2015-03-03 | 2015-03-09 | 1265 |  |

Notes:
- 1252: Late Tasks
- 1260: Late Tasks

| ID | WBS | Task | Type | Duration | Start | Finish | Predecessors | Total slack |
| --- | --- | --- | --- | --- | --- | --- | --- | --- |
| 1267 | 5.2.5 | **Gavel** |  | 45d | 2015-01-06 | 2015-03-09 |  | 0d |
| 1268 | 5.2.5.1 | Analysis | manual | 10d | 2015-01-06 | 2015-01-19 |  |  |
| 1269 | 5.2.5.2 | drafting version 1 | manual | 10d | 2015-01-20 | 2015-02-02 | 1268 |  |
| 1270 | 5.2.5.3 | first draft review | manual | 5d | 2015-02-03 | 2015-02-09 | 1269 |  |
| 1271 | 5.2.5.4 | 2nd draft | manual | 5d | 2015-02-10 | 2015-02-16 | 1270 |  |
| 1272 | 5.2.5.5 | 2nd draft review | manual | 5d | 2015-02-17 | 2015-02-23 | 1271 |  |
| 1273 | 5.2.5.6 | 3rd and final | manual | 5d | 2015-02-24 | 2015-03-02 | 1272 |  |
| 1274 | 5.2.5.7 | Final Review | manual | 5d | 2015-03-03 | 2015-03-09 | 1273 |  |
| 1275 | 5.2.6 | **Usage Depot** |  | 45d | 2015-01-06 | 2015-03-09 |  | 0d |
| 1276 | 5.2.6.1 | Analysis | manual | 10d | 2015-01-06 | 2015-01-19 |  |  |
| 1277 | 5.2.6.2 | drafting version 1 | manual | 10d | 2015-01-20 | 2015-02-02 | 1276 |  |
| 1278 | 5.2.6.3 | first draft review | manual | 5d | 2015-02-03 | 2015-02-09 | 1277 |  |
| 1279 | 5.2.6.4 | 2nd draft | manual | 5d | 2015-02-10 | 2015-02-16 | 1278 |  |
| 1280 | 5.2.6.5 | 2nd draft review | manual | 5d | 2015-02-17 | 2015-02-23 | 1279 |  |
| 1281 | 5.2.6.6 | 3rd and final | manual | 5d | 2015-02-24 | 2015-03-02 | 1280 |  |
| 1282 | 5.2.6.7 | Final Review | manual | 5d | 2015-03-03 | 2015-03-09 | 1281 |  |
| 1283 | 5.2.7 | **Bandwidth Overage Monitoring Billing System** |  | 45d | 2015-01-06 | 2015-03-09 |  | 0d |
| 1284 | 5.2.7.1 | Analysis | manual | 10d | 2015-01-06 | 2015-01-19 |  |  |
| 1285 | 5.2.7.2 | drafting version 1 | manual | 10d | 2015-01-20 | 2015-02-02 | 1284 |  |
| 1286 | 5.2.7.3 | first draft review | manual | 5d | 2015-02-03 | 2015-02-09 | 1285 |  |
| 1287 | 5.2.7.4 | 2nd draft | manual | 5d | 2015-02-10 | 2015-02-16 | 1286 |  |
| 1288 | 5.2.7.5 | 2nd draft review | manual | 5d | 2015-02-17 | 2015-02-23 | 1287 |  |
| 1289 | 5.2.7.6 | 3rd and final | manual | 5d | 2015-02-24 | 2015-03-02 | 1288 |  |
| 1290 | 5.2.7.7 | Final Review | manual | 5d | 2015-03-03 | 2015-03-09 | 1289 |  |

Notes:
- 1268: Late Tasks
- 1276: Late Tasks
- 1284: Late Tasks

| ID | WBS | Task | Type | Duration | Start | Finish | Predecessors | Total slack |
| --- | --- | --- | --- | --- | --- | --- | --- | --- |
| 1291 | 5.2.8 | **Product Catalog** |  | 45d | 2015-01-06 | 2015-03-09 |  | 0d |
| 1292 | 5.2.8.1 | Analysis | manual | 10d | 2015-01-06 | 2015-01-19 |  |  |
| 1293 | 5.2.8.2 | drafting version 1 | manual | 10d | 2015-01-20 | 2015-02-02 | 1292 |  |
| 1294 | 5.2.8.3 | first draft review | manual | 5d | 2015-02-03 | 2015-02-09 | 1293 |  |
| 1295 | 5.2.8.4 | 2nd draft | manual | 5d | 2015-02-10 | 2015-02-16 | 1294 |  |
| 1296 | 5.2.8.5 | 2nd draft review | manual | 5d | 2015-02-17 | 2015-02-23 | 1295 |  |
| 1297 | 5.2.8.6 | 3rd and final | manual | 5d | 2015-02-24 | 2015-03-02 | 1296 |  |
| 1298 | 5.2.8.7 | Final Review | manual | 5d | 2015-03-03 | 2015-03-09 | 1297 |  |
| 1299 | 5.2.9 | **Oracle EBS** |  | 45d | 2015-01-06 | 2015-03-09 |  | 0d |
| 1300 | 5.2.9.1 | Analysis | manual | 10d | 2015-01-06 | 2015-01-19 |  |  |
| 1301 | 5.2.9.2 | drafting version 1 | manual | 10d | 2015-01-20 | 2015-02-02 | 1300 |  |
| 1302 | 5.2.9.3 | first draft review | manual | 5d | 2015-02-03 | 2015-02-09 | 1301 |  |
| 1303 | 5.2.9.4 | 2nd draft | manual | 5d | 2015-02-10 | 2015-02-16 | 1302 |  |
| 1304 | 5.2.9.5 | 2nd draft review | manual | 5d | 2015-02-17 | 2015-02-23 | 1303 |  |
| 1305 | 5.2.9.6 | 3rd and final | manual | 5d | 2015-02-24 | 2015-03-02 | 1304 |  |
| 1306 | 5.2.9.7 | Final Review | manual | 5d | 2015-03-03 | 2015-03-09 | 1305 |  |
| 1307 | 5.2.10 | **Oracle Fusion Middleware** |  | 45d | 2015-01-06 | 2015-03-09 |  | 0d |
| 1308 | 5.2.10.1 | Analysis | manual | 10d | 2015-01-06 | 2015-01-19 |  |  |
| 1309 | 5.2.10.2 | drafting version 1 | manual | 10d | 2015-01-20 | 2015-02-02 | 1308 |  |
| 1310 | 5.2.10.3 | first draft review | manual | 5d | 2015-02-03 | 2015-02-09 | 1309 |  |
| 1311 | 5.2.10.4 | 2nd draft | manual | 5d | 2015-02-10 | 2015-02-16 | 1310 |  |
| 1312 | 5.2.10.5 | 2nd draft review | manual | 5d | 2015-02-17 | 2015-02-23 | 1311 |  |
| 1313 | 5.2.10.6 | 3rd and final | manual | 5d | 2015-02-24 | 2015-03-02 | 1312 |  |
| 1314 | 5.2.10.7 | Final Review | manual | 5d | 2015-03-03 | 2015-03-09 | 1313 |  |

Notes:
- 1292: Late Tasks
- 1300: Late Tasks
- 1308: Late Tasks

| ID | WBS | Task | Type | Duration | Start | Finish | Predecessors | Total slack |
| --- | --- | --- | --- | --- | --- | --- | --- | --- |
| 1315 | 5.2.11 | **OBIEE** |  | 45d | 2015-01-06 | 2015-03-09 |  | 0d |
| 1316 | 5.2.11.1 | Analysis | manual | 10d | 2015-01-06 | 2015-01-19 |  |  |
| 1317 | 5.2.11.2 | drafting version 1 | manual | 10d | 2015-01-20 | 2015-02-02 | 1316 |  |
| 1318 | 5.2.11.3 | first draft review | manual | 5d | 2015-02-03 | 2015-02-09 | 1317 |  |
| 1319 | 5.2.11.4 | 2nd draft | manual | 5d | 2015-02-10 | 2015-02-16 | 1318 |  |
| 1320 | 5.2.11.5 | 2nd draft review | manual | 5d | 2015-02-17 | 2015-02-23 | 1319 |  |
| 1321 | 5.2.11.6 | 3rd and final | manual | 5d | 2015-02-24 | 2015-03-02 | 1320 |  |
| 1322 | 5.2.11.7 | Final Review | manual | 5d | 2015-03-03 | 2015-03-09 | 1321 |  |
| 1323 | 5.2.12 | **Customer Advisory Council** |  | 45d | 2015-01-06 | 2015-03-09 |  | 0d |
| 1324 | 5.2.12.1 | Analysis | manual | 10d | 2015-01-06 | 2015-01-19 |  |  |
| 1325 | 5.2.12.2 | drafting version 1 | manual | 10d | 2015-01-20 | 2015-02-02 | 1324 |  |
| 1326 | 5.2.12.3 | first draft review | manual | 5d | 2015-02-03 | 2015-02-09 | 1325 |  |
| 1327 | 5.2.12.4 | 2nd draft | manual | 5d | 2015-02-10 | 2015-02-16 | 1326 |  |
| 1328 | 5.2.12.5 | 2nd draft review | manual | 5d | 2015-02-17 | 2015-02-23 | 1327 |  |
| 1329 | 5.2.12.6 | 3rd and final | manual | 5d | 2015-02-24 | 2015-03-02 | 1328 |  |
| 1330 | 5.2.12.7 | Final Review | manual | 5d | 2015-03-03 | 2015-03-09 | 1329 |  |
| 1331 | 5.2.13 | **DEFCON** |  | 45d | 2015-01-06 | 2015-03-09 |  | 0d |
| 1332 | 5.2.13.1 | Analysis | manual | 10d | 2015-01-06 | 2015-01-19 |  |  |
| 1333 | 5.2.13.2 | drafting version 1 | manual | 10d | 2015-01-20 | 2015-02-02 | 1332 |  |
| 1334 | 5.2.13.3 | first draft review | manual | 5d | 2015-02-03 | 2015-02-09 | 1333 |  |
| 1335 | 5.2.13.4 | 2nd draft | manual | 5d | 2015-02-10 | 2015-02-16 | 1334 |  |
| 1336 | 5.2.13.5 | 2nd draft review | manual | 5d | 2015-02-17 | 2015-02-23 | 1335 |  |
| 1337 | 5.2.13.6 | 3rd and final | manual | 5d | 2015-02-24 | 2015-03-02 | 1336 |  |
| 1338 | 5.2.13.7 | Final Review | manual | 5d | 2015-03-03 | 2015-03-09 | 1337 |  |

Notes:
- 1316: Late Tasks
- 1324: Late Tasks
- 1332: Late Tasks

| ID | WBS | Task | Type | Duration | Start | Finish | Predecessors | Total slack |
| --- | --- | --- | --- | --- | --- | --- | --- | --- |
| 1339 | 5.2.14 | **Etherpad** |  | 45d | 2015-01-06 | 2015-03-09 |  | 0d |
| 1340 | 5.2.14.1 | Analysis | manual | 10d | 2015-01-06 | 2015-01-19 |  |  |
| 1341 | 5.2.14.2 | drafting version 1 | manual | 10d | 2015-01-20 | 2015-02-02 | 1340 |  |
| 1342 | 5.2.14.3 | first draft review | manual | 5d | 2015-02-03 | 2015-02-09 | 1341 |  |
| 1343 | 5.2.14.4 | 2nd draft | manual | 5d | 2015-02-10 | 2015-02-16 | 1342 |  |
| 1344 | 5.2.14.5 | 2nd draft review | manual | 5d | 2015-02-17 | 2015-02-23 | 1343 |  |
| 1345 | 5.2.14.6 | 3rd and final | manual | 5d | 2015-02-24 | 2015-03-02 | 1344 |  |
| 1346 | 5.2.14.7 | Final Review | manual | 5d | 2015-03-03 | 2015-03-09 | 1345 |  |
| 1347 | 5.2.15 | **GitHub Enterprise** |  | 45d | 2015-01-06 | 2015-03-09 |  | 0d |
| 1348 | 5.2.15.1 | Analysis | manual | 10d | 2015-01-06 | 2015-01-19 |  |  |
| 1349 | 5.2.15.2 | drafting version 1 | manual | 10d | 2015-01-20 | 2015-02-02 | 1348 |  |
| 1350 | 5.2.15.3 | first draft review | manual | 5d | 2015-02-03 | 2015-02-09 | 1349 |  |
| 1351 | 5.2.15.4 | 2nd draft | manual | 5d | 2015-02-10 | 2015-02-16 | 1350 |  |
| 1352 | 5.2.15.5 | 2nd draft review | manual | 5d | 2015-02-17 | 2015-02-23 | 1351 |  |
| 1353 | 5.2.15.6 | 3rd and final | manual | 5d | 2015-02-24 | 2015-03-02 | 1352 |  |
| 1354 | 5.2.15.7 | Final Review | manual | 5d | 2015-03-03 | 2015-03-09 | 1353 |  |
| 1355 | 5.2.16 | **Live Links** |  | 45d | 2015-01-06 | 2015-03-09 |  | 0d |
| 1356 | 5.2.16.1 | Analysis | manual | 10d | 2015-01-06 | 2015-01-19 |  |  |
| 1357 | 5.2.16.2 | drafting version 1 | manual | 10d | 2015-01-20 | 2015-02-02 | 1356 |  |
| 1358 | 5.2.16.3 | first draft review | manual | 5d | 2015-02-03 | 2015-02-09 | 1357 |  |
| 1359 | 5.2.16.4 | 2nd draft | manual | 5d | 2015-02-10 | 2015-02-16 | 1358 |  |
| 1360 | 5.2.16.5 | 2nd draft review | manual | 5d | 2015-02-17 | 2015-02-23 | 1359 |  |
| 1361 | 5.2.16.6 | 3rd and final | manual | 5d | 2015-02-24 | 2015-03-02 | 1360 |  |
| 1362 | 5.2.16.7 | Final Review | manual | 5d | 2015-03-03 | 2015-03-09 | 1361 |  |

| ID | WBS | Task | Type | Duration | Start | Finish | Predecessors | Total slack |
| --- | --- | --- | --- | --- | --- | --- | --- | --- |
| 1363 | 5.2.17 | **My Accounts** |  | 45d | 2015-01-06 | 2015-03-09 |  | 0d |
| 1364 | 5.2.17.1 | Analysis | manual | 10d | 2015-01-06 | 2015-01-19 |  |  |
| 1365 | 5.2.17.2 | drafting version 1 | manual | 10d | 2015-01-20 | 2015-02-02 | 1364 |  |
| 1366 | 5.2.17.3 | first draft review | manual | 5d | 2015-02-03 | 2015-02-09 | 1365 |  |
| 1367 | 5.2.17.4 | 2nd draft | manual | 5d | 2015-02-10 | 2015-02-16 | 1366 |  |
| 1368 | 5.2.17.5 | 2nd draft review | manual | 5d | 2015-02-17 | 2015-02-23 | 1367 |  |
| 1369 | 5.2.17.6 | 3rd and final | manual | 5d | 2015-02-24 | 2015-03-02 | 1368 |  |
| 1370 | 5.2.17.7 | Final Review | manual | 5d | 2015-03-03 | 2015-03-09 | 1369 |  |
| 1371 | 5.2.18 | **MyHuntGroups** |  | 45d | 2015-01-06 | 2015-03-09 |  | 0d |
| 1372 | 5.2.18.1 | Analysis | manual | 10d | 2015-01-06 | 2015-01-19 |  |  |
| 1373 | 5.2.18.2 | drafting version 1 | manual | 10d | 2015-01-20 | 2015-02-02 | 1372 |  |
| 1374 | 5.2.18.3 | first draft review | manual | 5d | 2015-02-03 | 2015-02-09 | 1373 |  |
| 1375 | 5.2.18.4 | 2nd draft | manual | 5d | 2015-02-10 | 2015-02-16 | 1374 |  |
| 1376 | 5.2.18.5 | 2nd draft review | manual | 5d | 2015-02-17 | 2015-02-23 | 1375 |  |
| 1377 | 5.2.18.6 | 3rd and final | manual | 5d | 2015-02-24 | 2015-03-02 | 1376 |  |
| 1378 | 5.2.18.7 | Final Review | manual | 5d | 2015-03-03 | 2015-03-09 | 1377 |  |
| 1379 | 5.2.19 | **Open Cloud Academy** |  | 45d | 2015-01-06 | 2015-03-09 |  | 0d |
| 1380 | 5.2.19.1 | Analysis | manual | 10d | 2015-01-06 | 2015-01-19 |  |  |
| 1381 | 5.2.19.2 | drafting version 1 | manual | 10d | 2015-01-20 | 2015-02-02 | 1380 |  |
| 1382 | 5.2.19.3 | first draft review | manual | 5d | 2015-02-03 | 2015-02-09 | 1381 |  |
| 1383 | 5.2.19.4 | 2nd draft | manual | 5d | 2015-02-10 | 2015-02-16 | 1382 |  |
| 1384 | 5.2.19.5 | 2nd draft review | manual | 5d | 2015-02-17 | 2015-02-23 | 1383 |  |
| 1385 | 5.2.19.6 | 3rd and final | manual | 5d | 2015-02-24 | 2015-03-02 | 1384 |  |
| 1386 | 5.2.19.7 | Final Review | manual | 5d | 2015-03-03 | 2015-03-09 | 1385 |  |

| ID | WBS | Task | Type | Duration | Start | Finish | Predecessors | Total slack |
| --- | --- | --- | --- | --- | --- | --- | --- | --- |
| 1387 | 5.2.20 | **PasswordSafe** |  | 45d | 2015-01-06 | 2015-03-09 |  | 0d |
| 1388 | 5.2.20.1 | Analysis | manual | 10d | 2015-01-06 | 2015-01-19 |  |  |
| 1389 | 5.2.20.2 | drafting version 1 | manual | 10d | 2015-01-20 | 2015-02-02 | 1388 |  |
| 1390 | 5.2.20.3 | first draft review | manual | 5d | 2015-02-03 | 2015-02-09 | 1389 |  |
| 1391 | 5.2.20.4 | 2nd draft | manual | 5d | 2015-02-10 | 2015-02-16 | 1390 |  |
| 1392 | 5.2.20.5 | 2nd draft review | manual | 5d | 2015-02-17 | 2015-02-23 | 1391 |  |
| 1393 | 5.2.20.6 | 3rd and final | manual | 5d | 2015-02-24 | 2015-03-02 | 1392 |  |
| 1394 | 5.2.20.7 | Final Review | manual | 5d | 2015-03-03 | 2015-03-09 | 1393 |  |
| 1395 | 5.2.21 | **Change Service** |  | 45d | 2015-01-06 | 2015-03-09 |  | 0d |
| 1396 | 5.2.21.1 | Analysis | manual | 10d | 2015-01-06 | 2015-01-19 |  |  |
| 1397 | 5.2.21.2 | drafting version 1 | manual | 10d | 2015-01-20 | 2015-02-02 | 1396 |  |
| 1398 | 5.2.21.3 | first draft review | manual | 5d | 2015-02-03 | 2015-02-09 | 1397 |  |
| 1399 | 5.2.21.4 | 2nd draft | manual | 5d | 2015-02-10 | 2015-02-16 | 1398 |  |
| 1400 | 5.2.21.5 | 2nd draft review | manual | 5d | 2015-02-17 | 2015-02-23 | 1399 |  |
| 1401 | 5.2.21.6 | 3rd and final | manual | 5d | 2015-02-24 | 2015-03-02 | 1400 |  |
| 1402 | 5.2.21.7 | Final Review | manual | 5d | 2015-03-03 | 2015-03-09 | 1401 |  |
| 1403 | 5.2.22 | **GSAT OpenNMS** |  | 45d | 2015-01-06 | 2015-03-09 |  | 0d |
| 1404 | 5.2.22.1 | Analysis | manual | 10d | 2015-01-06 | 2015-01-19 |  |  |
| 1405 | 5.2.22.2 | drafting version 1 | manual | 10d | 2015-01-20 | 2015-02-02 | 1404 |  |
| 1406 | 5.2.22.3 | first draft review | manual | 5d | 2015-02-03 | 2015-02-09 | 1405 |  |
| 1407 | 5.2.22.4 | 2nd draft | manual | 5d | 2015-02-10 | 2015-02-16 | 1406 |  |
| 1408 | 5.2.22.5 | 2nd draft review | manual | 5d | 2015-02-17 | 2015-02-23 | 1407 |  |
| 1409 | 5.2.22.6 | 3rd and final | manual | 5d | 2015-02-24 | 2015-03-02 | 1408 |  |
| 1410 | 5.2.22.7 | Final Review | manual | 5d | 2015-03-03 | 2015-03-09 | 1409 |  |

| ID | WBS | Task | Type | Duration | Start | Finish | Predecessors | Total slack |
| --- | --- | --- | --- | --- | --- | --- | --- | --- |
| 1411 | 5.2.23 | **SaltStack** |  | 45d | 2015-01-06 | 2015-03-09 |  | 0d |
| 1412 | 5.2.23.1 | Analysis | manual | 10d | 2015-01-06 | 2015-01-19 |  |  |
| 1413 | 5.2.23.2 | drafting version 1 | manual | 10d | 2015-01-20 | 2015-02-02 | 1412 |  |
| 1414 | 5.2.23.3 | first draft review | manual | 5d | 2015-02-03 | 2015-02-09 | 1413 |  |
| 1415 | 5.2.23.4 | 2nd draft | manual | 5d | 2015-02-10 | 2015-02-16 | 1414 |  |
| 1416 | 5.2.23.5 | 2nd draft review | manual | 5d | 2015-02-17 | 2015-02-23 | 1415 |  |
| 1417 | 5.2.23.6 | 3rd and final | manual | 5d | 2015-02-24 | 2015-03-02 | 1416 |  |
| 1418 | 5.2.23.7 | Final Review | manual | 5d | 2015-03-03 | 2015-03-09 | 1417 |  |
| 1419 | 5.2.24 | **Customer Experience Center** |  | 45d | 2015-01-06 | 2015-03-09 |  | 0d |
| 1420 | 5.2.24.1 | Analysis | manual | 10d | 2015-01-06 | 2015-01-19 |  |  |
| 1421 | 5.2.24.2 | drafting version 1 | manual | 10d | 2015-01-20 | 2015-02-02 | 1420 |  |
| 1422 | 5.2.24.3 | first draft review | manual | 5d | 2015-02-03 | 2015-02-09 | 1421 |  |
| 1423 | 5.2.24.4 | 2nd draft | manual | 5d | 2015-02-10 | 2015-02-16 | 1422 |  |
| 1424 | 5.2.24.5 | 2nd draft review | manual | 5d | 2015-02-17 | 2015-02-23 | 1423 |  |
| 1425 | 5.2.24.6 | 3rd and final | manual | 5d | 2015-02-24 | 2015-03-02 | 1424 |  |
| 1426 | 5.2.24.7 | Final Review | manual | 5d | 2015-03-03 | 2015-03-09 | 1425 |  |
| 1427 | 5.2.25 | **Service Now** |  | 45d | 2015-01-06 | 2015-03-09 |  | 0d |
| 1428 | 5.2.25.1 | Analysis | manual | 10d | 2015-01-06 | 2015-01-19 |  |  |
| 1429 | 5.2.25.2 | drafting version 1 | manual | 10d | 2015-01-20 | 2015-02-02 | 1428 |  |
| 1430 | 5.2.25.3 | first draft review | manual | 5d | 2015-02-03 | 2015-02-09 | 1429 |  |
| 1431 | 5.2.25.4 | 2nd draft | manual | 5d | 2015-02-10 | 2015-02-16 | 1430 |  |
| 1432 | 5.2.25.5 | 2nd draft review | manual | 5d | 2015-02-17 | 2015-02-23 | 1431 |  |
| 1433 | 5.2.25.6 | 3rd and final | manual | 5d | 2015-02-24 | 2015-03-02 | 1432 |  |
| 1434 | 5.2.25.7 | Final Review | manual | 5d | 2015-03-03 | 2015-03-09 | 1433 |  |

| ID | WBS | Task | Type | Duration | Start | Finish | Predecessors | Total slack |
| --- | --- | --- | --- | --- | --- | --- | --- | --- |
| 1435 | 5.2.26 | **Box** |  | 45d | 2015-01-06 | 2015-03-09 |  | 0d |
| 1436 | 5.2.26.1 | Analysis | manual | 10d | 2015-01-06 | 2015-01-19 |  |  |
| 1437 | 5.2.26.2 | drafting version 1 | manual | 10d | 2015-01-20 | 2015-02-02 | 1436 |  |
| 1438 | 5.2.26.3 | first draft review | manual | 5d | 2015-02-03 | 2015-02-09 | 1437 |  |
| 1439 | 5.2.26.4 | 2nd draft | manual | 5d | 2015-02-10 | 2015-02-16 | 1438 |  |
| 1440 | 5.2.26.5 | 2nd draft review | manual | 5d | 2015-02-17 | 2015-02-23 | 1439 |  |
| 1441 | 5.2.26.6 | 3rd and final | manual | 5d | 2015-02-24 | 2015-03-02 | 1440 |  |
| 1442 | 5.2.26.7 | Final Review | manual | 5d | 2015-03-03 | 2015-03-09 | 1441 |  |
| 1443 | 5.2.27 | **Activity Stream** |  | 45d | 2015-01-06 | 2015-03-09 |  | 0d |
| 1444 | 5.2.27.1 | Analysis | manual | 10d | 2015-01-06 | 2015-01-19 |  |  |
| 1445 | 5.2.27.2 | drafting version 1 | manual | 10d | 2015-01-20 | 2015-02-02 | 1444 |  |
| 1446 | 5.2.27.3 | first draft review | manual | 5d | 2015-02-03 | 2015-02-09 | 1445 |  |
| 1447 | 5.2.27.4 | 2nd draft | manual | 5d | 2015-02-10 | 2015-02-16 | 1446 |  |
| 1448 | 5.2.27.5 | 2nd draft review | manual | 5d | 2015-02-17 | 2015-02-23 | 1447 |  |
| 1449 | 5.2.27.6 | 3rd and final | manual | 5d | 2015-02-24 | 2015-03-02 | 1448 |  |
| 1450 | 5.2.27.7 | Final Review | manual | 5d | 2015-03-03 | 2015-03-09 | 1449 |  |
| 1451 | 5.2.28 | **CAS** |  | 45d | 2015-01-06 | 2015-03-09 |  | 0d |
| 1452 | 5.2.28.1 | Analysis | manual | 10d | 2015-01-06 | 2015-01-19 |  |  |
| 1453 | 5.2.28.2 | drafting version 1 | manual | 10d | 2015-01-20 | 2015-02-02 | 1452 |  |
| 1454 | 5.2.28.3 | first draft review | manual | 5d | 2015-02-03 | 2015-02-09 | 1453 |  |
| 1455 | 5.2.28.4 | 2nd draft | manual | 5d | 2015-02-10 | 2015-02-16 | 1454 |  |
| 1456 | 5.2.28.5 | 2nd draft review | manual | 5d | 2015-02-17 | 2015-02-23 | 1455 |  |
| 1457 | 5.2.28.6 | 3rd and final | manual | 5d | 2015-02-24 | 2015-03-02 | 1456 |  |
| 1458 | 5.2.28.7 | Final Review | manual | 5d | 2015-03-03 | 2015-03-09 | 1457 |  |

| ID | WBS | Task | Type | Duration | Start | Finish | Predecessors | Total slack |
| --- | --- | --- | --- | --- | --- | --- | --- | --- |
| 1459 | 5.2.29 | **Document Manager** |  | 45d | 2015-01-06 | 2015-03-09 |  | 0d |
| 1460 | 5.2.29.1 | Analysis | manual | 10d | 2015-01-06 | 2015-01-19 |  |  |
| 1461 | 5.2.29.2 | drafting version 1 | manual | 10d | 2015-01-20 | 2015-02-02 | 1460 |  |
| 1462 | 5.2.29.3 | first draft review | manual | 5d | 2015-02-03 | 2015-02-09 | 1461 |  |
| 1463 | 5.2.29.4 | 2nd draft | manual | 5d | 2015-02-10 | 2015-02-16 | 1462 |  |
| 1464 | 5.2.29.5 | 2nd draft review | manual | 5d | 2015-02-17 | 2015-02-23 | 1463 |  |
| 1465 | 5.2.29.6 | 3rd and final | manual | 5d | 2015-02-24 | 2015-03-02 | 1464 |  |
| 1466 | 5.2.29.7 | Final Review | manual | 5d | 2015-03-03 | 2015-03-09 | 1465 |  |
| 1467 | 5.2.30 | **eMail Tracker** |  | 45d | 2015-01-06 | 2015-03-09 |  | 0d |
| 1468 | 5.2.30.1 | Analysis | manual | 10d | 2015-01-06 | 2015-01-19 |  |  |
| 1469 | 5.2.30.2 | drafting version 1 | manual | 10d | 2015-01-20 | 2015-02-02 | 1468 |  |
| 1470 | 5.2.30.3 | first draft review | manual | 5d | 2015-02-03 | 2015-02-09 | 1469 |  |
| 1471 | 5.2.30.4 | 2nd draft | manual | 5d | 2015-02-10 | 2015-02-16 | 1470 |  |
| 1472 | 5.2.30.5 | 2nd draft review | manual | 5d | 2015-02-17 | 2015-02-23 | 1471 |  |
| 1473 | 5.2.30.6 | 3rd and final | manual | 5d | 2015-02-24 | 2015-03-02 | 1472 |  |
| 1474 | 5.2.30.7 | Final Review | manual | 5d | 2015-03-03 | 2015-03-09 | 1473 |  |
| 1475 | 5.2.31 | **Gems** |  | 45d | 2015-01-06 | 2015-03-09 |  | 0d |
| 1476 | 5.2.31.1 | Analysis | manual | 10d | 2015-01-06 | 2015-01-19 |  |  |
| 1477 | 5.2.31.2 | drafting version 1 | manual | 10d | 2015-01-20 | 2015-02-02 | 1476 |  |
| 1478 | 5.2.31.3 | first draft review | manual | 5d | 2015-02-03 | 2015-02-09 | 1477 |  |
| 1479 | 5.2.31.4 | 2nd draft | manual | 5d | 2015-02-10 | 2015-02-16 | 1478 |  |
| 1480 | 5.2.31.5 | 2nd draft review | manual | 5d | 2015-02-17 | 2015-02-23 | 1479 |  |
| 1481 | 5.2.31.6 | 3rd and final | manual | 5d | 2015-02-24 | 2015-03-02 | 1480 |  |
| 1482 | 5.2.31.7 | Final Review | manual | 5d | 2015-03-03 | 2015-03-09 | 1481 |  |

| ID | WBS | Task | Type | Duration | Start | Finish | Predecessors | Total slack |
| --- | --- | --- | --- | --- | --- | --- | --- | --- |
| 1483 | 5.2.32 | **Messenger** |  | 45d | 2015-01-06 | 2015-03-09 |  | 0d |
| 1484 | 5.2.32.1 | Analysis | manual | 10d | 2015-01-06 | 2015-01-19 |  |  |
| 1485 | 5.2.32.2 | drafting version 1 | manual | 10d | 2015-01-20 | 2015-02-02 | 1484 |  |
| 1486 | 5.2.32.3 | first draft review | manual | 5d | 2015-02-03 | 2015-02-09 | 1485 |  |
| 1487 | 5.2.32.4 | 2nd draft | manual | 5d | 2015-02-10 | 2015-02-16 | 1486 |  |
| 1488 | 5.2.32.5 | 2nd draft review | manual | 5d | 2015-02-17 | 2015-02-23 | 1487 |  |
| 1489 | 5.2.32.6 | 3rd and final | manual | 5d | 2015-02-24 | 2015-03-02 | 1488 |  |
| 1490 | 5.2.32.7 | Final Review | manual | 5d | 2015-03-03 | 2015-03-09 | 1489 |  |
| 1491 | 5.2.33 | **Quote Management** |  | 45d | 2015-01-06 | 2015-03-09 |  | 0d |
| 1492 | 5.2.33.1 | Analysis | manual | 10d | 2015-01-06 | 2015-01-19 |  |  |
| 1493 | 5.2.33.2 | drafting version 1 | manual | 10d | 2015-01-20 | 2015-02-02 | 1492 |  |
| 1494 | 5.2.33.3 | first draft review | manual | 5d | 2015-02-03 | 2015-02-09 | 1493 |  |
| 1495 | 5.2.33.4 | 2nd draft | manual | 5d | 2015-02-10 | 2015-02-16 | 1494 |  |
| 1496 | 5.2.33.5 | 2nd draft review | manual | 5d | 2015-02-17 | 2015-02-23 | 1495 |  |
| 1497 | 5.2.33.6 | 3rd and final | manual | 5d | 2015-02-24 | 2015-03-02 | 1496 |  |
| 1498 | 5.2.33.7 | Final Review | manual | 5d | 2015-03-03 | 2015-03-09 | 1497 |  |
| 1499 | 5.2.34 | **Sf-Cache** |  | 45d | 2015-01-06 | 2015-03-09 |  | 0d |
| 1500 | 5.2.34.1 | Analysis | manual | 10d | 2015-01-06 | 2015-01-19 |  |  |
| 1501 | 5.2.34.2 | drafting version 1 | manual | 10d | 2015-01-20 | 2015-02-02 | 1500 |  |
| 1502 | 5.2.34.3 | first draft review | manual | 5d | 2015-02-03 | 2015-02-09 | 1501 |  |
| 1503 | 5.2.34.4 | 2nd draft | manual | 5d | 2015-02-10 | 2015-02-16 | 1502 |  |
| 1504 | 5.2.34.5 | 2nd draft review | manual | 5d | 2015-02-17 | 2015-02-23 | 1503 |  |
| 1505 | 5.2.34.6 | 3rd and final | manual | 5d | 2015-02-24 | 2015-03-02 | 1504 |  |
| 1506 | 5.2.34.7 | Final Review | manual | 5d | 2015-03-03 | 2015-03-09 | 1505 |  |

| ID | WBS | Task | Type | Duration | Start | Finish | Predecessors | Complete | Remaining | Total slack |
| --- | --- | --- | --- | --- | --- | --- | --- | --- | --- | --- |
| 1507 | 5.3 | **Data Dictionary** |  | 2d? | 2015-03-30 | 2015-03-31 |  |  |  | 0d |
| 1508 | 5.3.1 | Information Gathering | manual | 1d? | 2015-03-30 | 2015-03-30 |  |  |  |  |
| 1509 | 5.3.2 | Final Review (Handoff to Alex) | manual | 1d? | 2015-03-31 | 2015-03-31 | 1508 |  |  |  |
| 1510 | 5.4 | **Marketing Acquisition Funnel Runbook** |  | 39d | 2015-02-20 A | 2015-04-15 |  | 32% | 26.71d | 0d |
| 1511 | 5.4.1 | Analysis | manual | 21d | 2015-02-20 A | 2015-03-20 |  | 60% | 8.4d |  |
| 1512 | 5.4.2 | drafting version 1 | manual | 21d | 2015-02-20 A | 2015-03-20 |  | 30% | 14.7d |  |
| 1513 | 5.4.3 | first draft review | manual | 5d | 2015-03-23 | 2015-03-27 | 1512 |  |  |  |
| 1514 | 5.4.4 | 2nd draft | manual | 7d | 2015-03-30 | 2015-04-07 | 1513 |  |  |  |
| 1515 | 5.4.5 | 2nd draft review | manual | 3d | 2015-04-08 | 2015-04-10 | 1514 |  |  |  |
| 1516 | 5.4.6 | 3rd and final | manual | 2d | 2015-04-13 | 2015-04-14 | 1515 |  |  |  |
| 1517 | 5.4.7 | Final Review | manual | 1d | 2015-04-15 | 2015-04-15 | 1516 |  |  |  |
| 1518 | 5.5 | **Site_Visit Fact Reference Guide** |  | 30d | 2015-02-16 A | 2015-03-27 |  | 30% | 21d | 0d |
| 1519 | 5.5.1 | Analysis | manual | 6d | 2015-02-16 A | 2015-02-23 A |  | 100% |  |  |
| 1520 | 5.5.2 | drafting version 1 | manual | 3d | 2015-02-24 A | 2015-02-26 A | 1519 | 100% |  |  |
| 1521 | 5.5.3 | first draft review | manual | 8d | 2015-02-27 | 2015-03-10 | 1520 |  |  |  |
| 1522 | 5.5.4 | 2nd draft | manual | 1d | 2015-03-11 | 2015-03-11 | 1521 |  |  |  |
| 1523 | 5.5.5 | 2nd draft review | manual | 6d | 2015-03-12 | 2015-03-19 | 1522 |  |  |  |
| 1524 | 5.5.6 | 3rd and final | manual | 1d | 2015-03-20 | 2015-03-20 | 1523 |  |  |  |
| 1525 | 5.5.7 | Final Review | manual | 5d | 2015-03-23 | 2015-03-27 | 1524 |  |  |  |
| 1526 | 5.6 | **Revenue Fact Reference Guide** |  | 67d | 2014-12-11 A | 2015-03-13 |  | 91% | 6d | 0d |
| 1527 | 5.6.1 | Analysis | manual | 26d | 2014-12-11 A | 2015-01-15 A |  | 100% |  |  |
| 1528 | 5.6.2 | drafting version 1 | manual | 17d | 2015-01-16 A | 2015-02-09 A | 1527 | 100% |  |  |
| 1529 | 5.6.3 | first draft review | manual | 5d | 2015-02-10 A | 2015-02-16 A | 1528 | 100% |  |  |
| 1530 | 5.6.4 | 2nd draft | manual | 5d | 2015-02-17 A | 2015-02-23 A | 1529 | 100% |  |  |
| 1531 | 5.6.5 | 2nd draft review | manual | 5d | 2015-02-24 A | 2015-03-02 A | 1530 | 100% |  |  |
| 1532 | 5.6.6 | 3rd and final | manual | 3d | 2015-03-03 A | 2015-03-05 A | 1531 | 100% |  |  |
| 1533 | 5.6.7 | Final Review | manual | 6d | 2015-03-06 | 2015-03-13 | 1532 |  |  |  |

| ID | WBS | Task | Type | Duration | Start | Finish | Predecessors | Complete | Remaining | Total slack |
| --- | --- | --- | --- | --- | --- | --- | --- | --- | --- | --- |
| 1534 | 5.7 | **Account_Contact Fact Reference Guide** |  | 40d | 2015-01-20 A | 2015-03-16 |  | 67% | 13.33d | 0d |
| 1535 | 5.7.1 | Analysis | manual | 15d | 2015-01-20 A | 2015-02-09 A |  | 100% |  |  |
| 1536 | 5.7.2 | drafting version 1 | manual | 5d | 2015-02-03 A | 2015-02-09 A |  | 100% |  |  |
| 1537 | 5.7.3 | first draft review | manual | 5d | 2015-02-10 A | 2015-02-16 A | 1536 | 100% |  |  |
| 1538 | 5.7.4 | 2nd draft | manual | 5d | 2015-02-17 A | 2015-02-23 A | 1537 | 100% |  |  |
| 1539 | 5.7.5 | 2nd draft review | manual | 5d | 2015-02-24 | 2015-03-02 | 1538 |  |  |  |
| 1540 | 5.7.6 | 3rd and final | manual | 5d | 2015-03-03 | 2015-03-09 | 1539 |  |  |  |
| 1541 | 5.7.7 | Final Review | manual | 5d | 2015-03-10 | 2015-03-16 | 1540 |  |  |  |
